# WBSTool Project

How a schedule from ProjectLibre changed from version to version. A marks actual dates.

## Version 1 (saved 2018-11-22)

Note of the change: añadir el proyect

| ID | WBS | Task | Duration | Start | Finish | Predecessors | Total float | Constraint |
| --- | --- | --- | --- | --- | --- | --- | --- | --- |
| 1 | 1 | **Proyecto de sistema para bar tecnológico** | 132.08d | 2018-10-22 08:00 | 2019-04-24 08:40 |  |  | start no earlier than 2019-01-01 08:00 |
| 2 | 1.1 | **Análisis de requisitos del sistema** | 69.25d | 2018-10-22 08:00 | 2019-01-25 10:00 |  |  |  |
| 3 | 1.1.1 | **Identificación de las necesidades del cliente** | 55.5d | 2018-10-22 08:00 | 2019-01-07 13:00 |  |  |  |
| 4 | 1.1.1.1 | **Especificación informal del sistema** | 55.5d | 2018-10-22 08:00 | 2019-01-07 13:00 |  |  |  |
| 5 | 1.1.1.1.1 | **Técnica de obtención de requisitos** | 3d | 2018-10-22 08:00 | 2018-10-24 17:00 |  | 5060d |  |
| 6 |  | Preparar preguntas y temáticas para entrevista inicial | 0.5d | 2018-10-22 08:00 | 2018-10-22 13:00 |  | 5060d |  |
| 7 |  | Entrevistar jefe de proyecto | 0.5d | 2018-10-22 13:00 | 2018-10-22 17:00 | 6 | 5060d |  |
| 8 |  | Cuestionar futuros empleados para conocer sus necesidades | 1d | 2018-10-23 08:00 | 2018-10-23 17:00 | 7 | 5060d |  |
| 9 |  | Cuestionar posibles clientes para conocer sus preferencias | 1d | 2018-10-24 08:00 | 2018-10-24 17:00 | 8 | 5060d |  |
| 10 | 1.1.1.2 | **Determinación informal de aspectos del sistema** | 52.5d | 2018-10-25 08:00 | 2019-01-07 13:00 | 5 |  |  |
| 11 |  | Determinar necesidades de jefe de proyectos | 0.5d | 2018-10-25 08:00 | 2018-10-25 13:00 |  | 5060d |  |
| 12 | 1.1.1.2.1 | **Determinación informal de funciones** | 51d | 2018-10-25 13:00 | 2019-01-04 13:00 | 11 | 20d |  |
| 13 |  | Cuestionar futuros empleados para conocer sus necesidades | 0.1d | 2018-10-25 13:00 | 2018-10-25 13:48 |  | 5060d |  |
| 14 |  | Cuestionar posibles clientes para conocer sus preferencias | 0.1d | 2019-01-04 11:12 | 2019-01-04 13:00 | 25 | 20d | start no earlier than 2019-01-04 11:12 |
| 15 | 1.1.1.2.2 | **Determinación informal de información manejada** | 51.6d | 2018-10-25 13:48 | 2019-01-07 09:36 | 11 |  |  |
| 16 |  | Cuestionar futuros empleados para conocer sus necesidades | 0.1d | 2018-10-25 13:48 | 2018-10-25 14:36 | 13 | 5060d |  |
| 17 |  | Cuestionar posibles clientes para conocer sus preferencias | 0.1d | 2019-01-07 08:48 | 2019-01-07 09:36 | 14 |  |  |
| 18 | 1.1.1.2.3 | **Determinación informal de interfaces del sistema** | 51.6d | 2018-10-25 14:36 | 2019-01-07 10:24 | 11 |  |  |
| 19 |  | Cuestionar futuros empleados para conocer sus necesidades | 0.1d | 2018-10-25 14:36 | 2018-10-25 15:24 | 16 | 5060d |  |
| 20 |  | Cuestionar posibles clientes para conocer sus preferencias | 0.1d | 2019-01-07 09:36 | 2019-01-07 10:24 | 17 |  |  |
| 21 | 1.1.1.2.4 | **Determinación informal de rendimiento del sistema** | 51.6d | 2018-10-25 15:24 | 2019-01-07 11:12 | 11 |  |  |
| 22 |  | Cuestionar futuros empleados para conocer sus necesidades | 0.1d | 2018-10-25 15:24 | 2018-10-25 16:12 | 19 | 5060d |  |
| 23 |  | Cuestionar posibles clientes para conocer sus preferencias | 0.1d | 2019-01-07 10:24 | 2019-01-07 11:12 | 20 |  |  |
| 24 | 1.1.1.2.5 | **Determinación informal de las restricciones del sistema** | 51.6d | 2018-10-25 16:12 | 2019-01-07 13:00 | 11 |  |  |
| 25 |  | Cuestionar futuros empleados para conocer sus necesidades | 0.1d | 2018-10-25 16:12 | 2018-10-25 17:00 | 22 | 5060d |  |
| 26 |  | Cuestionar posibles clientes para conocer sus preferencias | 0.1d | 2019-01-07 11:12 | 2019-01-07 13:00 | 23 |  |  |
| 27 | 1.1.2 | **Asignación de funciones a cada elemento del sistema** | 5d | 2019-01-07 13:00 | 2019-01-14 13:00 | 3 |  |  |
| 28 | 1.1.2.1 | **Alternativas de creación del sistema** | 2.5d | 2019-01-07 13:00 | 2019-01-09 17:00 |  |  |  |
| 29 |  | Buscar tecnologías y metodologías alternativas | 2.5d | 2019-01-07 13:00 | 2019-01-09 17:00 |  |  |  |
| 30 |  | Informar del progreso de la semana al Jefe de proyecto | 0.12d | 2019-01-10 08:00 | 2019-01-10 09:00 | 28 |  |  |
| 31 | 1.1.2.2 | **Validación de las alternativas de creación del sistema** | 2.38d | 2019-01-10 09:00 | 2019-01-14 13:00 | 30 |  |  |
| 32 |  | Analizar las alternativas obtenidas | 1d | 2019-01-10 09:00 | 2019-01-11 09:00 |  |  |  |
| 33 |  | Comparar las alternativas con la propuesta original | 1d | 2019-01-11 09:00 | 2019-01-14 09:00 | 32 |  |  |
| 34 |  | Decidir finalmente que tecnología usar | 0.25d | 2019-01-14 09:00 | 2019-01-14 11:00 | 33 |  |  |
| 35 |  | Informar al Jefe del progreso de la semana | 0.12d | 2019-01-14 11:00 | 2019-01-14 13:00 | 34 |  |  |
| 36 | 1.1.3 | **Evaluación de la viabilidad del sistema** | 7.62d | 2019-01-14 13:00 | 2019-01-24 09:00 | 27 |  |  |
| 37 | 1.1.3.1 | **Estudio de viabilidad económico** | 2.5d | 2019-01-14 13:00 | 2019-01-16 17:00 |  |  |  |
| 38 |  | Realizar análisis de costes económicos | 0.62d | 2019-01-14 13:00 | 2019-01-15 09:00 |  |  |  |
| 39 |  | Realizar análisis de mercado | 0.62d | 2019-01-15 09:00 | 2019-01-15 15:00 | 38 |  |  |
| 40 |  | Realizar estimaciones coste-beneficio y tiempo-beneficio | 0.62d | 2019-01-15 15:00 | 2019-01-16 11:00 | 39 |  |  |
| 41 |  | Reunirse con el jefe para decidir su el proyecto se considera viable | 0.62d | 2019-01-16 11:00 | 2019-01-16 17:00 | 40 |  |  |
| 42 | 1.1.3.2 | **Estudio de viabilidad técnico** | 1.75d | 2019-01-17 08:00 | 2019-01-18 15:00 | 37 |  |  |
| 43 |  | Estudiar las tecnologías disponibles para el proyecto | 0.62d | 2019-01-17 08:00 | 2019-01-17 14:00 |  |  |  |
| 44 |  | Analizar recursos y tecnologías a las que tiene acceso la empresa | 0.25d | 2019-01-17 14:00 | 2019-01-17 16:00 | 43 |  |  |
| 45 |  | Analizar recursos y tecnologías de terceros que podrían comprarse o contratarse | 0.25d | 2019-01-17 16:00 | 2019-01-18 09:00 | 44 |  |  |
| 46 |  | Analizar con la información obtenida si el proyecto es viable | 0.62d | 2019-01-18 09:00 | 2019-01-18 15:00 | 45 |  |  |
| 47 |  | Informar al jefe del progreso semanal | 0.12d | 2019-01-18 15:00 | 2019-01-18 16:00 | 42 |  |  |
| 48 | 1.1.3.3 | **Estudio de viabilidad legal** | 2d | 2019-01-18 16:00 | 2019-01-22 16:00 | 42, 47 |  |  |
| 49 |  | Estudiar las leyes relacionadas con la parte tecnológica del proyecto | 0.5d | 2019-01-18 16:00 | 2019-01-21 11:00 |  |  |  |
| 50 |  | Estudiar las leyes relacionadas con al parte de hostelería del proyecto | 0.5d | 2019-01-21 11:00 | 2019-01-21 16:00 | 49 |  |  |
| 51 |  | Estudiar las leyes relacionadas con salud e higiene de local | 0.5d | 2019-01-21 16:00 | 2019-01-22 11:00 | 50 |  |  |
| 52 |  | Realizar un informe sobre los estudios legales | 0.38d | 2019-01-22 11:00 | 2019-01-22 15:00 | 51 |  |  |
| 53 |  | Analizar con la información obtenida si el proyecto es legalmente viable | 0.12d | 2019-01-22 15:00 | 2019-01-22 16:00 | 52 |  |  |
| 54 | 1.1.3.4 | **Estudio de viabilidad de plazos** | 1.25d | 2019-01-22 16:00 | 2019-01-24 09:00 | 48 |  |  |
| 55 |  | Realizar análisis de costes temporales | 1d | 2019-01-22 16:00 | 2019-01-23 16:00 |  |  |  |
| 56 |  | Realizar planificación de distribución de trabajo | 0.25d | 2019-01-22 16:00 | 2019-01-23 09:00 |  | 75d |  |
| 57 |  | Determinar si el proyecto es viable en el tiempo elegido | 0.25d | 2019-01-23 16:00 | 2019-01-24 09:00 | 56, 55 |  |  |
| 58 | 1.1.4 | **Obtención de una definición del sistema** | 1.12d | 2019-01-24 09:00 | 2019-01-25 10:00 | 36 |  |  |
| 59 | 1.1.4.1 | **Especificación formal del sistema** | 0.4d | 2019-01-24 09:00 | 2019-01-24 13:12 |  |  |  |
| 60 | 1.1.4.1.1 | **Diagrama de contexto** | 0.2d | 2019-01-24 09:00 | 2019-01-24 10:36 |  |  |  |
| 61 |  | Dibujar el diagrama de contexto | 0.2d | 2019-01-24 09:00 | 2019-01-24 10:36 |  |  |  |
| 62 | 1.1.4.1.2 | **Diagrama de sistema** | 0.2d | 2019-01-24 10:36 | 2019-01-24 13:12 | 60 |  |  |
| 63 |  | Dibujar el diagrama de sistema | 0.2d | 2019-01-24 10:36 | 2019-01-24 13:12 |  |  |  |
| 64 | 1.1.4.2 | **Representación del sistema** | 0.6d | 2019-01-24 13:12 | 2019-01-25 09:00 | 59 |  |  |
| 65 | 1.1.4.2.1 | **Diagramas de flujo de datos** | 0.2d | 2019-01-24 13:12 | 2019-01-24 14:48 |  |  |  |
| 66 |  | Dibujar el diagrama de sistema | 0.2d | 2019-01-24 13:12 | 2019-01-24 14:48 |  |  |  |
| 67 | 1.1.4.2.2 | **Diagramas de flujo de control** | 0.2d | 2019-01-24 14:48 | 2019-01-24 16:24 | 65 |  |  |
| 68 |  | Dibujar el diagrama de sistema | 0.2d | 2019-01-24 14:48 | 2019-01-24 16:24 |  |  |  |
| 69 | 1.1.4.2.3 | **Diagramas del ámbito de la información** | 0.2d | 2019-01-24 16:24 | 2019-01-25 09:00 | 67 |  |  |
| 70 |  | Dibujar el diagrama de sistema | 0.2d | 2019-01-24 16:24 | 2019-01-25 09:00 |  |  |  |

| ID | WBS | Task | Duration | Start | Finish | Predecessors | Total float |
| --- | --- | --- | --- | --- | --- | --- | --- |
| 71 |  | Informar al Jefe del progreso semanal | 0.12d | 2019-01-25 09:00 | 2019-01-25 10:00 | 64 |  |
| 72 | 1.2 | **Análisis de requisitos del software** | 2.75d | 2019-01-25 10:00 | 2019-01-29 17:00 | 2 |  |
| 73 | 1.2.1 | **Extracción o determinación de requisitos** | 0.38d | 2019-01-25 10:00 | 2019-01-25 14:00 |  |  |
| 74 | 1.2.1.1 | **Documentos de reuniones con cliente** | 0.12d | 2019-01-25 10:00 | 2019-01-25 11:00 |  |  |
| 75 |  | Realizar un acta de reunión para la reunión con el cliente | 0.12d | 2019-01-25 10:00 | 2019-01-25 11:00 |  |  |
| 76 |  | Realizar un informe sobre las solicitudes e información que se obtuvo del cliente | 0.12d | 2019-01-25 10:00 | 2019-01-25 11:00 |  |  |
| 77 | 1.2.1.2 | **Especificación informal de requisitos software** | 0.25d | 2019-01-25 11:00 | 2019-01-25 14:00 | 74 |  |
| 78 |  | Redactar un primer informe de los requisitos del software a partir del informe de reunión con el cliente | 0.25d | 2019-01-25 11:00 | 2019-01-25 14:00 |  |  |
| 79 | 1.2.2 | **Análisis de requisitos** | 0.75d | 2019-01-25 14:00 | 2019-01-28 11:00 | 73 |  |
| 80 | 1.2.2.1 | **Validación de especificación informal** | 0.12d | 2019-01-25 14:00 | 2019-01-25 15:00 |  |  |
| 81 |  | Analizar especificación informal para posibles mejoras | 0.12d | 2019-01-25 14:00 | 2019-01-25 15:00 |  |  |
| 82 |  | Buscar errores en la especificación informal | 0.12d | 2019-01-25 14:00 | 2019-01-25 15:00 |  |  |
| 83 | 1.2.2.2 | **Resolución de inconsistencias** | 0.25d | 2019-01-25 15:00 | 2019-01-25 17:00 | 80 |  |
| 84 |  | Corregir errores en la especificación informal | 0.25d | 2019-01-25 15:00 | 2019-01-25 17:00 |  |  |
| 85 |  | Encontrar redundancias y discrepancias en la especificación informal | 0.25d | 2019-01-25 15:00 | 2019-01-25 17:00 |  |  |
| 86 | 1.2.2.3 | **Coordinación de requisitos relacionados** | 0.38d | 2019-01-28 08:00 | 2019-01-28 11:00 | 83 |  |
| 87 |  | Formar relaciones entre requisitos que tengan puntos comunes | 0.25d | 2019-01-28 08:00 | 2019-01-28 10:00 |  |  |
| 88 |  | Purgar relaciones redundantes | 0.12d | 2019-01-28 10:00 | 2019-01-28 11:00 | 87 |  |
| 89 | 1.2.3 | **Especificación de requisitos** | 0.75d | 2019-01-28 11:00 | 2019-01-29 09:00 | 79 |  |
| 90 | 1.2.3.1 | **Documento de especificación formal de requisitos** | 0.5d | 2019-01-28 11:00 | 2019-01-28 16:00 |  |  |
| 91 |  | Redactar documento de requisitos formal | 0.5d | 2019-01-28 11:00 | 2019-01-28 16:00 |  |  |
| 92 | 1.2.3.2 | **Revisión de documento de especificación formal** | 0.25d | 2019-01-28 16:00 | 2019-01-29 09:00 | 90 |  |
| 93 |  | Revisar documento de requisitos formal en busca de errores | 0.12d | 2019-01-28 16:00 | 2019-01-28 17:00 |  |  |
| 94 |  | Revisar documento de requisitos formal en busca de mejoras de formato y claridad | 0.12d | 2019-01-29 08:00 | 2019-01-29 09:00 | 93 |  |
| 95 | 1.2.4 | **Validación de requisitos** | 0.75d | 2019-01-29 09:00 | 2019-01-29 16:00 | 89 |  |
| 96 | 1.2.4.1 | **Reunión con cliente para validación de requisitos** | 0.25d | 2019-01-29 09:00 | 2019-01-29 11:00 |  |  |
| 97 |  | Redactar acta de reunión con el cliente y validar requisitos | 0.25d | 2019-01-29 09:00 | 2019-01-29 11:00 |  |  |
| 98 | 1.2.4.2 | **Corrección de especificación formal** | 0.25d | 2019-01-29 11:00 | 2019-01-29 14:00 | 96 |  |
| 99 |  | Ajustar los requisitos a partir de la validación realizada | 0.25d | 2019-01-29 11:00 | 2019-01-29 14:00 |  |  |
| 100 | 1.2.4.3 | **Validación de la especificación forma corregidsa** | 0.25d | 2019-01-29 14:00 | 2019-01-29 16:00 | 98 |  |
| 101 |  | Reunirse con el cliente para realizar la validación final de requisitos | 0.25d | 2019-01-29 14:00 | 2019-01-29 16:00 |  |  |
| 102 |  | Reunirse con el jefe para informar del progreso de la semana | 0.12d | 2019-01-29 16:00 | 2019-01-29 17:00 | 95 |  |
| 103 | 1.3 | **Planificación de la Gestión de Riesgos** | 1.5d | 2019-01-30 08:00 | 2019-01-31 13:00 | 72 | 5658.33d |
| 104 |  | Identificar los riesgos | 0.5d | 2019-01-30 08:00 | 2019-01-30 13:00 |  | 5658.33d |
| 105 |  | Realizar análisis cualitativo | 1d | 2019-01-30 13:00 | 2019-01-31 13:00 | 104 | 5658.33d |
| 106 |  | Realizar análisis cuantitativo | 1d | 2019-01-30 13:00 | 2019-01-31 13:00 | 104 | 5658.33d |
| 107 |  | Planificar la respuesta de los riegos | 0.5d | 2019-01-30 13:00 | 2019-01-30 17:00 | 104 | 5708.33d |
| 108 | 1.4 | **Implementación Respuesta Riesgos** | 2d | 2019-01-31 13:00 | 2019-02-04 13:00 | 103 | 5658.33d |
| 109 |  | Plan para errores y problemas | 0.5d | 2019-01-31 13:00 | 2019-01-31 17:00 |  | 5808.33d |
| 110 |  | Revisión de aspectos legales | 1d | 2019-01-31 13:00 | 2019-02-01 13:00 |  | 5758.33d |
| 111 |  | Formación de empleados | 2d | 2019-01-31 13:00 | 2019-02-04 13:00 |  | 5658.33d |
| 112 |  | Plan de comportamiento | 0.5d | 2019-01-31 13:00 | 2019-01-31 17:00 |  | 5808.33d |
| 113 | 1.3 | **Diseño del sistema software** | 24.88d | 2019-01-30 08:00 | 2019-03-05 16:00 | 72 |  |
| 114 |  | Control de riesgos y daños | 1d | 2019-01-30 08:00 | 2019-01-30 17:00 |  | 2387.5d |
| 115 | 1.3.1 | **Diseño funcional** | 6d | 2019-01-30 08:00 | 2019-02-06 17:00 |  |  |
| 116 | 1.3.1.1 | **Diseño módulo del camarero** | 1d | 2019-01-30 08:00 | 2019-01-30 17:00 |  |  |
| 117 |  | Realizar diseño del módulo | 1d | 2019-01-30 08:00 | 2019-01-30 17:00 |  |  |
| 118 | 1.3.1.2 | **Diseño módulo de gestión de proveedores** | 1d | 2019-01-31 08:00 | 2019-01-31 17:00 | 116 |  |
| 119 |  | Realizar diseño del módulo | 1d | 2019-01-31 08:00 | 2019-01-31 17:00 |  |  |
| 120 | 1.3.1.3 | **Diseño módulo de cocinas/barras** | 1d | 2019-02-01 08:00 | 2019-02-01 17:00 | 118 |  |
| 121 |  | Realizar diseño del módulo | 1d | 2019-02-01 08:00 | 2019-02-01 17:00 |  |  |
| 122 | 1.3.1.4 | **Diseño módulo para muestra de datos y comandas** | 1d | 2019-02-04 08:00 | 2019-02-04 17:00 | 120 |  |
| 123 |  | Realizar diseño del módulo | 1d | 2019-02-04 08:00 | 2019-02-04 17:00 |  |  |
| 124 | 1.3.1.5 | **Diseño módulo de entretenimiento** | 1d | 2019-02-05 08:00 | 2019-02-05 17:00 | 122 |  |
| 125 |  | Realizar diseño del módulo | 1d | 2019-02-05 08:00 | 2019-02-05 17:00 |  |  |
| 126 | 1.3.1.6 | **Diseño módulo de monitorización general del sistema** | 1d | 2019-02-06 08:00 | 2019-02-06 17:00 | 124 |  |
| 127 |  | Realizar diseño del módulo | 1d | 2019-02-06 08:00 | 2019-02-06 17:00 |  |  |
| 128 |  | Informar al jefe del progreso semanal | 0.12d | 2019-02-07 08:00 | 2019-02-07 09:00 | 115 | 1875d |
| 129 | 1.3.2 | **Diseño técnico** | 8.38d | 2019-02-07 08:00 | 2019-02-19 11:00 | 115 |  |
| 130 | 1.3.2.1 | **Selección de tecnologías** | 4.25d | 2019-02-07 08:00 | 2019-02-13 10:00 |  |  |
| 131 | 1.3.2.1.1 | **Base de datos a usar** | 1.5d | 2019-02-07 08:00 | 2019-02-08 13:00 |  |  |
| 132 |  | Comparar bases de datos disponibles | 1d | 2019-02-07 08:00 | 2019-02-07 17:00 |  |  |
| 133 |  | Elegir la opción que mejor se adapte al proyecto | 0.5d | 2019-02-08 08:00 | 2019-02-08 13:00 | 132 |  |
| 134 | 1.3.2.1.2 | **Sistema operativo y aplicaciones de las tablets** | 1.5d | 2019-02-08 13:00 | 2019-02-11 17:00 | 131 |  |
| 135 |  | Comparar los sistemas operativos disponibles | 1d | 2019-02-08 13:00 | 2019-02-11 13:00 |  |  |
| 136 |  | Elegir la opción que mejor se adapte al proyecto | 0.5d | 2019-02-11 13:00 | 2019-02-11 17:00 | 135 |  |
| 137 | 1.3.2.1.3 | **Lenguaje de programación y consultas SQL** | 1.25d | 2019-02-12 08:00 | 2019-02-13 10:00 | 134 |  |
| 138 |  | Analizar que lenguaje de programación y consultas SQL se adapta mejor a nuestra BD elegida | 1.25d | 2019-02-12 08:00 | 2019-02-13 10:00 |  |  |
| 139 |  | Analizar que lenguaje se adapta mejor a las necesidades de la empresa | 1.25d | 2019-02-12 08:00 | 2019-02-13 10:00 |  |  |
| 140 | 1.3.2.1.4 | **Interfaces de comunicación e interoperación con otras aplicaciones** | 1d | 2019-02-07 08:00 | 2019-02-07 17:00 |  | 325d |

| ID | WBS | Task | Duration | Start | Finish | Predecessors | Total float |
| --- | --- | --- | --- | --- | --- | --- | --- |
| 141 |  | Diseñar mediante diagramas y diseño informal las interfaces | 1d | 2019-02-07 08:00 | 2019-02-07 17:00 |  | 325d |
| 142 |  | Informar al jefe del progreso semanal | 0.12d | 2019-02-13 10:00 | 2019-02-13 11:00 | 130 |  |
| 143 | 1.3.2.2 | **Validación de tecnologías** | 4d | 2019-02-13 11:00 | 2019-02-19 11:00 | 142, 130 |  |
| 144 | 1.3.2.2.1 | **Diseño de pruebas de rendimiento de las tecnologías** | 2d | 2019-02-13 11:00 | 2019-02-15 11:00 |  |  |
| 145 |  | Diseñar las pruebas de rendimiento | 2d | 2019-02-13 11:00 | 2019-02-15 11:00 |  |  |
| 146 | 1.3.2.2.2 | **Diseño de pruebas de coste de las tecnologías** | 2d | 2019-02-15 11:00 | 2019-02-19 11:00 | 144 |  |
| 147 |  | Diseñar las pruebas de coste | 2d | 2019-02-15 11:00 | 2019-02-19 11:00 |  |  |
| 148 |  | Informar al jefe del progreso semanal | 0.12d | 2019-02-19 11:00 | 2019-02-19 13:00 | 129 | 1037.5d |
| 149 | 1.3.3 | **Diseño de pruebas** | 7.5d | 2019-02-19 11:00 | 2019-02-28 16:00 | 129 |  |
| 150 | 1.3.3.1 | **Diseño de pruebas de aceptación** | 3d | 2019-02-19 11:00 | 2019-02-22 11:00 |  | 300d |
| 151 | 1.3.3.1.1 | **Diseño de pruebas para los gerentes del local** | 1.5d | 2019-02-19 11:00 | 2019-02-20 16:00 |  | 300d |
| 152 |  | Redactar informe de los minimos que deben cubrir las pruebas | 0.5d | 2019-02-19 11:00 | 2019-02-19 16:00 |  | 300d |
| 153 |  | Diseñar las pruebas basandose en los informes | 1d | 2019-02-19 16:00 | 2019-02-20 16:00 | 152 | 300d |
| 154 | 1.3.3.1.2 | **Diseño de pruebas sobre el personal del local** | 1.5d | 2019-02-19 11:00 | 2019-02-20 16:00 |  |  |
| 155 |  | Redactar informe de los minimos que deben cubrir las pruebas | 0.5d | 2019-02-19 11:00 | 2019-02-19 16:00 |  |  |
| 156 |  | Diseñar las pruebas basandose en los informes | 1d | 2019-02-19 16:00 | 2019-02-20 16:00 | 155 |  |
| 157 | 1.3.3.1.3 | **Diseño de pruebas sobre los usuarios del local** | 1.5d | 2019-02-19 11:00 | 2019-02-20 16:00 |  | 450d |
| 158 |  | Redactar informe de los minimos que deben cubrir las pruebas | 0.5d | 2019-02-19 11:00 | 2019-02-19 16:00 |  | 450d |
| 159 |  | Diseñar las pruebas basandose en los informes | 1d | 2019-02-19 16:00 | 2019-02-20 16:00 | 158 | 450d |
| 160 | 1.3.3.1.4 | **Diseño de pruebas para los proveedores** | 1.5d | 2019-02-20 16:00 | 2019-02-22 11:00 | 151 | 300d |
| 161 |  | Redactar informe de los minimos que deben cubrir las pruebas | 0.5d | 2019-02-20 16:00 | 2019-02-21 11:00 |  | 300d |
| 162 |  | Diseñar las pruebas basandose en los informes | 1d | 2019-02-21 11:00 | 2019-02-22 11:00 | 161 | 300d |
| 163 | 1.3.3.2 | **Diseño de pruebas del sistema** | 3d | 2019-02-20 16:00 | 2019-02-25 16:00 |  | 300d |
| 164 | 1.3.3.2.1 | **Diseño de pruebas para comunicación con PayPal** | 1.5d | 2019-02-20 16:00 | 2019-02-22 11:00 | 154 |  |
| 165 |  | Redactar informe de los minimos que deben cubrir las pruebas | 0.5d | 2019-02-20 16:00 | 2019-02-21 11:00 |  |  |
| 166 |  | Diseñar las pruebas basandose en los informes | 1d | 2019-02-21 11:00 | 2019-02-22 11:00 | 165 |  |
| 167 | 1.3.3.2.2 | **Diseño de pruebas para comunicación con terminales TPV** | 1.5d | 2019-02-20 16:00 | 2019-02-22 11:00 | 157 | 450d |
| 168 |  | Redactar informe de los minimos que deben cubrir las pruebas | 0.5d | 2019-02-20 16:00 | 2019-02-21 11:00 |  | 450d |
| 169 |  | Diseñar las pruebas basandose en los informes | 1d | 2019-02-21 11:00 | 2019-02-22 11:00 | 168 | 450d |
| 170 | 1.3.3.2.3 | **Diseño de pruebas para comunicación con tablets del local** | 1.5d | 2019-02-22 11:00 | 2019-02-25 16:00 | 160 | 300d |
| 171 |  | Redactar informe de los minimos que deben cubrir las pruebas | 0.5d | 2019-02-22 11:00 | 2019-02-22 16:00 |  | 300d |
| 172 |  | Diseñar las pruebas basandose en los informes | 1d | 2019-02-22 16:00 | 2019-02-25 16:00 | 171 | 300d |
| 173 | 1.3.3.3 | **Diseño de pruebas de integración** | 1.5d | 2019-02-22 11:00 | 2019-02-25 16:00 |  |  |
| 174 | 1.3.3.3.1 | **Diseño de pruebas para comunicación entre módulos** | 1.5d | 2019-02-22 11:00 | 2019-02-25 16:00 | 164 |  |
| 175 |  | Redactar informe de los minimos que deben cubrir las pruebas | 0.5d | 2019-02-22 11:00 | 2019-02-22 16:00 |  |  |
| 176 |  | Diseñar las pruebas basandose en los informes | 1d | 2019-02-22 16:00 | 2019-02-25 16:00 | 175 |  |
| 177 | 1.3.3.4 | **Diseño de pruebas de unidad** | 3d | 2019-02-25 16:00 | 2019-02-28 16:00 | 173 |  |
| 178 | 1.3.3.4.1 | **Diseño de pruebas de módulo de monitorización general del sistema** | 1.5d | 2019-02-25 16:00 | 2019-02-27 11:00 |  |  |
| 179 |  | Redactar informe de los minimos que deben cubrir las pruebas | 0.5d | 2019-02-25 16:00 | 2019-02-26 11:00 |  |  |
| 180 |  | Diseñar las pruebas basandose en los informes | 1d | 2019-02-26 11:00 | 2019-02-27 11:00 | 179 |  |
| 181 | 1.3.3.4.2 | **Diseño de pruebas de módulo de entretenimiento** | 1.5d | 2019-02-27 11:00 | 2019-02-28 16:00 | 178 |  |
| 182 |  | Redactar informe de los minimos que deben cubrir las pruebas | 0.5d | 2019-02-27 11:00 | 2019-02-27 16:00 |  |  |
| 183 |  | Diseñar las pruebas basandose en los informes | 1d | 2019-02-27 16:00 | 2019-02-28 16:00 | 182 |  |
| 184 | 1.3.3.4.3 | **Diseño de pruebas de módulo para muestra de datos y comandas** | 1.5d | 2019-02-25 16:00 | 2019-02-27 11:00 |  |  |
| 185 |  | Redactar informe de los minimos que deben cubrir las pruebas | 0.5d | 2019-02-25 16:00 | 2019-02-26 11:00 |  |  |
| 186 |  | Diseñar las pruebas basandose en los informes | 1d | 2019-02-26 11:00 | 2019-02-27 11:00 | 185 |  |
| 187 | 1.3.3.4.4 | **Diseño de pruebas de módulo de gestión de proveedores** | 1.5d | 2019-02-27 11:00 | 2019-02-28 16:00 | 184 |  |
| 188 |  | Redactar informe de los minimos que deben cubrir las pruebas | 0.5d | 2019-02-27 11:00 | 2019-02-27 16:00 |  |  |
| 189 |  | Diseñar las pruebas basandose en los informes | 1d | 2019-02-27 16:00 | 2019-02-28 16:00 | 188 |  |
| 190 | 1.3.3.4.5 | **Diseño de pruebas de módulo del camarero** | 1.5d | 2019-02-25 16:00 | 2019-02-27 11:00 |  |  |
| 191 |  | Redactar informe de los minimos que deben cubrir las pruebas | 0.5d | 2019-02-25 16:00 | 2019-02-26 11:00 |  |  |
| 192 |  | Diseñar las pruebas basandose en los informes | 1d | 2019-02-26 11:00 | 2019-02-27 11:00 | 191 |  |
| 193 | 1.3.3.4.6 | **Diseño de pruebas del módulo de cocinas/barra** | 1.5d | 2019-02-27 11:00 | 2019-02-28 16:00 | 190 |  |
| 194 |  | Redactar informe de los minimos que deben cubrir las pruebas | 0.5d | 2019-02-27 11:00 | 2019-02-27 16:00 |  |  |
| 195 |  | Diseñar las pruebas basandose en los informes | 1d | 2019-02-27 16:00 | 2019-02-28 16:00 | 194 |  |
| 196 |  | Informar al jefe del progreso semanal | 0.12d | 2019-02-28 16:00 | 2019-02-28 17:00 | 149 | 287.5d |
| 197 | 1.3.4 | **Planificación** | 3d | 2019-02-28 16:00 | 2019-03-05 16:00 | 149 |  |
| 198 | 1.3.4.1 | **Revisión de la planificación** | 2.5d | 2019-02-28 16:00 | 2019-03-05 11:00 |  |  |
| 199 |  | Revisar que la planificación se ajuste al tiempo adecuado | 1.5d | 2019-02-28 16:00 | 2019-03-04 11:00 |  |  |
| 200 |  | Revisar que la planificación se ajuste adecuadamente a nuestros recursos | 1d | 2019-03-04 11:00 | 2019-03-05 11:00 | 199 |  |
| 201 | 1.3.4.2 | **Validación de la planificación** | 0.5d | 2019-03-05 11:00 | 2019-03-05 16:00 | 198 |  |
| 202 |  | Reunirse con el jefe para validar la planificación revisada, incluye informe semanal | 0.5d | 2019-03-05 11:00 | 2019-03-05 16:00 |  |  |
| 203 | 1.4 | **Codificación del sistema** | 20.19d | 2019-03-05 16:00 | 2019-04-03 08:30 | 113 |  |
| 204 |  | Control de riesgos y daños | 1d | 2019-03-05 16:00 | 2019-03-06 16:00 |  | 1918.75d |
| 205 | 1.4.1 | **Ambiente de desarrollo** | 6.38d | 2019-03-05 16:00 | 2019-03-14 10:00 |  |  |
| 206 | 1.4.1.1 | **Instalación del entorno de trabajo** | 2.12d | 2019-03-05 16:00 | 2019-03-07 17:00 |  |  |
| 207 | 1.4.1.1.1 | **Selección de tecnologías** | 0.5d | 2019-03-05 16:00 | 2019-03-06 11:00 |  |  |
| 208 |  | Seleccionar las tecnologías basandose en la fase de análisis | 0.5d | 2019-03-05 16:00 | 2019-03-06 11:00 |  |  |
| 209 | 1.4.1.1.2 | **Adquisición de tecnologías** | 0.5d | 2019-03-06 11:00 | 2019-03-06 16:00 | 207 |  |
| 210 |  | Realizar la compra de licencias de software de empresa | 0.5d | 2019-03-06 11:00 | 2019-03-06 16:00 |  |  |

| ID | WBS | Task | Duration | Start | Finish | Predecessors | Total float |
| --- | --- | --- | --- | --- | --- | --- | --- |
| 211 |  | Comprar el hardware necesario | 0.5d | 2019-03-06 11:00 | 2019-03-06 16:00 |  |  |
| 212 | 1.4.1.1.3 | **Instalación en ordenadores locales** | 1d | 2019-03-06 16:00 | 2019-03-07 16:00 | 209 |  |
| 213 |  | Instalar el software adquirido en los ordenadores locales | 1d | 2019-03-06 16:00 | 2019-03-07 16:00 |  |  |
| 214 |  | Informar al jefe del progreso semanal | 0.12d | 2019-03-07 16:00 | 2019-03-07 17:00 | 212 |  |
| 215 | 1.4.1.2 | **Configuración del entorno de trabajo** | 2d | 2019-03-08 08:00 | 2019-03-11 17:00 | 206 |  |
| 216 | 1.4.1.2.1 | **Ajuste de propiedades generales** | 2d | 2019-03-08 08:00 | 2019-03-11 17:00 |  |  |
| 217 |  | Configurar el SO y programas básico de uso general | 2d | 2019-03-08 08:00 | 2019-03-11 17:00 |  |  |
| 218 | 1.4.1.2.2 | **Ajuste de propiedades específicas** | 2d | 2019-03-08 08:00 | 2019-03-11 17:00 |  |  |
| 219 |  | Preparar el software específico en los equipos de personal especializado | 2d | 2019-03-08 08:00 | 2019-03-11 17:00 |  |  |
| 220 | 1.4.1.3 | **Revisiones de eficiencia y velocidad del entorno** | 2.25d | 2019-03-12 08:00 | 2019-03-14 10:00 | 215 |  |
| 221 | 1.4.1.3.1 | **Evaluación de eficiencia y velocidad** | 1d | 2019-03-12 08:00 | 2019-03-12 17:00 |  |  |
| 222 |  | Realizar evaluación de eficiencia y velocidad durante la preparación de los ordenadores | 1d | 2019-03-12 08:00 | 2019-03-12 17:00 |  |  |
| 223 | 1.4.1.3.2 | **Reconfiguración de tecnologías o herramientas** | 1d | 2019-03-13 08:00 | 2019-03-13 17:00 | 221 |  |
| 224 |  | Ajustar las configuraciones iniciales basándose en las evaluaciones | 1d | 2019-03-13 08:00 | 2019-03-13 17:00 |  |  |
| 225 | 1.4.1.3.3 | **Selección parcial de otras herramientas** | 0.25d | 2019-03-14 08:00 | 2019-03-14 10:00 | 223 |  |
| 226 |  | Cubrir problemas encontrados con las herramientas de terceros necesarias | 0.25d | 2019-03-14 08:00 | 2019-03-14 10:00 |  |  |
| 227 | 1.4.2 | **Módulos** | 9.62d | 2019-03-14 10:00 | 2019-03-27 16:00 | 205 |  |
| 228 |  | Informar al jefe del progreso semanal | 0.12d | 2019-03-14 10:00 | 2019-03-14 11:00 |  | 112.5d |
| 229 | 1.4.2.1 | **Módulo del camarero** | 2.5d | 2019-03-14 10:00 | 2019-03-18 15:00 |  | 712.5d |
| 230 | 1.4.2.1.1 | **Almacén de datos de camareros** | 2.5d | 2019-03-14 10:00 | 2019-03-18 15:00 |  |  |
| 231 |  | Preparar la BD y funciones para uso de camareros | 2.5d | 2019-03-14 10:00 | 2019-03-18 15:00 |  |  |
| 232 | 1.4.2.1.2 | **Función de comunicar llamadas al camarero** | 1d | 2019-03-14 10:00 | 2019-03-15 10:00 |  | 862.5d |
| 233 |  | Implementar la función de llamadas al camararero mediante la interfaz diseñada | 1d | 2019-03-14 10:00 | 2019-03-15 10:00 |  | 862.5d |
| 234 | 1.4.2.1.3 | **Función de liberar una mesa ocupada** | 1d | 2019-03-14 10:00 | 2019-03-15 10:00 |  | 862.5d |
| 235 |  | Implementar la función que permite liberar mesas a camareros | 1d | 2019-03-14 10:00 | 2019-03-15 10:00 |  | 862.5d |
| 236 | 1.4.2.1.4 | **Interfaz visual agradable** | 0.5d | 2019-03-14 10:00 | 2019-03-14 15:00 |  | 912.5d |
| 237 |  | Programar la interfaz visual | 0.5d | 2019-03-14 10:00 | 2019-03-14 15:00 |  | 912.5d |
| 238 | 1.4.2.2 | **Módulo de gestión de proveedores** | 3.5d | 2019-03-14 10:00 | 2019-03-19 15:00 |  |  |
| 239 | 1.4.2.2.1 | **Almacén de stock** | 1d | 2019-03-18 15:00 | 2019-03-19 15:00 | 230 |  |
| 240 |  | Programar el gestor de stock y conectarlo a la BD | 1d | 2019-03-18 15:00 | 2019-03-19 15:00 |  |  |
| 241 | 1.4.2.2.2 | **Interfaz visual agradable** | 0.5d | 2019-03-14 10:00 | 2019-03-14 15:00 |  | 300d |
| 242 |  | Programar la interfaz visual | 0.5d | 2019-03-14 10:00 | 2019-03-14 15:00 |  | 300d |
| 243 | 1.4.2.3 | **Módulo de cocinas/barra** | 2.25d | 2019-03-14 11:00 | 2019-03-18 14:00 | 228 | 112.5d |
| 244 | 1.4.2.3.1 | **Función de cobrar con tarjeta u otros métodos** | 2d | 2019-03-14 11:00 | 2019-03-18 11:00 |  | 137.5d |
| 245 |  | Programar funciones de cobro | 1.5d | 2019-03-14 11:00 | 2019-03-15 16:00 |  | 137.5d |
| 246 |  | Adaptar funciones de cobro a todos los métodos de pago | 0.5d | 2019-03-15 16:00 | 2019-03-18 11:00 | 245 | 137.5d |
| 247 | 1.4.2.3.2 | **Función de proteger los datos de las transacciones** | 1.5d | 2019-03-14 11:00 | 2019-03-15 16:00 |  | 187.5d |
| 248 |  | Asegurarse de que se guardan apropiadamente los datos | 0.5d | 2019-03-14 11:00 | 2019-03-14 16:00 |  | 187.5d |
| 249 |  | Proteger mediante encriptación o restricciones de acceso los datos | 1d | 2019-03-14 16:00 | 2019-03-15 16:00 | 248 | 187.5d |
| 250 | 1.4.2.3.3 | **Almacén de datos de comandas** | 2d | 2019-03-14 11:00 | 2019-03-18 11:00 |  | 112.5d |
| 251 |  | Programar el almacen de datos de pedidos | 2d | 2019-03-14 11:00 | 2019-03-18 11:00 |  | 112.5d |
| 252 | 1.4.2.3.4 | **Almacén de datos de mesas** | 0.25d | 2019-03-18 11:00 | 2019-03-18 14:00 | 250 | 112.5d |
| 253 |  | Adaptar el almacén de datos de pedidos a las mesas | 0.25d | 2019-03-18 11:00 | 2019-03-18 14:00 | 251 | 112.5d |
| 254 | 1.4.2.4 | **Módulo para muestra de datos y comandas** | 3d | 2019-03-19 15:00 | 2019-03-22 15:00 | 238, 243 |  |
| 255 | 1.4.2.4.1 | **Función de seleccionar productos y pedidos** | 2d | 2019-03-19 15:00 | 2019-03-21 15:00 |  |  |
| 256 |  | Implementar navegación de menú | 2d | 2019-03-19 15:00 | 2019-03-21 15:00 |  |  |
| 257 | 1.4.2.4.2 | **Función de plasmar información del pedido** | 1d | 2019-03-19 15:00 | 2019-03-20 15:00 |  | 50d |
| 258 |  | Implementar función de información de pedido | 1d | 2019-03-19 15:00 | 2019-03-20 15:00 |  | 50d |
| 259 | 1.4.2.4.3 | **Función de enviar la comanda** | 1d | 2019-03-19 15:00 | 2019-03-20 15:00 |  | 175d |
| 260 |  | Imlementar función de envio de comanda | 1d | 2019-03-19 15:00 | 2019-03-20 15:00 |  | 175d |
| 261 | 1.4.2.4.4 | **Función de reservar mesa libre** | 1d | 2019-03-19 15:00 | 2019-03-20 15:00 |  | 200d |
| 262 |  | Implementar función de reserva | 1d | 2019-03-19 15:00 | 2019-03-20 15:00 |  | 200d |
| 263 | 1.4.2.4.5 | **Función de ver estado de la mesa** | 1d | 2019-03-21 15:00 | 2019-03-22 15:00 |  |  |
| 264 |  | Implementar función de estado | 1d | 2019-03-21 15:00 | 2019-03-22 15:00 | 256 |  |
| 265 | 1.4.2.4.6 | **Función de informar al cliente** | 1.5d | 2019-03-20 15:00 | 2019-03-22 10:00 |  | 50d |
| 266 |  | Adaptar función de comunicación para el cliente | 1.5d | 2019-03-20 15:00 | 2019-03-22 10:00 | 258 | 50d |
| 267 | 1.4.2.4.7 | **Función de códigos QR** | 0.25d | 2019-03-20 15:00 | 2019-03-20 17:00 |  | 175d |
| 268 |  | Adaptar el lector QR a nuestros programas | 0.25d | 2019-03-20 15:00 | 2019-03-20 17:00 | 260 | 175d |
| 269 | 1.4.2.4.8 | **Interfaz visual agradable** | 0.25d | 2019-03-19 15:00 | 2019-03-19 17:00 |  | 275d |
| 270 |  | Programar la interfaz visual | 0.25d | 2019-03-19 15:00 | 2019-03-19 17:00 |  | 275d |
| 271 |  | Informar al jefe de progreso semanal | 0.12d | 2019-03-22 15:00 | 2019-03-22 16:00 | 254 |  |
| 272 | 1.4.2.5 | **Módulo de entretenimiento** | 2d | 2019-03-22 16:00 | 2019-03-26 16:00 | 271 |  |
| 273 | 1.4.2.5.1 | **Función de ofrecer entretenimiento al cliente** | 0.12d | 2019-03-22 16:00 | 2019-03-22 17:00 |  | 37.5d |
| 274 |  | Asegurar que los programas adecuados están instalados y son accesibles | 0.12d | 2019-03-22 16:00 | 2019-03-22 17:00 |  | 37.5d |
| 275 | 1.4.2.5.2 | **Función de interactuar con el local** | 2d | 2019-03-22 16:00 | 2019-03-26 16:00 |  |  |
| 276 |  | Preparar conexiones visuales de camaras | 0.5d | 2019-03-25 08:00 | 2019-03-25 13:00 | 274 | 37.5d |
| 277 |  | Preparar lista de música | 0.06d | 2019-03-22 16:00 | 2019-03-22 16:30 |  | 93.75d |
| 278 |  | Preparar programa de control de interacción | 1d | 2019-03-22 16:00 | 2019-03-25 16:00 |  |  |
| 279 |  | Completar programa de control de interacción con los módulos | 1d | 2019-03-25 16:00 | 2019-03-26 16:00 | 278, 277, 276 |  |
| 280 | 1.4.2.5.3 | **Interfaz visual agradable** | 0.5d | 2019-03-22 16:00 | 2019-03-25 11:00 |  | 150d |

| ID | WBS | Task | Duration | Start | Finish | Predecessors | Total float |
| --- | --- | --- | --- | --- | --- | --- | --- |
| 281 |  | Programar interfaz visual | 0.5d | 2019-03-22 16:00 | 2019-03-25 11:00 |  | 150d |
| 282 | 1.4.2.6 | **Módulo de monitorización general y gerencia** | 1d | 2019-03-26 16:00 | 2019-03-27 16:00 | 272 |  |
| 283 | 1.4.2.6.1 | **Almacén de datos legales** | 1d | 2019-03-26 16:00 | 2019-03-27 16:00 |  |  |
| 284 |  | Preparar BD y gestión de BD | 1d | 2019-03-26 16:00 | 2019-03-27 16:00 |  |  |
| 285 |  | Revisar cumplimiento de requerimientos legales de la BD | 0.25d | 2019-03-26 16:00 | 2019-03-27 09:00 |  | 75d |
| 286 | 1.4.2.6.2 | **Almacén de nóminas** | 1d | 2019-03-26 16:00 | 2019-03-27 16:00 |  |  |
| 287 |  | Preparar BD y gestión de BD para nóminas | 1d | 2019-03-26 16:00 | 2019-03-27 16:00 |  |  |
| 288 |  | Automatizar las nóminas y su almacenamiento de datos | 1d | 2019-03-26 16:00 | 2019-03-27 16:00 |  |  |
| 289 | 1.4.2.6.3 | **Interfaz visual agrdable** | 0.5d | 2019-03-26 16:00 | 2019-03-27 11:00 |  | 50d |
| 290 |  | Programar la interfaz visual | 0.5d | 2019-03-26 16:00 | 2019-03-27 11:00 |  | 50d |
| 291 | 1.4.3 | **Depuración** | 4.19d | 2019-03-27 16:00 | 2019-04-03 08:30 | 227 |  |
| 292 |  | Informar al jefe del progreso semanal | 0.12d | 2019-03-27 16:00 | 2019-03-27 17:00 |  | 406.25d |
| 293 | 1.4.3.1 | **Localización de defectos** | 0.69d | 2019-03-27 16:00 | 2019-03-28 13:30 |  |  |
| 294 | 1.4.3.1.1 | **Listado de defectos** | 0.5d | 2019-03-27 16:00 | 2019-03-28 11:00 |  |  |
| 295 |  | Realizar un listado intensivo de defectos encontrados en la codificación | 0.5d | 2019-03-27 16:00 | 2019-03-28 11:00 |  |  |
| 296 | 1.4.3.1.2 | **Ubicación de defectos** | 0.19d | 2019-03-28 11:00 | 2019-03-28 13:30 | 294 |  |
| 297 |  | Completar listado con posiciones exactas (linea, programa, módulo, etc) de los errores | 0.06d | 2019-03-28 11:00 | 2019-03-28 11:30 |  |  |
| 298 |  | Incluir en listado posibles relaciones del error con otro módulo o trozo de código | 0.12d | 2019-03-28 11:30 | 2019-03-28 13:30 | 297 |  |
| 299 | 1.4.3.2 | **Corrección de defectos** | 3.5d | 2019-03-28 13:30 | 2019-04-03 08:30 | 293 |  |
| 300 | 1.4.3.2.1 | **Modificaciones necesarias** | 2.5d | 2019-03-28 13:30 | 2019-04-02 08:30 |  |  |
| 301 |  | Implementar las modificaciones y arreglos de la codificación | 2.5d | 2019-03-28 13:30 | 2019-04-02 08:30 |  |  |
| 302 | 1.4.3.2.2 | **Revisión de corrección del defecto** | 1d | 2019-04-02 08:30 | 2019-04-03 08:30 | 300 |  |
| 303 |  | Revisar todos los errores del listado para comprobar que han sido arreglados correctamente | 1d | 2019-04-02 08:30 | 2019-04-03 08:30 |  |  |
| 304 | 1.5 | **Pruebas del sistema y sus componentes** | 15.02d | 2019-04-03 08:30 | 2019-04-24 08:40 | 203 |  |
| 305 |  | Control de riesgos y daños | 1d | 2019-04-03 08:30 | 2019-04-04 08:30 |  | 1402.08d |
| 306 |  | Informar al jefe del progreso semanal | 0.12d | 2019-04-03 08:30 | 2019-04-03 09:30 |  | 1489.58d |
| 307 | 1.5.1 | **Planificación de pruebas** | 2.5d | 2019-04-03 08:30 | 2019-04-05 13:30 |  |  |
| 308 | 1.5.1.1 | **Pruebas de aceptación** | 0.5d | 2019-04-03 08:30 | 2019-04-03 13:30 |  |  |
| 309 | 1.5.1.1.1 | **Pruebas para los gerentes de local** | 0.5d | 2019-04-03 08:30 | 2019-04-03 13:30 |  |  |
| 310 |  | Planear las pruebas basándose en su diseño | 0.5d | 2019-04-03 08:30 | 2019-04-03 13:30 |  |  |
| 311 | 1.5.1.1.2 | **Pruebas sobre el personal de local** | 0.5d | 2019-04-03 08:30 | 2019-04-03 13:30 |  |  |
| 312 |  | Planear las pruebas basándose en su diseño | 0.5d | 2019-04-03 08:30 | 2019-04-03 13:30 |  |  |
| 313 | 1.5.1.1.3 | **Pruebas sobre los usuarios del local** | 0.5d | 2019-04-03 08:30 | 2019-04-03 13:30 |  |  |
| 314 |  | Planear las pruebas basándose en su diseño | 0.5d | 2019-04-03 08:30 | 2019-04-03 13:30 |  |  |
| 315 | 1.5.1.1.4 | **Pruebas para los proveedores** | 0.5d | 2019-04-03 08:30 | 2019-04-03 13:30 |  |  |
| 316 |  | Planear las pruebas basándose en su diseño | 0.5d | 2019-04-03 08:30 | 2019-04-03 13:30 |  |  |
| 317 | 1.5.1.2 | **Pruebas del sistema** | 0.5d | 2019-04-03 13:30 | 2019-04-04 08:30 | 308 |  |
| 318 | 1.5.1.2.1 | **Pruebas para comunicación con PayPal** | 0.5d | 2019-04-03 13:30 | 2019-04-04 08:30 |  |  |
| 319 |  | Planear las pruebas basándose en su diseño | 0.5d | 2019-04-03 13:30 | 2019-04-04 08:30 |  |  |
| 320 | 1.5.1.2.2 | **Pruebas para comunicación con terminales TPV** | 0.5d | 2019-04-03 13:30 | 2019-04-04 08:30 |  |  |
| 321 |  | Planear las pruebas basándose en su diseño | 0.5d | 2019-04-03 13:30 | 2019-04-04 08:30 |  |  |
| 322 | 1.5.1.2.3 | **Pruebas para comunicación con tablets de local** | 0.5d | 2019-04-03 13:30 | 2019-04-04 08:30 |  |  |
| 323 |  | Planear las pruebas basándose en su diseño | 0.5d | 2019-04-03 13:30 | 2019-04-04 08:30 |  |  |
| 324 | 1.5.1.3 | **Pruebas de integración** | 0.5d | 2019-04-04 08:30 | 2019-04-04 13:30 | 317 |  |
| 325 | 1.5.1.3.1 | **Pruebas para comunicación entre módulos** | 0.5d | 2019-04-04 08:30 | 2019-04-04 13:30 |  |  |
| 326 |  | Planear las pruebas basándose en su diseño | 0.5d | 2019-04-04 08:30 | 2019-04-04 13:30 |  |  |
| 327 | 1.5.1.4 | **Pruebas de unidad** | 1d | 2019-04-04 13:30 | 2019-04-05 13:30 | 324 |  |
| 328 | 1.5.1.4.1 | **Pruebas de módulo de monitorización general del sistema** | 0.5d | 2019-04-04 13:30 | 2019-04-05 08:30 |  |  |
| 329 |  | Planear las pruebas basándose en su diseño | 0.5d | 2019-04-04 13:30 | 2019-04-05 08:30 |  |  |
| 330 | 1.5.1.4.2 | **Pruebas de módulo de entretenimiento** | 0.5d | 2019-04-04 13:30 | 2019-04-05 08:30 |  |  |
| 331 |  | Planear las pruebas basándose en su diseño | 0.5d | 2019-04-04 13:30 | 2019-04-05 08:30 |  |  |
| 332 | 1.5.1.4.3 | **Pruebas de módulo para muestra de datos y comandas** | 0.5d | 2019-04-04 13:30 | 2019-04-05 08:30 |  |  |
| 333 |  | Planear las pruebas basándose en su diseño | 0.5d | 2019-04-04 13:30 | 2019-04-05 08:30 |  |  |
| 334 | 1.5.1.4.4 | **Pruebas de módulo de gestión de proveedores** | 0.5d | 2019-04-05 08:30 | 2019-04-05 13:30 | 328 |  |
| 335 |  | Planear las pruebas basándose en su diseño | 0.5d | 2019-04-05 08:30 | 2019-04-05 13:30 |  |  |
| 336 | 1.5.1.4.5 | **Pruebas de módulo del camarero** | 0.5d | 2019-04-05 08:30 | 2019-04-05 13:30 | 330 |  |
| 337 |  | Planear las pruebas basándose en su diseño | 0.5d | 2019-04-05 08:30 | 2019-04-05 13:30 |  |  |
| 338 | 1.5.1.4.6 | **Pruebas del módulo de cocinas/barra** | 0.5d | 2019-04-05 08:30 | 2019-04-05 13:30 | 332 |  |
| 339 |  | Planear las pruebas basándose en su diseño | 0.5d | 2019-04-05 08:30 | 2019-04-05 13:30 |  |  |
| 340 | 1.5.2 | **Ejecución de pruebas** | 10d | 2019-04-05 13:30 | 2019-04-19 13:30 | 307 |  |
| 341 | 1.5.2.1 | **Ejecución de casos de prueba** | 3d | 2019-04-05 13:30 | 2019-04-10 13:30 |  |  |
| 342 | 1.5.2.1.1 | **Ejecución de conjunto de casos de unidad** | 2d | 2019-04-05 13:30 | 2019-04-09 13:30 |  | 100d |
| 343 |  | Dividir los equipos para ejecutar las pruebas de cada unidad | 0.5d | 2019-04-05 13:30 | 2019-04-08 08:30 |  |  |
| 344 |  | Ejecutar las pruebas de cada módulo individual | 2d | 2019-04-05 13:30 | 2019-04-09 13:30 |  | 100d |
| 345 | 1.5.2.1.2 | **Ejecución de conjunto de casos de integración** | 2.5d | 2019-04-05 13:30 | 2019-04-10 08:30 |  | 50d |
| 346 |  | Ejecutar las pruebas para comprobar que la integración de módulos no tiene fallos | 2.5d | 2019-04-05 13:30 | 2019-04-10 08:30 |  | 50d |
| 347 | 1.5.2.1.3 | **Ejecución de conjunto de casos de sistema** | 2.5d | 2019-04-05 13:30 | 2019-04-10 08:30 |  | 50d |
| 348 |  | Ejecutar las pruebas de sistema | 2.5d | 2019-04-05 13:30 | 2019-04-10 08:30 |  | 50d |
| 349 |  | Informar al jefe del progreso semanal | 0.12d | 2019-04-05 13:30 | 2019-04-05 14:30 |  | 287.5d |
| 350 | 1.5.2.1.4 | **Ejecución de conjunto de casos de validación** | 2.5d | 2019-04-08 08:30 | 2019-04-10 13:30 |  |  |

| ID | WBS | Task | Duration | Start | Finish | Predecessors | Total float |
| --- | --- | --- | --- | --- | --- | --- | --- |
| 351 |  | Ejecutar las pruebas de validación del programa | 2.5d | 2019-04-08 08:30 | 2019-04-10 13:30 | 343 |  |
| 352 | 1.5.2.2 | **Listado de errores** | 2.5d | 2019-04-10 13:30 | 2019-04-15 08:30 | 341 |  |
| 353 | 1.5.2.2.1 | **Enumeración de errores graves** | 2d | 2019-04-10 13:30 | 2019-04-12 13:30 |  |  |
| 354 |  | Crear un listado con los errores que se consideran más graves | 0.5d | 2019-04-10 13:30 | 2019-04-11 08:30 |  |  |
| 355 |  | Analizar cuales de los errores son tan graves como se estima y cuales pueden desestimarse | 1.5d | 2019-04-11 08:30 | 2019-04-12 13:30 | 354 |  |
| 356 | 1.5.2.2.2 | **Desestimación de errores leves o de otro tipo** | 0.5d | 2019-04-12 13:30 | 2019-04-15 08:30 |  |  |
| 357 |  | Analizar los errores leves para observar que alguna combinación de estos no cause problemas graves | 0.5d | 2019-04-12 13:30 | 2019-04-15 08:30 | 355 |  |
| 358 |  | Informar al jefe del progreso semanal | 0.12d | 2019-04-10 13:30 | 2019-04-10 14:30 |  | 237.5d |
| 359 | 1.5.2.3 | **Corrección de errores** | 2.5d | 2019-04-15 08:30 | 2019-04-17 13:30 | 352 |  |
| 360 | 1.5.2.3.1 | **Depuración de errores** | 2d | 2019-04-15 08:30 | 2019-04-17 08:30 |  |  |
| 361 |  | Arreglar todos los errores graves | 2d | 2019-04-15 08:30 | 2019-04-17 08:30 |  |  |
| 362 |  | Arreglar los errores leves que causen errores graves como conjunto | 2d | 2019-04-15 08:30 | 2019-04-17 08:30 |  |  |
| 363 | 1.5.2.3.2 | **Verificación de corrección** | 0.5d | 2019-04-17 08:30 | 2019-04-17 13:30 | 360 |  |
| 364 |  | Comprobar que las correcciones han sido realizadas sin causar mas errores | 0.5d | 2019-04-17 08:30 | 2019-04-17 13:30 |  |  |
| 365 | 1.5.2.4 | **Verificación de terminación** | 2d | 2019-04-17 13:30 | 2019-04-19 13:30 | 359 |  |
| 366 | 1.5.2.4.1 | **Revisión de listado de errores** | 1.5d | 2019-04-17 13:30 | 2019-04-19 08:30 |  |  |
| 367 |  | Revisar el listado de errores e informe de correcciones | 1.5d | 2019-04-17 13:30 | 2019-04-19 08:30 |  |  |
| 368 | 1.5.2.4.2 | **Aprobación formal de finalización** | 0.5d | 2019-04-19 08:30 | 2019-04-19 13:30 | 366 |  |
| 369 |  | Reunirse con el encargado para formalizar la validación e informar del progreso semanal | 0.5d | 2019-04-19 08:30 | 2019-04-19 13:30 |  |  |
| 370 | 1.5.3 | **Análisis de errores y evaluación** | 2.52d | 2019-04-19 13:30 | 2019-04-24 08:40 | 340 |  |
| 371 | 1.5.3.1 | **Creación de documento de errores** | 1d | 2019-04-19 13:30 | 2019-04-22 13:30 |  |  |
| 372 |  | Redactar documento de errores | 1d | 2019-04-19 13:30 | 2019-04-22 13:30 |  |  |
| 373 | 1.5.3.2 | **Catalogación de errores** | 1d | 2019-04-19 13:30 | 2019-04-22 13:30 |  |  |
| 374 |  | Catalogar errores basandose en el análisis realizado en la ejecución de pruebas | 1d | 2019-04-19 13:30 | 2019-04-22 13:30 | 356, 353 |  |
| 375 | 1.5.3.3 | **Realización de análisis estadísticos** | 1.5d | 2019-04-22 13:30 | 2019-04-24 08:30 | 373, 371 |  |
| 376 |  | Realizar análisis estadístico de errores | 1d | 2019-04-22 13:30 | 2019-04-23 13:30 |  |  |
| 377 |  | Redactar informe estadístico | 0.5d | 2019-04-23 13:30 | 2019-04-24 08:30 | 376 |  |
| 378 | 1.5.3.4 | **Adición al archivo de proyectos de la empresa** | 0.02d | 2019-04-24 08:30 | 2019-04-24 08:40 | 375, 373, 371 |  |
| 379 |  | Añadir los documentos creados al archivo de la empresa | 0.02d | 2019-04-24 08:30 | 2019-04-24 08:40 |  |  |

## Version 2 (saved 2018-11-22)

Note of the change: Correccion gantt

Last finish 2019-04-24 → 2019-04-29 (+5d).

Added:

| ID | Task | Duration | Start | Finish | Predecessors |
| --- | --- | --- | --- | --- | --- |
| 2 | **Respuestas iniciales a riesgos** | 1.5d | 2019-01-01 08:00 | 2019-01-02 13:00 |  |
| 3 | Crear Plan de incentivos | 0.5d | 2019-01-01 08:00 | 2019-01-01 13:00 |  |
| 5 | Crear plan de errores y problemas | 0.5d | 2019-01-02 08:00 | 2019-01-02 13:00 | 4 |
| 198 | **Riesgos Codificación** | 1d | 2019-03-07 11:00 | 2019-03-08 11:00 |  |

Removed: 103 Planificación de la Gestión de Riesgos; 104 Identificar los riesgos; 105 Realizar análisis cualitativo; 106 Realizar análisis cuantitativo; 107 Planificar la respuesta de los riegos; 108 Implementación Respuesta Riesgos; 109 Plan para errores y problemas; 110 Revisión de aspectos legales

Changed:

| ID | Task | Start | Finish | Duration | Total float | Predecessors |
| --- | --- | --- | --- | --- | --- | --- |
| 1 | **Proyecto de sistema para bar tecnológico** | 2018-10-22 08:00 → 2019-01-01 08:00 (+71d) | 2019-04-24 08:40 → 2019-04-29 14:40 (+5d) | 132.08d → 84.71d |  |  |
| 4 | Plan de comportamiento | 2019-01-31 13:00 → 2019-01-01 13:00 (-30d) | 2019-01-31 17:00 → 2019-01-01 17:00 (-30d) |  | 5808.33d → none | none → 3 |
| 6 | **Análisis de requisitos del sistema** | 2018-10-22 08:00 → 2019-01-02 13:00 (+72d) | 2019-01-25 10:00 → 2019-01-28 15:00 (+3d) | 69.25d → 18.25d |  | none → 2 |
| 7 | **Identificación de las necesidades del cliente** | 2018-10-22 08:00 → 2019-01-02 13:00 (+72d) | 2019-01-07 13:00 → 2019-01-08 17:00 (+1d) | 55.5d → 4.5d |  |  |
| 8 | **Especificación informal del sistema** | 2018-10-22 08:00 → 2019-01-02 13:00 (+72d) | 2019-01-07 13:00 → 2019-01-08 17:00 (+1d) | 55.5d → 4.5d |  |  |
| 9 | **Técnica de obtención de requisitos** | 2018-10-22 08:00 → 2019-01-02 13:00 (+72d) | 2018-10-24 17:00 → 2019-01-07 13:00 (+75d) |  | 5060d → none |  |
| 10 | Preparar preguntas y temáticas para entrevista inicial | 2018-10-22 08:00 → 2019-01-02 13:00 (+72d) | 2018-10-22 13:00 → 2019-01-02 17:00 (+72d) |  | 5060d → none |  |
| 11 | Entrevistar jefe de proyecto | 2018-10-22 13:00 → 2019-01-03 08:00 (+73d) | 2018-10-22 17:00 → 2019-01-03 13:00 (+73d) |  | 5060d → none |  |
| 12 | Cuestionar futuros empleados para conocer sus necesidades | 2018-10-23 08:00 → 2019-01-03 13:00 (+72d) | 2018-10-23 17:00 → 2019-01-04 13:00 (+73d) |  | 5060d → none |  |
| 13 | Cuestionar posibles clientes para conocer sus preferencias | 2018-10-24 08:00 → 2019-01-04 13:00 (+72d) | 2018-10-24 17:00 → 2019-01-07 13:00 (+75d) |  | 5060d → none |  |
| 14 | **Determinación informal de aspectos del sistema** | 2018-10-25 08:00 → 2019-01-07 13:00 (+74d) | 2019-01-07 13:00 → 2019-01-08 17:00 (+1d) | 52.5d → 1.5d |  |  |
| 15 | Determinar necesidades de jefe de proyectos | 2018-10-25 08:00 → 2019-01-07 13:00 (+74d) | 2018-10-25 13:00 → 2019-01-07 17:00 (+74d) |  | 5060d → none |  |
| 16 | **Determinación informal de funciones** | 2018-10-25 13:00 → 2019-01-08 08:00 (+75d) | 2019-01-04 13:00 → 2019-01-08 13:48 (+4d) | 51d → 0.6d | 20d → none |  |
| 17 | Cuestionar futuros empleados para conocer sus necesidades | 2018-10-25 13:00 → 2019-01-08 08:00 (+75d) | 2018-10-25 13:48 → 2019-01-08 08:48 (+75d) |  | 5060d → none |  |
| 18 | Cuestionar posibles clientes para conocer sus preferencias | 2019-01-04 11:12 → 2019-01-08 13:00 (+4d) | 2019-01-04 13:00 → 2019-01-08 13:48 (+4d) |  | 20d → none |  |
| 19 | **Determinación informal de información manejada** | 2018-10-25 13:48 → 2019-01-08 08:48 (+75d) | 2019-01-07 09:36 → 2019-01-08 14:36 (+1d) | 51.6d → 0.6d |  |  |
| 20 | Cuestionar futuros empleados para conocer sus necesidades | 2018-10-25 13:48 → 2019-01-08 08:48 (+75d) | 2018-10-25 14:36 → 2019-01-08 09:36 (+75d) |  | 5060d → none |  |
| 21 | Cuestionar posibles clientes para conocer sus preferencias | 2019-01-07 08:48 → 2019-01-08 13:48 (+1d) | 2019-01-07 09:36 → 2019-01-08 14:36 (+1d) |  |  |  |
| 22 | **Determinación informal de interfaces del sistema** | 2018-10-25 14:36 → 2019-01-08 09:36 (+75d) | 2019-01-07 10:24 → 2019-01-08 15:24 (+1d) | 51.6d → 0.6d |  |  |
| 23 | Cuestionar futuros empleados para conocer sus necesidades | 2018-10-25 14:36 → 2019-01-08 09:36 (+75d) | 2018-10-25 15:24 → 2019-01-08 10:24 (+75d) |  | 5060d → none |  |
| 24 | Cuestionar posibles clientes para conocer sus preferencias | 2019-01-07 09:36 → 2019-01-08 14:36 (+1d) | 2019-01-07 10:24 → 2019-01-08 15:24 (+1d) |  |  |  |
| 25 | **Determinación informal de rendimiento del sistema** | 2018-10-25 15:24 → 2019-01-08 10:24 (+75d) | 2019-01-07 11:12 → 2019-01-08 16:12 (+1d) | 51.6d → 0.6d |  |  |
| 26 | Cuestionar futuros empleados para conocer sus necesidades | 2018-10-25 15:24 → 2019-01-08 10:24 (+75d) | 2018-10-25 16:12 → 2019-01-08 11:12 (+75d) |  | 5060d → none |  |
| 27 | Cuestionar posibles clientes para conocer sus preferencias | 2019-01-07 10:24 → 2019-01-08 15:24 (+1d) | 2019-01-07 11:12 → 2019-01-08 16:12 (+1d) |  |  |  |
| 28 | **Determinación informal de las restricciones del sistema** | 2018-10-25 16:12 → 2019-01-08 11:12 (+75d) | 2019-01-07 13:00 → 2019-01-08 17:00 (+1d) | 51.6d → 0.6d |  |  |
| 29 | Cuestionar futuros empleados para conocer sus necesidades | 2018-10-25 16:12 → 2019-01-08 11:12 (+75d) | 2018-10-25 17:00 → 2019-01-08 13:00 (+75d) |  | 5060d → none |  |
| 30 | Cuestionar posibles clientes para conocer sus preferencias | 2019-01-07 11:12 → 2019-01-08 16:12 (+1d) | 2019-01-07 13:00 → 2019-01-08 17:00 (+1d) |  |  |  |
| 31 | **Asignación de funciones a cada elemento del sistema** | 2019-01-07 13:00 → 2019-01-09 08:00 (+2d) | 2019-01-14 13:00 → 2019-01-15 17:00 (+1d) |  |  |  |
| 32 | **Alternativas de creación del sistema** | 2019-01-07 13:00 → 2019-01-09 08:00 (+2d) | 2019-01-09 17:00 → 2019-01-11 13:00 (+2d) |  |  |  |
| 33 | Buscar tecnologías y metodologías alternativas | 2019-01-07 13:00 → 2019-01-09 08:00 (+2d) | 2019-01-09 17:00 → 2019-01-11 13:00 (+2d) |  |  |  |
| 34 | Informar del progreso de la semana al Jefe de proyecto | 2019-01-10 08:00 → 2019-01-11 13:00 (+1d) | 2019-01-10 09:00 → 2019-01-11 14:00 (+1d) |  |  |  |
| 35 | **Validación de las alternativas de creación del sistema** | 2019-01-10 09:00 → 2019-01-11 14:00 (+1d) | 2019-01-14 13:00 → 2019-01-15 17:00 (+1d) |  |  |  |
| 36 | Analizar las alternativas obtenidas | 2019-01-10 09:00 → 2019-01-11 14:00 (+1d) | 2019-01-11 09:00 → 2019-01-14 14:00 (+3d) |  |  |  |
| 37 | Comparar las alternativas con la propuesta original | 2019-01-11 09:00 → 2019-01-14 14:00 (+3d) | 2019-01-14 09:00 → 2019-01-15 14:00 (+1d) |  |  |  |
| 38 | Decidir finalmente que tecnología usar | 2019-01-14 09:00 → 2019-01-15 14:00 (+1d) | 2019-01-14 11:00 → 2019-01-15 16:00 (+1d) |  |  |  |
| 39 | Informar al Jefe del progreso de la semana | 2019-01-14 11:00 → 2019-01-15 16:00 (+1d) | 2019-01-14 13:00 → 2019-01-15 17:00 (+1d) |  |  |  |
| 40 | **Evaluación de la viabilidad del sistema** | 2019-01-14 13:00 → 2019-01-16 08:00 (+2d) | 2019-01-24 09:00 → 2019-01-25 14:00 (+1d) |  |  |  |
| 41 | **Estudio de viabilidad económico** | 2019-01-14 13:00 → 2019-01-16 08:00 (+2d) | 2019-01-16 17:00 → 2019-01-18 13:00 (+2d) |  |  |  |
| 42 | Realizar análisis de costes económicos | 2019-01-14 13:00 → 2019-01-16 08:00 (+2d) | 2019-01-15 09:00 → 2019-01-16 14:00 (+1d) |  |  |  |
| 43 | Realizar análisis de mercado | 2019-01-15 09:00 → 2019-01-16 14:00 (+1d) | 2019-01-15 15:00 → 2019-01-17 10:00 (+2d) |  |  |  |
| 44 | Realizar estimaciones coste-beneficio y tiempo-beneficio | 2019-01-15 15:00 → 2019-01-17 10:00 (+2d) | 2019-01-16 11:00 → 2019-01-17 16:00 (+1d) |  |  |  |
| 45 | Reunirse con el jefe para decidir su el proyecto se considera viable | 2019-01-16 11:00 → 2019-01-17 16:00 (+1d) | 2019-01-16 17:00 → 2019-01-18 13:00 (+2d) |  |  |  |
| 46 | **Estudio de viabilidad técnico** | 2019-01-17 08:00 → 2019-01-18 13:00 (+1d) | 2019-01-18 15:00 → 2019-01-22 10:00 (+4d) |  |  |  |
| 47 | Estudiar las tecnologías disponibles para el proyecto | 2019-01-17 08:00 → 2019-01-18 13:00 (+1d) | 2019-01-17 14:00 → 2019-01-21 09:00 (+4d) |  |  |  |
| 48 | Analizar recursos y tecnologías a las que tiene acceso la empresa | 2019-01-17 14:00 → 2019-01-21 09:00 (+4d) | 2019-01-17 16:00 → 2019-01-21 11:00 (+4d) |  |  |  |
| 49 | Analizar recursos y tecnologías de terceros que podrían comprarse o contratarse | 2019-01-17 16:00 → 2019-01-21 11:00 (+4d) | 2019-01-18 09:00 → 2019-01-21 14:00 (+3d) |  |  |  |
| 50 | Analizar con la información obtenida si el proyecto es viable | 2019-01-18 09:00 → 2019-01-21 14:00 (+3d) | 2019-01-18 15:00 → 2019-01-22 10:00 (+4d) |  |  |  |
| 51 | Informar al jefe del progreso semanal | 2019-01-18 15:00 → 2019-01-22 10:00 (+4d) | 2019-01-18 16:00 → 2019-01-22 11:00 (+4d) |  |  |  |
| 52 | **Estudio de viabilidad legal** | 2019-01-18 16:00 → 2019-01-22 11:00 (+4d) | 2019-01-22 16:00 → 2019-01-24 11:00 (+2d) |  |  |  |
| 53 | Estudiar las leyes relacionadas con la parte tecnológica del proyecto | 2019-01-18 16:00 → 2019-01-22 11:00 (+4d) | 2019-01-21 11:00 → 2019-01-22 16:00 (+1d) |  |  |  |
| 54 | Estudiar las leyes relacionadas con al parte de hostelería del proyecto | 2019-01-21 11:00 → 2019-01-22 16:00 (+1d) | 2019-01-21 16:00 → 2019-01-23 11:00 (+2d) |  |  |  |
| 55 | Estudiar las leyes relacionadas con salud e higiene de local | 2019-01-21 16:00 → 2019-01-23 11:00 (+2d) | 2019-01-22 11:00 → 2019-01-23 16:00 (+1d) |  |  |  |
| 56 | Realizar un informe sobre los estudios legales | 2019-01-22 11:00 → 2019-01-23 16:00 (+1d) | 2019-01-22 15:00 → 2019-01-24 10:00 (+2d) |  |  |  |
| 57 | Analizar con la información obtenida si el proyecto es legalmente viable | 2019-01-22 15:00 → 2019-01-24 10:00 (+2d) | 2019-01-22 16:00 → 2019-01-24 11:00 (+2d) |  |  |  |
| 58 | **Estudio de viabilidad de plazos** | 2019-01-22 16:00 → 2019-01-24 11:00 (+2d) | 2019-01-24 09:00 → 2019-01-25 14:00 (+1d) |  |  |  |
| 59 | Realizar análisis de costes temporales | 2019-01-22 16:00 → 2019-01-24 11:00 (+2d) | 2019-01-23 16:00 → 2019-01-25 11:00 (+2d) |  |  |  |
| 60 | Realizar planificación de distribución de trabajo | 2019-01-22 16:00 → 2019-01-24 11:00 (+2d) | 2019-01-23 09:00 → 2019-01-24 14:00 (+1d) |  |  |  |
| 61 | Determinar si el proyecto es viable en el tiempo elegido | 2019-01-23 16:00 → 2019-01-25 11:00 (+2d) | 2019-01-24 09:00 → 2019-01-25 14:00 (+1d) |  |  |  |
| 62 | **Obtención de una definición del sistema** | 2019-01-24 09:00 → 2019-01-25 14:00 (+1d) | 2019-01-25 10:00 → 2019-01-28 15:00 (+3d) |  |  |  |
| 63 | **Especificación formal del sistema** | 2019-01-24 09:00 → 2019-01-25 14:00 (+1d) | 2019-01-24 13:12 → 2019-01-28 08:12 (+4d) |  |  |  |
| 64 | **Diagrama de contexto** | 2019-01-24 09:00 → 2019-01-25 14:00 (+1d) | 2019-01-24 10:36 → 2019-01-25 15:36 (+1d) |  |  |  |
| 65 | Dibujar el diagrama de contexto | 2019-01-24 09:00 → 2019-01-25 14:00 (+1d) | 2019-01-24 10:36 → 2019-01-25 15:36 (+1d) |  |  |  |
| 66 | **Diagrama de sistema** | 2019-01-24 10:36 → 2019-01-25 15:36 (+1d) | 2019-01-24 13:12 → 2019-01-28 08:12 (+4d) |  |  |  |
| 67 | Dibujar el diagrama de sistema | 2019-01-24 10:36 → 2019-01-25 15:36 (+1d) | 2019-01-24 13:12 → 2019-01-28 08:12 (+4d) |  |  |  |
| 68 | **Representación del sistema** | 2019-01-24 13:12 → 2019-01-28 08:12 (+4d) | 2019-01-25 09:00 → 2019-01-28 14:00 (+3d) |  |  |  |
| 69 | **Diagramas de flujo de datos** | 2019-01-24 13:12 → 2019-01-28 08:12 (+4d) | 2019-01-24 14:48 → 2019-01-28 09:48 (+4d) |  |  |  |
| 70 | Dibujar el diagrama de sistema | 2019-01-24 16:24 → 2019-01-28 08:12 (+4d) | 2019-01-25 09:00 → 2019-01-28 09:48 (+3d) |  |  |  |
| 71 | **Diagramas de flujo de control** | 2019-01-24 14:48 → 2019-01-28 09:48 (+4d) | 2019-01-24 16:24 → 2019-01-28 11:24 (+4d) |  |  |  |
| 72 | Dibujar el diagrama de sistema | 2019-01-24 13:12 → 2019-01-28 09:48 (+4d) | 2019-01-24 14:48 → 2019-01-28 11:24 (+4d) |  |  |  |
| 73 | **Diagramas del ámbito de la información** | 2019-01-24 16:24 → 2019-01-28 11:24 (+4d) | 2019-01-25 09:00 → 2019-01-28 14:00 (+3d) |  |  |  |

| ID | Task | Start | Finish | Duration | Total float | Predecessors | Other |
| --- | --- | --- | --- | --- | --- | --- | --- |
| 74 | Dibujar el diagrama de sistema | 2019-01-24 14:48 → 2019-01-28 11:24 (+4d) | 2019-01-24 16:24 → 2019-01-28 14:00 (+4d) |  |  |  |  |
| 75 | Informar al Jefe del progreso semanal | 2019-01-25 09:00 → 2019-01-28 14:00 (+3d) | 2019-01-25 10:00 → 2019-01-28 15:00 (+3d) |  |  |  |  |
| 76 | **Análisis de requisitos del software** | 2019-01-25 10:00 → 2019-01-28 15:00 (+3d) | 2019-01-29 17:00 → 2019-01-31 13:00 (+2d) |  |  |  |  |
| 77 | **Extracción o determinación de requisitos** | 2019-01-25 10:00 → 2019-01-28 15:00 (+3d) | 2019-01-25 14:00 → 2019-01-29 09:00 (+4d) |  |  |  |  |
| 78 | **Documentos de reuniones con cliente** | 2019-01-25 10:00 → 2019-01-28 15:00 (+3d) | 2019-01-25 11:00 → 2019-01-28 16:00 (+3d) |  |  |  |  |
| 79 | Realizar un acta de reunión para la reunión con el cliente | 2019-01-25 10:00 → 2019-01-28 15:00 (+3d) | 2019-01-25 11:00 → 2019-01-28 16:00 (+3d) |  |  |  |  |
| 80 | Realizar un informe sobre las solicitudes e información que se obtuvo del cliente | 2019-01-25 10:00 → 2019-01-28 15:00 (+3d) | 2019-01-25 11:00 → 2019-01-28 16:00 (+3d) |  |  |  |  |
| 81 | **Especificación informal de requisitos software** | 2019-01-25 11:00 → 2019-01-28 16:00 (+3d) | 2019-01-25 14:00 → 2019-01-29 09:00 (+4d) |  |  |  |  |
| 82 | Redactar un primer informe de los requisitos del software a partir del informe de reunión con el cliente | 2019-01-25 11:00 → 2019-01-28 16:00 (+3d) | 2019-01-25 14:00 → 2019-01-29 09:00 (+4d) |  |  |  |  |
| 83 | **Análisis de requisitos** | 2019-01-25 14:00 → 2019-01-29 09:00 (+4d) | 2019-01-28 11:00 → 2019-01-29 16:00 (+1d) |  |  |  |  |
| 84 | **Validación de especificación informal** | 2019-01-25 14:00 → 2019-01-29 09:00 (+4d) | 2019-01-25 15:00 → 2019-01-29 10:00 (+4d) |  |  |  |  |
| 85 | Analizar especificación informal para posibles mejoras | 2019-01-25 14:00 → 2019-01-29 09:00 (+4d) | 2019-01-25 15:00 → 2019-01-29 10:00 (+4d) |  |  |  |  |
| 86 | Buscar errores en la especificación informal | 2019-01-25 14:00 → 2019-01-29 09:00 (+4d) | 2019-01-25 15:00 → 2019-01-29 10:00 (+4d) |  |  |  |  |
| 87 | **Resolución de inconsistencias** | 2019-01-25 15:00 → 2019-01-29 10:00 (+4d) | 2019-01-25 17:00 → 2019-01-29 13:00 (+4d) |  |  |  |  |
| 88 | Corregir errores en la especificación informal | 2019-01-25 15:00 → 2019-01-29 10:00 (+4d) | 2019-01-25 17:00 → 2019-01-29 13:00 (+4d) |  |  |  |  |
| 89 | Encontrar redundancias y discrepancias en la especificación informal | 2019-01-25 15:00 → 2019-01-29 10:00 (+4d) | 2019-01-25 17:00 → 2019-01-29 13:00 (+4d) |  |  |  |  |
| 90 | **Coordinación de requisitos relacionados** | 2019-01-28 08:00 → 2019-01-29 13:00 (+1d) | 2019-01-28 11:00 → 2019-01-29 16:00 (+1d) |  |  |  |  |
| 91 | Formar relaciones entre requisitos que tengan puntos comunes | 2019-01-28 08:00 → 2019-01-29 13:00 (+1d) | 2019-01-28 10:00 → 2019-01-29 15:00 (+1d) |  |  |  |  |
| 92 | Purgar relaciones redundantes | 2019-01-28 10:00 → 2019-01-29 15:00 (+1d) | 2019-01-28 11:00 → 2019-01-29 16:00 (+1d) |  |  |  |  |
| 93 | **Especificación de requisitos** | 2019-01-28 11:00 → 2019-01-29 16:00 (+1d) | 2019-01-29 09:00 → 2019-01-30 14:00 (+1d) |  |  |  |  |
| 94 | **Documento de especificación formal de requisitos** | 2019-01-28 11:00 → 2019-01-29 16:00 (+1d) | 2019-01-28 16:00 → 2019-01-30 11:00 (+2d) |  |  |  |  |
| 95 | Redactar documento de requisitos formal | 2019-01-28 11:00 → 2019-01-29 16:00 (+1d) | 2019-01-28 16:00 → 2019-01-30 11:00 (+2d) |  |  |  |  |
| 96 | **Revisión de documento de especificación formal** | 2019-01-28 16:00 → 2019-01-30 11:00 (+2d) | 2019-01-29 09:00 → 2019-01-30 14:00 (+1d) |  |  |  |  |
| 97 | Revisar documento de requisitos formal en busca de errores | 2019-01-28 16:00 → 2019-01-30 11:00 (+2d) | 2019-01-28 17:00 → 2019-01-30 13:00 (+2d) |  |  |  |  |
| 98 | Revisar documento de requisitos formal en busca de mejoras de formato y claridad | 2019-01-29 08:00 → 2019-01-30 13:00 (+1d) | 2019-01-29 09:00 → 2019-01-30 14:00 (+1d) |  |  |  |  |
| 99 | **Validación de requisitos** | 2019-01-29 09:00 → 2019-01-30 14:00 (+1d) | 2019-01-29 16:00 → 2019-01-31 11:00 (+2d) |  |  |  |  |
| 100 | **Reunión con cliente para validación de requisitos** | 2019-01-29 09:00 → 2019-01-30 14:00 (+1d) | 2019-01-29 11:00 → 2019-01-30 16:00 (+1d) |  |  |  |  |
| 101 | Redactar acta de reunión con el cliente y validar requisitos | 2019-01-29 09:00 → 2019-01-30 14:00 (+1d) | 2019-01-29 11:00 → 2019-01-30 16:00 (+1d) |  |  |  |  |
| 102 | **Corrección de especificación formal** | 2019-01-29 11:00 → 2019-01-30 16:00 (+1d) | 2019-01-29 14:00 → 2019-01-31 09:00 (+2d) |  |  |  |  |
| 103 | Ajustar los requisitos a partir de la validación realizada | 2019-01-29 11:00 → 2019-01-30 16:00 (+1d) | 2019-01-29 14:00 → 2019-01-31 09:00 (+2d) |  |  |  |  |
| 104 | **Validación de la especificación forma corregidsa** | 2019-01-29 14:00 → 2019-01-31 09:00 (+2d) | 2019-01-29 16:00 → 2019-01-31 11:00 (+2d) |  |  |  |  |
| 105 | Reunirse con el cliente para realizar la validación final de requisitos | 2019-01-29 14:00 → 2019-01-31 09:00 (+2d) | 2019-01-29 16:00 → 2019-01-31 11:00 (+2d) |  |  |  |  |
| 106 | Reunirse con el jefe para informar del progreso de la semana | 2019-01-29 16:00 → 2019-01-31 11:00 (+2d) | 2019-01-29 17:00 → 2019-01-31 13:00 (+2d) |  |  |  |  |
| 107 | **Diseño del sistema software** | 2019-01-30 08:00 → 2019-01-31 13:00 (+1d) | 2019-03-05 16:00 → 2019-03-07 11:00 (+2d) |  |  |  |  |
| 108 | Control de riesgos y daños | 2019-01-30 08:00 → 2019-01-31 13:00 (+1d) | 2019-01-30 17:00 → 2019-02-04 13:00 (+5d) | 1d → 2d | 2387.5d → 2287.5d |  | resources Analista-Diseñador → Director de proyecto [50%] |
| 109 | **Diseño funcional** | 2019-01-30 08:00 → 2019-01-31 13:00 (+1d) | 2019-02-06 17:00 → 2019-02-08 13:00 (+2d) |  |  |  |  |
| 110 | **Diseño módulo del camarero** | 2019-01-30 08:00 → 2019-01-31 13:00 (+1d) | 2019-01-30 17:00 → 2019-02-01 13:00 (+2d) |  |  |  |  |
| 111 | Realizar diseño del módulo | 2019-02-04 08:00 → 2019-01-31 13:00 (-4d) | 2019-02-04 17:00 → 2019-02-01 13:00 (-3d) |  |  |  |  |
| 112 | **Diseño módulo de gestión de proveedores** | 2019-01-31 08:00 → 2019-02-01 13:00 (+1d) | 2019-01-31 17:00 → 2019-02-04 13:00 (+4d) |  |  |  |  |
| 113 | Realizar diseño del módulo | 2019-02-05 08:00 → 2019-02-01 13:00 (-4d) | 2019-02-05 17:00 → 2019-02-04 13:00 (-1d) |  |  |  |  |
| 114 | **Diseño módulo de cocinas/barras** | 2019-02-01 08:00 → 2019-02-04 13:00 (+3d) | 2019-02-01 17:00 → 2019-02-05 13:00 (+4d) |  |  |  |  |
| 115 | Realizar diseño del módulo | 2019-02-06 08:00 → 2019-02-04 13:00 (-2d) | 2019-02-06 17:00 → 2019-02-05 13:00 (-1d) |  |  |  |  |
| 116 | **Diseño módulo para muestra de datos y comandas** | 2019-02-04 08:00 → 2019-02-05 13:00 (+1d) | 2019-02-04 17:00 → 2019-02-06 13:00 (+2d) |  |  |  |  |
| 117 | Realizar diseño del módulo | 2019-01-30 08:00 → 2019-02-05 13:00 (+6d) | 2019-01-30 17:00 → 2019-02-06 13:00 (+7d) |  |  |  |  |
| 118 | **Diseño módulo de entretenimiento** | 2019-02-05 08:00 → 2019-02-06 13:00 (+1d) | 2019-02-05 17:00 → 2019-02-07 13:00 (+2d) |  |  |  |  |
| 119 | Realizar diseño del módulo | 2019-01-31 08:00 → 2019-02-06 13:00 (+6d) | 2019-01-31 17:00 → 2019-02-07 13:00 (+7d) |  |  |  |  |
| 120 | **Diseño módulo de monitorización general del sistema** | 2019-02-06 08:00 → 2019-02-07 13:00 (+1d) | 2019-02-06 17:00 → 2019-02-08 13:00 (+2d) |  |  |  |  |
| 121 | Realizar diseño del módulo | 2019-02-01 08:00 → 2019-02-07 13:00 (+6d) | 2019-02-01 17:00 → 2019-02-08 13:00 (+7d) |  |  |  |  |
| 122 | Informar al jefe del progreso semanal | 2019-02-07 08:00 → 2019-02-08 13:00 (+1d) | 2019-02-07 09:00 → 2019-02-08 14:00 (+1d) |  |  |  |  |
| 123 | **Diseño técnico** | 2019-02-07 08:00 → 2019-02-08 13:00 (+1d) | 2019-02-19 11:00 → 2019-02-20 16:00 (+1d) |  |  |  |  |
| 124 | **Selección de tecnologías** | 2019-02-07 08:00 → 2019-02-08 13:00 (+1d) | 2019-02-13 10:00 → 2019-02-14 15:00 (+1d) |  |  |  |  |
| 125 | **Base de datos a usar** | 2019-02-07 08:00 → 2019-02-08 13:00 (+1d) | 2019-02-08 13:00 → 2019-02-11 17:00 (+3d) |  |  |  |  |
| 126 | Comparar bases de datos disponibles | 2019-02-07 08:00 → 2019-02-08 13:00 (+1d) | 2019-02-07 17:00 → 2019-02-11 13:00 (+4d) |  |  |  |  |
| 127 | Elegir la opción que mejor se adapte al proyecto | 2019-02-08 08:00 → 2019-02-11 13:00 (+3d) | 2019-02-08 13:00 → 2019-02-11 17:00 (+3d) |  |  |  |  |
| 128 | **Sistema operativo y aplicaciones de las tablets** | 2019-02-08 13:00 → 2019-02-12 08:00 (+4d) | 2019-02-11 17:00 → 2019-02-13 13:00 (+2d) |  |  |  |  |
| 129 | Comparar los sistemas operativos disponibles | 2019-02-08 13:00 → 2019-02-12 08:00 (+4d) | 2019-02-11 13:00 → 2019-02-12 17:00 (+1d) |  |  |  |  |
| 130 | Elegir la opción que mejor se adapte al proyecto | 2019-02-11 13:00 → 2019-02-13 08:00 (+2d) | 2019-02-11 17:00 → 2019-02-13 13:00 (+2d) |  |  |  |  |
| 131 | **Lenguaje de programación y consultas SQL** | 2019-02-12 08:00 → 2019-02-13 13:00 (+1d) | 2019-02-13 10:00 → 2019-02-14 15:00 (+1d) |  |  |  |  |
| 132 | Analizar que lenguaje de programación y consultas SQL se adapta mejor a nuestra BD elegida | 2019-02-12 08:00 → 2019-02-13 13:00 (+1d) | 2019-02-13 10:00 → 2019-02-14 15:00 (+1d) |  |  |  |  |
| 133 | Analizar que lenguaje se adapta mejor a las necesidades de la empresa | 2019-02-12 08:00 → 2019-02-13 13:00 (+1d) | 2019-02-13 10:00 → 2019-02-14 15:00 (+1d) |  |  |  |  |
| 134 | **Interfaces de comunicación e interoperación con otras aplicaciones** | 2019-02-07 08:00 → 2019-02-08 13:00 (+1d) | 2019-02-07 17:00 → 2019-02-11 13:00 (+4d) |  |  |  |  |
| 135 | Diseñar mediante diagramas y diseño informal las interfaces | 2019-02-07 08:00 → 2019-02-08 13:00 (+1d) | 2019-02-07 17:00 → 2019-02-11 13:00 (+4d) |  |  |  |  |
| 136 | Informar al jefe del progreso semanal | 2019-02-19 11:00 → 2019-02-14 15:00 (-5d) | 2019-02-19 13:00 → 2019-02-14 16:00 (-5d) |  | 1037.5d → none | 123 → 124 |  |
| 137 | **Validación de tecnologías** | 2019-02-13 11:00 → 2019-02-14 16:00 (+1d) | 2019-02-19 11:00 → 2019-02-20 16:00 (+1d) |  |  | 142, 124 → 136, 124 |  |
| 138 | **Diseño de pruebas de rendimiento de las tecnologías** | 2019-02-13 11:00 → 2019-02-14 16:00 (+1d) | 2019-02-15 11:00 → 2019-02-18 16:00 (+3d) |  |  |  |  |
| 139 | Diseñar las pruebas de rendimiento | 2019-02-13 11:00 → 2019-02-14 16:00 (+1d) | 2019-02-15 11:00 → 2019-02-18 16:00 (+3d) |  |  |  |  |
| 140 | **Diseño de pruebas de coste de las tecnologías** | 2019-02-15 11:00 → 2019-02-18 16:00 (+3d) | 2019-02-19 11:00 → 2019-02-20 16:00 (+1d) |  |  |  |  |
| 141 | Diseñar las pruebas de coste | 2019-02-15 11:00 → 2019-02-18 16:00 (+3d) | 2019-02-19 11:00 → 2019-02-20 16:00 (+1d) |  |  |  |  |
| 142 | Informar al jefe del progreso semanal | 2019-02-13 10:00 → 2019-02-20 16:00 (+7d) | 2019-02-13 11:00 → 2019-02-20 17:00 (+7d) |  | none → 1037.5d | 124 → 123 |  |
| 143 | **Diseño de pruebas** | 2019-02-19 11:00 → 2019-02-20 16:00 (+1d) | 2019-02-28 16:00 → 2019-03-04 11:00 (+4d) |  |  |  |  |

| ID | Task | Start | Finish | Duration | Total float | Predecessors | Other |
| --- | --- | --- | --- | --- | --- | --- | --- |
| 144 | **Diseño de pruebas de aceptación** | 2019-02-19 11:00 → 2019-02-20 16:00 (+1d) | 2019-02-22 11:00 → 2019-02-25 16:00 (+3d) |  |  |  |  |
| 145 | **Diseño de pruebas para los gerentes del local** | 2019-02-19 11:00 → 2019-02-20 16:00 (+1d) | 2019-02-20 16:00 → 2019-02-22 11:00 (+2d) |  |  |  |  |
| 146 | Redactar informe de los minimos que deben cubrir las pruebas | 2019-02-19 11:00 → 2019-02-20 16:00 (+1d) | 2019-02-19 16:00 → 2019-02-21 11:00 (+2d) |  | 450d → 300d |  | resources Programador Junior1; Programador Junior2 → Analista-Diseñador |
| 147 | Diseñar las pruebas basandose en los informes | 2019-02-19 16:00 → 2019-02-21 11:00 (+2d) | 2019-02-20 16:00 → 2019-02-22 11:00 (+2d) |  | 450d → 300d |  | resources Programador Junior1; Programador Junior2 → Analista-Diseñador |
| 148 | **Diseño de pruebas sobre el personal del local** | 2019-02-19 11:00 → 2019-02-20 16:00 (+1d) | 2019-02-20 16:00 → 2019-02-22 11:00 (+2d) |  |  |  |  |
| 149 | Redactar informe de los minimos que deben cubrir las pruebas |  |  |  | 300d → none |  | resources Analista-Diseñador → Analista-Programador |
| 150 | Diseñar las pruebas basandose en los informes |  |  |  | 300d → none |  | resources Analista-Diseñador → Analista-Programador |
| 151 | **Diseño de pruebas sobre los usuarios del local** | 2019-02-19 11:00 → 2019-02-20 16:00 (+1d) | 2019-02-20 16:00 → 2019-02-22 11:00 (+2d) |  |  |  |  |
| 152 | Redactar informe de los minimos que deben cubrir las pruebas | 2019-02-19 11:00 → 2019-02-20 16:00 (+1d) | 2019-02-19 16:00 → 2019-02-21 11:00 (+2d) |  | 300d → 450d |  | resources Analista-Diseñador → Programador Junior1; Programador Junior2 |
| 153 | Diseñar las pruebas basandose en los informes | 2019-02-19 16:00 → 2019-02-21 11:00 (+2d) | 2019-02-20 16:00 → 2019-02-22 11:00 (+2d) |  | 300d → 450d |  | resources Analista-Diseñador → Programador Junior1; Programador Junior2 |
| 154 | **Diseño de pruebas para los proveedores** | 2019-02-20 16:00 → 2019-02-22 11:00 (+2d) | 2019-02-22 11:00 → 2019-02-25 16:00 (+3d) |  |  |  |  |
| 155 | Redactar informe de los minimos que deben cubrir las pruebas | 2019-02-19 11:00 → 2019-02-22 11:00 (+3d) | 2019-02-19 16:00 → 2019-02-22 16:00 (+3d) |  | none → 300d |  | resources Analista-Programador → Analista-Diseñador |
| 156 | Diseñar las pruebas basandose en los informes | 2019-02-19 16:00 → 2019-02-22 16:00 (+3d) | 2019-02-20 16:00 → 2019-02-25 16:00 (+5d) |  | none → 300d |  | resources Analista-Programador → Analista-Diseñador |
| 157 | **Diseño de pruebas del sistema** | 2019-02-20 16:00 → 2019-02-22 11:00 (+2d) | 2019-02-25 16:00 → 2019-02-27 11:00 (+2d) |  |  |  |  |
| 158 | **Diseño de pruebas para comunicación con PayPal** | 2019-02-20 16:00 → 2019-02-22 11:00 (+2d) | 2019-02-22 11:00 → 2019-02-25 16:00 (+3d) |  |  |  |  |
| 159 | Redactar informe de los minimos que deben cubrir las pruebas | 2019-02-20 16:00 → 2019-02-22 11:00 (+2d) | 2019-02-21 11:00 → 2019-02-22 16:00 (+1d) |  | 450d → none |  | resources Programador Junior1; Programador Junior2 → Analista-Programador |
| 160 | Diseñar las pruebas basandose en los informes | 2019-02-21 11:00 → 2019-02-22 16:00 (+1d) | 2019-02-22 11:00 → 2019-02-25 16:00 (+3d) |  | 450d → none |  | resources Programador Junior1; Programador Junior2 → Analista-Programador |
| 161 | **Diseño de pruebas para comunicación con terminales TPV** | 2019-02-20 16:00 → 2019-02-22 11:00 (+2d) | 2019-02-22 11:00 → 2019-02-25 16:00 (+3d) |  |  |  |  |
| 162 | Redactar informe de los minimos que deben cubrir las pruebas |  |  |  | 300d → 450d |  | resources Analista-Diseñador → Programador Junior1; Programador Junior2 |
| 163 | Diseñar las pruebas basandose en los informes |  |  |  | 300d → 450d |  | resources Analista-Diseñador → Programador Junior1; Programador Junior2 |
| 164 | **Diseño de pruebas para comunicación con tablets del local** | 2019-02-22 11:00 → 2019-02-25 16:00 (+3d) | 2019-02-25 16:00 → 2019-02-27 11:00 (+2d) |  |  |  |  |
| 165 | Redactar informe de los minimos que deben cubrir las pruebas | 2019-02-20 16:00 → 2019-02-25 16:00 (+5d) | 2019-02-21 11:00 → 2019-02-26 11:00 (+5d) |  | none → 300d |  | resources Analista-Programador → Analista-Diseñador |
| 166 | Diseñar las pruebas basandose en los informes | 2019-02-21 11:00 → 2019-02-26 11:00 (+5d) | 2019-02-22 11:00 → 2019-02-27 11:00 (+5d) |  | none → 300d |  | resources Analista-Programador → Analista-Diseñador |
| 167 | **Diseño de pruebas de integración** | 2019-02-22 11:00 → 2019-02-25 16:00 (+3d) | 2019-02-25 16:00 → 2019-02-27 11:00 (+2d) |  |  |  |  |
| 168 | **Diseño de pruebas para comunicación entre módulos** | 2019-02-22 11:00 → 2019-02-25 16:00 (+3d) | 2019-02-25 16:00 → 2019-02-27 11:00 (+2d) |  |  |  |  |
| 169 | Redactar informe de los minimos que deben cubrir las pruebas | 2019-02-22 11:00 → 2019-02-25 16:00 (+3d) | 2019-02-22 16:00 → 2019-02-26 11:00 (+4d) |  |  |  |  |
| 170 | Diseñar las pruebas basandose en los informes | 2019-02-22 16:00 → 2019-02-26 11:00 (+4d) | 2019-02-25 16:00 → 2019-02-27 11:00 (+2d) |  |  |  |  |
| 171 | **Diseño de pruebas de unidad** | 2019-02-25 16:00 → 2019-02-27 11:00 (+2d) | 2019-02-28 16:00 → 2019-03-04 11:00 (+4d) |  |  |  |  |
| 172 | **Diseño de pruebas de módulo de monitorización general del sistema** | 2019-02-25 16:00 → 2019-02-27 11:00 (+2d) | 2019-02-27 11:00 → 2019-02-28 16:00 (+1d) |  |  |  |  |
| 173 | Redactar informe de los minimos que deben cubrir las pruebas | 2019-02-25 16:00 → 2019-02-27 11:00 (+2d) | 2019-02-26 11:00 → 2019-02-27 16:00 (+1d) |  |  |  | resources Programador Junior1; Programador Junior2 → Analista-Diseñador |
| 174 | Diseñar las pruebas basandose en los informes | 2019-02-26 11:00 → 2019-02-27 16:00 (+1d) | 2019-02-27 11:00 → 2019-02-28 16:00 (+1d) |  |  |  | resources Programador Junior1; Programador Junior2 → Analista-Diseñador |
| 175 | **Diseño de pruebas de módulo de entretenimiento** | 2019-02-27 11:00 → 2019-02-28 16:00 (+1d) | 2019-02-28 16:00 → 2019-03-04 11:00 (+4d) |  |  |  |  |
| 176 | Redactar informe de los minimos que deben cubrir las pruebas | 2019-02-27 11:00 → 2019-02-28 16:00 (+1d) | 2019-02-27 16:00 → 2019-03-01 11:00 (+2d) |  |  |  | resources Programador Junior1; Programador Junior2 → Analista-Diseñador |
| 177 | Diseñar las pruebas basandose en los informes | 2019-02-27 16:00 → 2019-03-01 11:00 (+2d) | 2019-02-28 16:00 → 2019-03-04 11:00 (+4d) |  |  |  | resources Programador Junior1; Programador Junior2 → Analista-Diseñador |
| 178 | **Diseño de pruebas de módulo para muestra de datos y comandas** | 2019-02-25 16:00 → 2019-02-27 11:00 (+2d) | 2019-02-27 11:00 → 2019-02-28 16:00 (+1d) |  |  |  |  |
| 179 | Redactar informe de los minimos que deben cubrir las pruebas | 2019-02-25 16:00 → 2019-02-27 11:00 (+2d) | 2019-02-26 11:00 → 2019-02-27 16:00 (+1d) |  |  |  | resources Analista-Diseñador → Analista-Programador |
| 180 | Diseñar las pruebas basandose en los informes | 2019-02-26 11:00 → 2019-02-27 16:00 (+1d) | 2019-02-27 11:00 → 2019-02-28 16:00 (+1d) |  |  |  | resources Analista-Diseñador → Analista-Programador |
| 181 | **Diseño de pruebas de módulo de gestión de proveedores** | 2019-02-27 11:00 → 2019-02-28 16:00 (+1d) | 2019-02-28 16:00 → 2019-03-04 11:00 (+4d) |  |  |  |  |
| 182 | Redactar informe de los minimos que deben cubrir las pruebas | 2019-02-27 11:00 → 2019-02-28 16:00 (+1d) | 2019-02-27 16:00 → 2019-03-01 11:00 (+2d) |  |  |  | resources Analista-Diseñador → Analista-Programador |
| 183 | Diseñar las pruebas basandose en los informes | 2019-02-27 16:00 → 2019-03-01 11:00 (+2d) | 2019-02-28 16:00 → 2019-03-04 11:00 (+4d) |  |  |  | resources Analista-Diseñador → Analista-Programador |
| 184 | **Diseño de pruebas de módulo del camarero** | 2019-02-25 16:00 → 2019-02-27 11:00 (+2d) | 2019-02-27 11:00 → 2019-02-28 16:00 (+1d) |  |  |  |  |
| 185 | Redactar informe de los minimos que deben cubrir las pruebas | 2019-02-25 16:00 → 2019-02-27 11:00 (+2d) | 2019-02-26 11:00 → 2019-02-27 16:00 (+1d) |  |  |  | resources Analista-Programador → Programador Junior1; Programador Junior2 |
| 186 | Diseñar las pruebas basandose en los informes | 2019-02-26 11:00 → 2019-02-27 16:00 (+1d) | 2019-02-27 11:00 → 2019-02-28 16:00 (+1d) |  |  |  | resources Analista-Programador → Programador Junior1; Programador Junior2 |
| 187 | **Diseño de pruebas del módulo de cocinas/barra** | 2019-02-27 11:00 → 2019-02-28 16:00 (+1d) | 2019-02-28 16:00 → 2019-03-04 11:00 (+4d) |  |  |  |  |
| 188 | Redactar informe de los minimos que deben cubrir las pruebas | 2019-02-27 11:00 → 2019-02-28 16:00 (+1d) | 2019-02-27 16:00 → 2019-03-01 11:00 (+2d) |  |  |  | resources Analista-Programador → Programador Junior1; Programador Junior2 |
| 189 | Diseñar las pruebas basandose en los informes | 2019-02-27 16:00 → 2019-03-01 11:00 (+2d) | 2019-02-28 16:00 → 2019-03-04 11:00 (+4d) |  |  |  | resources Analista-Programador → Programador Junior1; Programador Junior2 |
| 190 | Informar al jefe del progreso semanal | 2019-02-28 16:00 → 2019-03-04 11:00 (+4d) | 2019-02-28 17:00 → 2019-03-04 13:00 (+4d) |  |  |  |  |
| 191 | **Planificación** | 2019-02-28 16:00 → 2019-03-04 11:00 (+4d) | 2019-03-05 16:00 → 2019-03-07 11:00 (+2d) |  |  |  |  |
| 192 | **Revisión de la planificación** | 2019-02-28 16:00 → 2019-03-04 11:00 (+4d) | 2019-03-05 11:00 → 2019-03-06 16:00 (+1d) |  |  |  |  |
| 193 | Revisar que la planificación se ajuste al tiempo adecuado | 2019-02-28 16:00 → 2019-03-04 11:00 (+4d) | 2019-03-04 11:00 → 2019-03-05 16:00 (+1d) |  |  |  |  |
| 194 | Revisar que la planificación se ajuste adecuadamente a nuestros recursos | 2019-03-04 11:00 → 2019-03-05 16:00 (+1d) | 2019-03-05 11:00 → 2019-03-06 16:00 (+1d) |  |  |  |  |
| 195 | **Validación de la planificación** | 2019-03-05 11:00 → 2019-03-06 16:00 (+1d) | 2019-03-05 16:00 → 2019-03-07 11:00 (+2d) |  |  |  |  |
| 196 | Reunirse con el jefe para validar la planificación revisada, incluye informe semanal | 2019-03-05 11:00 → 2019-03-06 16:00 (+1d) | 2019-03-05 16:00 → 2019-03-07 11:00 (+2d) |  |  |  |  |
| 197 | **Codificación del sistema** | 2019-03-05 16:00 → 2019-03-07 11:00 (+2d) | 2019-04-03 08:30 → 2019-04-05 13:30 (+2d) | 20.19d → 21.19d |  |  |  |
| 199 | Control de riesgos y daños | 2019-03-05 16:00 → 2019-03-07 11:00 (+2d) | 2019-03-06 16:00 → 2019-03-08 11:00 (+2d) |  | 1918.75d → none |  | resources Analista-Diseñador → Director de proyecto [50%] |
| 200 | Formación de empleados | 2019-01-31 13:00 → 2019-03-07 11:00 (+35d) | 2019-02-04 13:00 → 2019-03-08 11:00 (+32d) | 2d → 1d | 5658.33d → none |  |  |
| 201 | **Ambiente de desarrollo** | 2019-03-05 16:00 → 2019-03-08 11:00 (+3d) | 2019-03-14 10:00 → 2019-03-18 15:00 (+4d) |  |  | none → 198 |  |
| 202 | **Instalación del entorno de trabajo** | 2019-03-05 16:00 → 2019-03-08 11:00 (+3d) | 2019-03-07 17:00 → 2019-03-12 13:00 (+5d) |  |  |  |  |
| 203 | **Selección de tecnologías** | 2019-03-05 16:00 → 2019-03-08 11:00 (+3d) | 2019-03-06 11:00 → 2019-03-08 16:00 (+2d) |  |  |  |  |
| 204 | Seleccionar las tecnologías basandose en la fase de análisis | 2019-03-05 16:00 → 2019-03-08 11:00 (+3d) | 2019-03-06 11:00 → 2019-03-08 16:00 (+2d) |  |  |  |  |
| 205 | **Adquisición de tecnologías** | 2019-03-06 11:00 → 2019-03-08 16:00 (+2d) | 2019-03-06 16:00 → 2019-03-11 11:00 (+5d) |  |  |  |  |
| 206 | Realizar la compra de licencias de software de empresa | 2019-03-06 11:00 → 2019-03-08 16:00 (+2d) | 2019-03-06 16:00 → 2019-03-11 11:00 (+5d) |  |  |  |  |
| 207 | Comprar el hardware necesario | 2019-03-06 11:00 → 2019-03-08 16:00 (+2d) | 2019-03-06 16:00 → 2019-03-11 11:00 (+5d) |  |  |  |  |
| 208 | **Instalación en ordenadores locales** | 2019-03-06 16:00 → 2019-03-11 11:00 (+5d) | 2019-03-07 16:00 → 2019-03-12 11:00 (+5d) |  |  |  |  |
| 209 | Instalar el software adquirido en los ordenadores locales | 2019-03-06 16:00 → 2019-03-11 11:00 (+5d) | 2019-03-07 16:00 → 2019-03-12 11:00 (+5d) |  |  |  |  |
| 210 | Informar al jefe del progreso semanal | 2019-03-07 16:00 → 2019-03-12 11:00 (+5d) | 2019-03-07 17:00 → 2019-03-12 13:00 (+5d) |  |  |  |  |
| 211 | **Configuración del entorno de trabajo** | 2019-03-08 08:00 → 2019-03-12 13:00 (+4d) | 2019-03-11 17:00 → 2019-03-14 13:00 (+3d) |  |  |  |  |
| 212 | **Ajuste de propiedades generales** | 2019-03-08 08:00 → 2019-03-12 13:00 (+4d) | 2019-03-11 17:00 → 2019-03-14 13:00 (+3d) |  |  |  |  |
| 213 | Configurar el SO y programas básico de uso general | 2019-03-08 08:00 → 2019-03-12 13:00 (+4d) | 2019-03-11 17:00 → 2019-03-14 13:00 (+3d) |  |  |  |  |
| 214 | **Ajuste de propiedades específicas** | 2019-03-08 08:00 → 2019-03-12 13:00 (+4d) | 2019-03-11 17:00 → 2019-03-14 13:00 (+3d) |  |  |  |  |

| ID | Task | Start | Finish |
| --- | --- | --- | --- |
| 215 | Preparar el software específico en los equipos de personal especializado | 2019-03-08 08:00 → 2019-03-12 13:00 (+4d) | 2019-03-11 17:00 → 2019-03-14 13:00 (+3d) |
| 216 | **Revisiones de eficiencia y velocidad del entorno** | 2019-03-12 08:00 → 2019-03-14 13:00 (+2d) | 2019-03-14 10:00 → 2019-03-18 15:00 (+4d) |
| 217 | **Evaluación de eficiencia y velocidad** | 2019-03-12 08:00 → 2019-03-14 13:00 (+2d) | 2019-03-12 17:00 → 2019-03-15 13:00 (+3d) |
| 218 | Realizar evaluación de eficiencia y velocidad durante la preparación de los ordenadores | 2019-03-12 08:00 → 2019-03-14 13:00 (+2d) | 2019-03-12 17:00 → 2019-03-15 13:00 (+3d) |
| 219 | **Reconfiguración de tecnologías o herramientas** | 2019-03-13 08:00 → 2019-03-15 13:00 (+2d) | 2019-03-13 17:00 → 2019-03-18 13:00 (+5d) |
| 220 | Ajustar las configuraciones iniciales basándose en las evaluaciones | 2019-03-13 08:00 → 2019-03-15 13:00 (+2d) | 2019-03-13 17:00 → 2019-03-18 13:00 (+5d) |
| 221 | **Selección parcial de otras herramientas** | 2019-03-14 08:00 → 2019-03-18 13:00 (+4d) | 2019-03-14 10:00 → 2019-03-18 15:00 (+4d) |
| 222 | Cubrir problemas encontrados con las herramientas de terceros necesarias | 2019-03-14 08:00 → 2019-03-18 13:00 (+4d) | 2019-03-14 10:00 → 2019-03-18 15:00 (+4d) |
| 223 | **Módulos** | 2019-03-14 10:00 → 2019-03-18 15:00 (+4d) | 2019-03-27 16:00 → 2019-04-01 11:00 (+5d) |
| 224 | Informar al jefe del progreso semanal | 2019-03-14 10:00 → 2019-03-18 15:00 (+4d) | 2019-03-14 11:00 → 2019-03-18 16:00 (+4d) |
| 225 | **Módulo del camarero** | 2019-03-14 10:00 → 2019-03-18 15:00 (+4d) | 2019-03-18 15:00 → 2019-03-21 10:00 (+3d) |
| 226 | **Almacén de datos de camareros** | 2019-03-14 10:00 → 2019-03-18 15:00 (+4d) | 2019-03-18 15:00 → 2019-03-21 10:00 (+3d) |
| 227 | Preparar la BD y funciones para uso de camareros | 2019-03-14 10:00 → 2019-03-18 15:00 (+4d) | 2019-03-18 15:00 → 2019-03-21 10:00 (+3d) |
| 228 | **Función de comunicar llamadas al camarero** | 2019-03-14 10:00 → 2019-03-18 15:00 (+4d) | 2019-03-15 10:00 → 2019-03-19 15:00 (+4d) |
| 229 | Implementar la función de llamadas al camararero mediante la interfaz diseñada | 2019-03-14 10:00 → 2019-03-18 15:00 (+4d) | 2019-03-15 10:00 → 2019-03-19 15:00 (+4d) |
| 230 | **Función de liberar una mesa ocupada** | 2019-03-14 10:00 → 2019-03-18 15:00 (+4d) | 2019-03-15 10:00 → 2019-03-19 15:00 (+4d) |
| 231 | Implementar la función que permite liberar mesas a camareros | 2019-03-14 10:00 → 2019-03-18 15:00 (+4d) | 2019-03-15 10:00 → 2019-03-19 15:00 (+4d) |
| 232 | **Interfaz visual agradable** | 2019-03-14 10:00 → 2019-03-18 15:00 (+4d) | 2019-03-14 15:00 → 2019-03-19 10:00 (+5d) |
| 233 | Programar la interfaz visual | 2019-03-14 10:00 → 2019-03-18 15:00 (+4d) | 2019-03-14 15:00 → 2019-03-19 10:00 (+5d) |
| 234 | **Módulo de gestión de proveedores** | 2019-03-14 10:00 → 2019-03-18 15:00 (+4d) | 2019-03-19 15:00 → 2019-03-22 10:00 (+3d) |
| 235 | **Almacén de stock** | 2019-03-18 15:00 → 2019-03-21 10:00 (+3d) | 2019-03-19 15:00 → 2019-03-22 10:00 (+3d) |
| 236 | Programar el gestor de stock y conectarlo a la BD | 2019-03-18 15:00 → 2019-03-21 10:00 (+3d) | 2019-03-19 15:00 → 2019-03-22 10:00 (+3d) |
| 237 | **Interfaz visual agradable** | 2019-03-14 10:00 → 2019-03-18 15:00 (+4d) | 2019-03-14 15:00 → 2019-03-19 10:00 (+5d) |
| 238 | Programar la interfaz visual | 2019-03-14 10:00 → 2019-03-18 15:00 (+4d) | 2019-03-14 15:00 → 2019-03-19 10:00 (+5d) |
| 239 | **Módulo de cocinas/barra** | 2019-03-14 11:00 → 2019-03-18 16:00 (+4d) | 2019-03-18 14:00 → 2019-03-21 09:00 (+3d) |
| 240 | **Función de cobrar con tarjeta u otros métodos** | 2019-03-14 11:00 → 2019-03-18 16:00 (+4d) | 2019-03-18 11:00 → 2019-03-20 16:00 (+2d) |
| 241 | Programar funciones de cobro | 2019-03-14 11:00 → 2019-03-18 16:00 (+4d) | 2019-03-15 16:00 → 2019-03-20 11:00 (+5d) |
| 242 | Adaptar funciones de cobro a todos los métodos de pago | 2019-03-15 16:00 → 2019-03-20 11:00 (+5d) | 2019-03-18 11:00 → 2019-03-20 16:00 (+2d) |
| 243 | **Función de proteger los datos de las transacciones** | 2019-03-14 11:00 → 2019-03-18 16:00 (+4d) | 2019-03-15 16:00 → 2019-03-20 11:00 (+5d) |
| 244 | Asegurarse de que se guardan apropiadamente los datos | 2019-03-14 11:00 → 2019-03-18 16:00 (+4d) | 2019-03-14 16:00 → 2019-03-19 11:00 (+5d) |
| 245 | Proteger mediante encriptación o restricciones de acceso los datos | 2019-03-14 16:00 → 2019-03-19 11:00 (+5d) | 2019-03-15 16:00 → 2019-03-20 11:00 (+5d) |
| 246 | **Almacén de datos de comandas** | 2019-03-14 11:00 → 2019-03-18 16:00 (+4d) | 2019-03-18 11:00 → 2019-03-20 16:00 (+2d) |
| 247 | Programar el almacen de datos de pedidos | 2019-03-14 11:00 → 2019-03-18 16:00 (+4d) | 2019-03-18 11:00 → 2019-03-20 16:00 (+2d) |
| 248 | **Almacén de datos de mesas** | 2019-03-18 11:00 → 2019-03-20 16:00 (+2d) | 2019-03-18 14:00 → 2019-03-21 09:00 (+3d) |
| 249 | Adaptar el almacén de datos de pedidos a las mesas | 2019-03-18 11:00 → 2019-03-20 16:00 (+2d) | 2019-03-18 14:00 → 2019-03-21 09:00 (+3d) |
| 250 | **Módulo para muestra de datos y comandas** | 2019-03-19 15:00 → 2019-03-22 10:00 (+3d) | 2019-03-22 15:00 → 2019-03-27 10:00 (+5d) |
| 251 | **Función de seleccionar productos y pedidos** | 2019-03-19 15:00 → 2019-03-22 10:00 (+3d) | 2019-03-21 15:00 → 2019-03-26 10:00 (+5d) |
| 252 | Implementar navegación de menú | 2019-03-19 15:00 → 2019-03-22 10:00 (+3d) | 2019-03-21 15:00 → 2019-03-26 10:00 (+5d) |
| 253 | **Función de plasmar información del pedido** | 2019-03-19 15:00 → 2019-03-22 10:00 (+3d) | 2019-03-20 15:00 → 2019-03-25 10:00 (+5d) |
| 254 | Implementar función de información de pedido | 2019-03-19 15:00 → 2019-03-22 10:00 (+3d) | 2019-03-20 15:00 → 2019-03-25 10:00 (+5d) |
| 255 | **Función de enviar la comanda** | 2019-03-19 15:00 → 2019-03-22 10:00 (+3d) | 2019-03-20 15:00 → 2019-03-25 10:00 (+5d) |
| 256 | Imlementar función de envio de comanda | 2019-03-19 15:00 → 2019-03-22 10:00 (+3d) | 2019-03-20 15:00 → 2019-03-25 10:00 (+5d) |
| 257 | **Función de reservar mesa libre** | 2019-03-19 15:00 → 2019-03-22 10:00 (+3d) | 2019-03-20 15:00 → 2019-03-25 10:00 (+5d) |
| 258 | Implementar función de reserva | 2019-03-19 15:00 → 2019-03-22 10:00 (+3d) | 2019-03-20 15:00 → 2019-03-25 10:00 (+5d) |
| 259 | **Función de ver estado de la mesa** | 2019-03-21 15:00 → 2019-03-26 10:00 (+5d) | 2019-03-22 15:00 → 2019-03-27 10:00 (+5d) |
| 260 | Implementar función de estado | 2019-03-21 15:00 → 2019-03-26 10:00 (+5d) | 2019-03-22 15:00 → 2019-03-27 10:00 (+5d) |
| 261 | **Función de informar al cliente** | 2019-03-20 15:00 → 2019-03-25 10:00 (+5d) | 2019-03-22 10:00 → 2019-03-26 15:00 (+4d) |
| 262 | Adaptar función de comunicación para el cliente | 2019-03-20 15:00 → 2019-03-25 10:00 (+5d) | 2019-03-22 10:00 → 2019-03-26 15:00 (+4d) |
| 263 | **Función de códigos QR** | 2019-03-20 15:00 → 2019-03-25 10:00 (+5d) | 2019-03-20 17:00 → 2019-03-25 13:00 (+5d) |
| 264 | Adaptar el lector QR a nuestros programas | 2019-03-20 15:00 → 2019-03-25 10:00 (+5d) | 2019-03-20 17:00 → 2019-03-25 13:00 (+5d) |
| 265 | **Interfaz visual agradable** | 2019-03-19 15:00 → 2019-03-22 10:00 (+3d) | 2019-03-19 17:00 → 2019-03-22 13:00 (+3d) |
| 266 | Programar la interfaz visual | 2019-03-19 15:00 → 2019-03-22 10:00 (+3d) | 2019-03-19 17:00 → 2019-03-22 13:00 (+3d) |
| 267 | Informar al jefe de progreso semanal | 2019-03-22 15:00 → 2019-03-27 10:00 (+5d) | 2019-03-22 16:00 → 2019-03-27 11:00 (+5d) |
| 268 | **Módulo de entretenimiento** | 2019-03-22 16:00 → 2019-03-27 11:00 (+5d) | 2019-03-26 16:00 → 2019-03-29 11:00 (+3d) |
| 269 | **Función de ofrecer entretenimiento al cliente** | 2019-03-22 16:00 → 2019-03-27 11:00 (+5d) | 2019-03-22 17:00 → 2019-03-27 13:00 (+5d) |
| 270 | Asegurar que los programas adecuados están instalados y son accesibles | 2019-03-22 16:00 → 2019-03-27 11:00 (+5d) | 2019-03-22 17:00 → 2019-03-27 13:00 (+5d) |
| 271 | **Función de interactuar con el local** | 2019-03-22 16:00 → 2019-03-27 11:00 (+5d) | 2019-03-26 16:00 → 2019-03-29 11:00 (+3d) |
| 272 | Preparar conexiones visuales de camaras | 2019-03-25 08:00 → 2019-03-27 13:00 (+2d) | 2019-03-25 13:00 → 2019-03-27 17:00 (+2d) |
| 273 | Preparar lista de música | 2019-03-22 16:00 → 2019-03-27 11:00 (+5d) | 2019-03-22 16:30 → 2019-03-27 11:30 (+5d) |
| 274 | Preparar programa de control de interacción | 2019-03-22 16:00 → 2019-03-27 11:00 (+5d) | 2019-03-25 16:00 → 2019-03-28 11:00 (+3d) |
| 275 | Completar programa de control de interacción con los módulos | 2019-03-25 16:00 → 2019-03-28 11:00 (+3d) | 2019-03-26 16:00 → 2019-03-29 11:00 (+3d) |
| 276 | **Interfaz visual agradable** | 2019-03-22 16:00 → 2019-03-27 11:00 (+5d) | 2019-03-25 11:00 → 2019-03-27 16:00 (+2d) |
| 277 | Programar interfaz visual | 2019-03-22 16:00 → 2019-03-27 11:00 (+5d) | 2019-03-25 11:00 → 2019-03-27 16:00 (+2d) |
| 278 | **Módulo de monitorización general y gerencia** | 2019-03-26 16:00 → 2019-03-29 11:00 (+3d) | 2019-03-27 16:00 → 2019-04-01 11:00 (+5d) |
| 279 | **Almacén de datos legales** | 2019-03-26 16:00 → 2019-03-29 11:00 (+3d) | 2019-03-27 16:00 → 2019-04-01 11:00 (+5d) |
| 280 | Preparar BD y gestión de BD | 2019-03-26 16:00 → 2019-03-29 11:00 (+3d) | 2019-03-27 16:00 → 2019-04-01 11:00 (+5d) |
| 281 | Revisar cumplimiento de requerimientos legales de la BD | 2019-03-26 16:00 → 2019-03-29 11:00 (+3d) | 2019-03-27 09:00 → 2019-03-29 14:00 (+2d) |
| 282 | **Almacén de nóminas** | 2019-03-26 16:00 → 2019-03-29 11:00 (+3d) | 2019-03-27 16:00 → 2019-04-01 11:00 (+5d) |
| 283 | Preparar BD y gestión de BD para nóminas | 2019-03-26 16:00 → 2019-03-29 11:00 (+3d) | 2019-03-27 16:00 → 2019-04-01 11:00 (+5d) |
| 284 | Automatizar las nóminas y su almacenamiento de datos | 2019-03-26 16:00 → 2019-03-29 11:00 (+3d) | 2019-03-27 16:00 → 2019-04-01 11:00 (+5d) |

| ID | Task | Start | Finish | Duration | Total float | Predecessors | Other |
| --- | --- | --- | --- | --- | --- | --- | --- |
| 285 | **Interfaz visual agrdable** | 2019-03-26 16:00 → 2019-03-29 11:00 (+3d) | 2019-03-27 11:00 → 2019-03-29 16:00 (+2d) |  |  |  |  |
| 286 | Programar la interfaz visual | 2019-03-26 16:00 → 2019-03-29 11:00 (+3d) | 2019-03-27 11:00 → 2019-03-29 16:00 (+2d) |  |  |  |  |
| 287 | **Depuración** | 2019-03-27 16:00 → 2019-04-01 11:00 (+5d) | 2019-04-03 08:30 → 2019-04-05 13:30 (+2d) |  |  |  |  |
| 288 | Informar al jefe del progreso semanal | 2019-03-27 16:00 → 2019-04-01 11:00 (+5d) | 2019-03-27 17:00 → 2019-04-01 13:00 (+5d) |  |  |  |  |
| 289 | **Localización de defectos** | 2019-03-27 16:00 → 2019-04-01 11:00 (+5d) | 2019-03-28 13:30 → 2019-04-02 08:30 (+5d) |  |  |  |  |
| 290 | **Listado de defectos** | 2019-03-27 16:00 → 2019-04-01 11:00 (+5d) | 2019-03-28 11:00 → 2019-04-01 16:00 (+4d) |  |  |  |  |
| 291 | Realizar un listado intensivo de defectos encontrados en la codificación | 2019-03-27 16:00 → 2019-04-01 11:00 (+5d) | 2019-03-28 11:00 → 2019-04-01 16:00 (+4d) |  |  |  |  |
| 292 | **Ubicación de defectos** | 2019-03-28 11:00 → 2019-04-01 16:00 (+4d) | 2019-03-28 13:30 → 2019-04-02 08:30 (+5d) |  |  |  |  |
| 293 | Completar listado con posiciones exactas (linea, programa, módulo, etc) de los errores | 2019-03-28 11:00 → 2019-04-01 16:00 (+4d) | 2019-03-28 11:30 → 2019-04-01 16:30 (+4d) |  |  |  |  |
| 294 | Incluir en listado posibles relaciones del error con otro módulo o trozo de código | 2019-03-28 11:30 → 2019-04-01 16:30 (+4d) | 2019-03-28 13:30 → 2019-04-02 08:30 (+5d) |  |  |  |  |
| 295 | **Corrección de defectos** | 2019-03-28 13:30 → 2019-04-02 08:30 (+5d) | 2019-04-03 08:30 → 2019-04-05 13:30 (+2d) |  |  |  |  |
| 296 | **Modificaciones necesarias** | 2019-03-28 13:30 → 2019-04-02 08:30 (+5d) | 2019-04-02 08:30 → 2019-04-04 13:30 (+2d) |  |  |  |  |
| 297 | Implementar las modificaciones y arreglos de la codificación | 2019-03-28 13:30 → 2019-04-02 08:30 (+5d) | 2019-04-02 08:30 → 2019-04-04 13:30 (+2d) |  |  |  |  |
| 298 | **Revisión de corrección del defecto** | 2019-04-02 08:30 → 2019-04-04 13:30 (+2d) | 2019-04-03 08:30 → 2019-04-05 13:30 (+2d) |  |  |  |  |
| 299 | Revisar todos los errores del listado para comprobar que han sido arreglados correctamente | 2019-04-02 08:30 → 2019-04-04 13:30 (+2d) | 2019-04-03 08:30 → 2019-04-05 13:30 (+2d) |  |  |  |  |
| 300 | **Pruebas del sistema y sus componentes** | 2019-04-03 08:30 → 2019-04-05 13:30 (+2d) | 2019-04-24 08:40 → 2019-04-29 14:40 (+5d) | 15.02d → 16.15d |  |  |  |
| 301 | Control de riesgos y daños | 2019-04-03 08:30 → 2019-04-05 13:30 (+2d) | 2019-04-04 08:30 → 2019-04-08 13:30 (+4d) |  | 1402.08d → none |  | resources Analista-Diseñador → Director de proyecto [50%] |
| 302 | Informar al jefe del progreso semanal | 2019-04-03 08:30 → 2019-04-08 13:30 (+5d) | 2019-04-03 09:30 → 2019-04-08 14:30 (+5d) |  | 1489.58d → none | none → 301 |  |
| 303 | **Planificación de pruebas** | 2019-04-03 08:30 → 2019-04-08 14:30 (+5d) | 2019-04-05 13:30 → 2019-04-11 09:30 (+6d) |  |  | none → 302 |  |
| 304 | **Pruebas de aceptación** | 2019-04-03 08:30 → 2019-04-08 14:30 (+5d) | 2019-04-03 13:30 → 2019-04-09 09:30 (+6d) |  |  |  |  |
| 305 | **Pruebas para los gerentes de local** | 2019-04-03 08:30 → 2019-04-08 14:30 (+5d) | 2019-04-03 13:30 → 2019-04-09 09:30 (+6d) |  |  |  |  |
| 306 | Planear las pruebas basándose en su diseño | 2019-04-03 08:30 → 2019-04-08 14:30 (+5d) | 2019-04-03 13:30 → 2019-04-09 09:30 (+6d) |  |  |  | resources Programador Senior → Programador Junior1 |
| 307 | **Pruebas sobre el personal de local** | 2019-04-03 08:30 → 2019-04-08 14:30 (+5d) | 2019-04-03 13:30 → 2019-04-09 09:30 (+6d) |  |  |  |  |
| 308 | Planear las pruebas basándose en su diseño | 2019-04-03 08:30 → 2019-04-08 14:30 (+5d) | 2019-04-03 13:30 → 2019-04-09 09:30 (+6d) |  |  |  | resources Analista-Diseñador → Programador Junior2 |
| 309 | **Pruebas sobre los usuarios del local** | 2019-04-03 08:30 → 2019-04-08 14:30 (+5d) | 2019-04-03 13:30 → 2019-04-09 09:30 (+6d) |  |  |  |  |
| 310 | Planear las pruebas basándose en su diseño | 2019-04-03 08:30 → 2019-04-08 14:30 (+5d) | 2019-04-03 13:30 → 2019-04-09 09:30 (+6d) |  |  |  | resources Programador Junior1 → Programador Senior |
| 311 | **Pruebas para los proveedores** | 2019-04-03 08:30 → 2019-04-08 14:30 (+5d) | 2019-04-03 13:30 → 2019-04-09 09:30 (+6d) |  |  |  |  |
| 312 | Planear las pruebas basándose en su diseño | 2019-04-03 08:30 → 2019-04-08 14:30 (+5d) | 2019-04-03 13:30 → 2019-04-09 09:30 (+6d) |  |  |  | resources Programador Junior2 → Analista-Diseñador |
| 313 | **Pruebas del sistema** | 2019-04-03 13:30 → 2019-04-09 09:30 (+6d) | 2019-04-04 08:30 → 2019-04-09 14:30 (+5d) |  |  |  |  |
| 314 | **Pruebas para comunicación con PayPal** | 2019-04-03 13:30 → 2019-04-09 09:30 (+6d) | 2019-04-04 08:30 → 2019-04-09 14:30 (+5d) |  |  |  |  |
| 315 | Planear las pruebas basándose en su diseño | 2019-04-03 13:30 → 2019-04-09 09:30 (+6d) | 2019-04-04 08:30 → 2019-04-09 14:30 (+5d) |  |  |  | resources Programador Junior2 → Programador Junior1 |
| 316 | **Pruebas para comunicación con terminales TPV** | 2019-04-03 13:30 → 2019-04-09 09:30 (+6d) | 2019-04-04 08:30 → 2019-04-09 14:30 (+5d) |  |  |  |  |
| 317 | Planear las pruebas basándose en su diseño | 2019-04-03 13:30 → 2019-04-09 09:30 (+6d) | 2019-04-04 08:30 → 2019-04-09 14:30 (+5d) |  |  |  | resources Programador Senior → Programador Junior2 |
| 318 | **Pruebas para comunicación con tablets de local** | 2019-04-03 13:30 → 2019-04-09 09:30 (+6d) | 2019-04-04 08:30 → 2019-04-09 14:30 (+5d) |  |  |  |  |
| 319 | Planear las pruebas basándose en su diseño | 2019-04-03 13:30 → 2019-04-09 09:30 (+6d) | 2019-04-04 08:30 → 2019-04-09 14:30 (+5d) |  |  |  | resources Programador Junior1 → Programador Senior |
| 320 | **Pruebas de integración** | 2019-04-04 08:30 → 2019-04-09 14:30 (+5d) | 2019-04-04 13:30 → 2019-04-10 09:30 (+6d) |  |  |  |  |
| 321 | **Pruebas para comunicación entre módulos** | 2019-04-04 08:30 → 2019-04-09 14:30 (+5d) | 2019-04-04 13:30 → 2019-04-10 09:30 (+6d) |  |  |  |  |
| 322 | Planear las pruebas basándose en su diseño | 2019-04-04 08:30 → 2019-04-09 14:30 (+5d) | 2019-04-04 13:30 → 2019-04-10 09:30 (+6d) |  |  |  |  |
| 323 | **Pruebas de unidad** | 2019-04-04 13:30 → 2019-04-10 09:30 (+6d) | 2019-04-05 13:30 → 2019-04-11 09:30 (+6d) |  |  |  |  |
| 324 | **Pruebas de módulo de monitorización general del sistema** | 2019-04-04 13:30 → 2019-04-10 09:30 (+6d) | 2019-04-05 08:30 → 2019-04-10 14:30 (+5d) |  |  |  |  |
| 325 | Planear las pruebas basándose en su diseño | 2019-04-05 08:30 → 2019-04-10 09:30 (+5d) | 2019-04-05 13:30 → 2019-04-10 14:30 (+5d) |  |  |  | resources Programador Junior2 → Programador Junior1 |
| 326 | **Pruebas de módulo de entretenimiento** | 2019-04-04 13:30 → 2019-04-10 09:30 (+6d) | 2019-04-05 08:30 → 2019-04-10 14:30 (+5d) |  |  |  |  |
| 327 | Planear las pruebas basándose en su diseño | 2019-04-05 08:30 → 2019-04-10 09:30 (+5d) | 2019-04-05 13:30 → 2019-04-10 14:30 (+5d) |  |  |  | resources Programador Senior → Programador Junior2 |
| 328 | **Pruebas de módulo para muestra de datos y comandas** | 2019-04-04 13:30 → 2019-04-10 09:30 (+6d) | 2019-04-05 08:30 → 2019-04-10 14:30 (+5d) |  |  |  |  |
| 329 | Planear las pruebas basándose en su diseño | 2019-04-04 13:30 → 2019-04-10 09:30 (+6d) | 2019-04-05 08:30 → 2019-04-10 14:30 (+5d) |  |  |  | resources Programador Junior1 → Programador Senior |
| 330 | **Pruebas de módulo de gestión de proveedores** | 2019-04-05 08:30 → 2019-04-10 14:30 (+5d) | 2019-04-05 13:30 → 2019-04-11 09:30 (+6d) |  |  |  |  |
| 331 | Planear las pruebas basándose en su diseño | 2019-04-04 13:30 → 2019-04-10 14:30 (+6d) | 2019-04-05 08:30 → 2019-04-11 09:30 (+6d) |  |  |  | resources Programador Junior2 → Programador Junior1 |
| 332 | **Pruebas de módulo del camarero** | 2019-04-05 08:30 → 2019-04-10 14:30 (+5d) | 2019-04-05 13:30 → 2019-04-11 09:30 (+6d) |  |  |  |  |
| 333 | Planear las pruebas basándose en su diseño | 2019-04-04 13:30 → 2019-04-10 14:30 (+6d) | 2019-04-05 08:30 → 2019-04-11 09:30 (+6d) |  |  |  | resources Programador Senior → Programador Junior2 |
| 334 | **Pruebas del módulo de cocinas/barra** | 2019-04-05 08:30 → 2019-04-10 14:30 (+5d) | 2019-04-05 13:30 → 2019-04-11 09:30 (+6d) |  |  |  |  |
| 335 | Planear las pruebas basándose en su diseño | 2019-04-05 08:30 → 2019-04-10 14:30 (+5d) | 2019-04-05 13:30 → 2019-04-11 09:30 (+6d) |  |  |  | resources Programador Junior1 → Programador Senior |
| 336 | **Ejecución de pruebas** | 2019-04-05 13:30 → 2019-04-11 09:30 (+6d) | 2019-04-19 13:30 → 2019-04-25 09:30 (+6d) |  |  |  |  |
| 337 | **Ejecución de casos de prueba** | 2019-04-05 13:30 → 2019-04-11 09:30 (+6d) | 2019-04-10 13:30 → 2019-04-16 09:30 (+6d) |  |  |  |  |
| 338 | **Ejecución de conjunto de casos de unidad** | 2019-04-05 13:30 → 2019-04-11 09:30 (+6d) | 2019-04-09 13:30 → 2019-04-15 09:30 (+6d) |  |  |  |  |
| 339 | Dividir los equipos para ejecutar las pruebas de cada unidad | 2019-04-05 13:30 → 2019-04-11 09:30 (+6d) | 2019-04-08 08:30 → 2019-04-11 14:30 (+3d) |  |  |  |  |
| 340 | Ejecutar las pruebas de cada módulo individual | 2019-04-05 13:30 → 2019-04-11 09:30 (+6d) | 2019-04-09 13:30 → 2019-04-15 09:30 (+6d) |  |  |  |  |
| 341 | **Ejecución de conjunto de casos de integración** | 2019-04-05 13:30 → 2019-04-11 09:30 (+6d) | 2019-04-10 08:30 → 2019-04-15 14:30 (+5d) |  |  |  |  |
| 342 | Ejecutar las pruebas para comprobar que la integración de módulos no tiene fallos | 2019-04-05 13:30 → 2019-04-11 09:30 (+6d) | 2019-04-10 08:30 → 2019-04-15 14:30 (+5d) |  |  |  |  |
| 343 | **Ejecución de conjunto de casos de sistema** | 2019-04-05 13:30 → 2019-04-11 09:30 (+6d) | 2019-04-10 08:30 → 2019-04-15 14:30 (+5d) |  |  |  |  |
| 344 | Ejecutar las pruebas de sistema | 2019-04-05 13:30 → 2019-04-11 09:30 (+6d) | 2019-04-10 08:30 → 2019-04-15 14:30 (+5d) |  |  |  |  |
| 345 | Informar al jefe del progreso semanal | 2019-04-05 13:30 → 2019-04-11 09:30 (+6d) | 2019-04-05 14:30 → 2019-04-11 10:30 (+6d) |  |  |  |  |
| 346 | **Ejecución de conjunto de casos de validación** | 2019-04-08 08:30 → 2019-04-11 14:30 (+3d) | 2019-04-10 13:30 → 2019-04-16 09:30 (+6d) |  |  |  |  |
| 347 | Ejecutar las pruebas de validación del programa | 2019-04-08 08:30 → 2019-04-11 14:30 (+3d) | 2019-04-10 13:30 → 2019-04-16 09:30 (+6d) |  |  |  |  |
| 348 | **Listado de errores** | 2019-04-10 13:30 → 2019-04-16 09:30 (+6d) | 2019-04-15 08:30 → 2019-04-18 14:30 (+3d) |  |  |  |  |
| 349 | **Enumeración de errores graves** | 2019-04-10 13:30 → 2019-04-16 09:30 (+6d) | 2019-04-12 13:30 → 2019-04-18 09:30 (+6d) |  |  |  |  |
| 350 | Crear un listado con los errores que se consideran más graves | 2019-04-10 13:30 → 2019-04-16 09:30 (+6d) | 2019-04-11 08:30 → 2019-04-16 14:30 (+5d) |  |  |  |  |
| 351 | Analizar cuales de los errores son tan graves como se estima y cuales pueden desestimarse | 2019-04-11 08:30 → 2019-04-16 14:30 (+5d) | 2019-04-12 13:30 → 2019-04-18 09:30 (+6d) |  |  |  |  |
| 352 | **Desestimación de errores leves o de otro tipo** | 2019-04-12 13:30 → 2019-04-18 09:30 (+6d) | 2019-04-15 08:30 → 2019-04-18 14:30 (+3d) |  |  |  |  |
| 353 | Analizar los errores leves para observar que alguna combinación de estos no cause problemas graves | 2019-04-12 13:30 → 2019-04-18 09:30 (+6d) | 2019-04-15 08:30 → 2019-04-18 14:30 (+3d) |  |  |  |  |
| 354 | Informar al jefe del progreso semanal | 2019-04-10 13:30 → 2019-04-16 09:30 (+6d) | 2019-04-10 14:30 → 2019-04-16 10:30 (+6d) |  |  |  |  |

| ID | Task | Start | Finish |
| --- | --- | --- | --- |
| 355 | **Corrección de errores** | 2019-04-15 08:30 → 2019-04-18 14:30 (+3d) | 2019-04-17 13:30 → 2019-04-23 09:30 (+6d) |
| 356 | **Depuración de errores** | 2019-04-15 08:30 → 2019-04-18 14:30 (+3d) | 2019-04-17 08:30 → 2019-04-22 14:30 (+5d) |
| 357 | Arreglar todos los errores graves | 2019-04-15 08:30 → 2019-04-18 14:30 (+3d) | 2019-04-17 08:30 → 2019-04-22 14:30 (+5d) |
| 358 | Arreglar los errores leves que causen errores graves como conjunto | 2019-04-15 08:30 → 2019-04-18 14:30 (+3d) | 2019-04-17 08:30 → 2019-04-22 14:30 (+5d) |
| 359 | **Verificación de corrección** | 2019-04-17 08:30 → 2019-04-22 14:30 (+5d) | 2019-04-17 13:30 → 2019-04-23 09:30 (+6d) |
| 360 | Comprobar que las correcciones han sido realizadas sin causar mas errores | 2019-04-17 08:30 → 2019-04-22 14:30 (+5d) | 2019-04-17 13:30 → 2019-04-23 09:30 (+6d) |
| 361 | **Verificación de terminación** | 2019-04-17 13:30 → 2019-04-23 09:30 (+6d) | 2019-04-19 13:30 → 2019-04-25 09:30 (+6d) |
| 362 | **Revisión de listado de errores** | 2019-04-17 13:30 → 2019-04-23 09:30 (+6d) | 2019-04-19 08:30 → 2019-04-24 14:30 (+5d) |
| 363 | Revisar el listado de errores e informe de correcciones | 2019-04-17 13:30 → 2019-04-23 09:30 (+6d) | 2019-04-19 08:30 → 2019-04-24 14:30 (+5d) |
| 364 | **Aprobación formal de finalización** | 2019-04-19 08:30 → 2019-04-24 14:30 (+5d) | 2019-04-19 13:30 → 2019-04-25 09:30 (+6d) |
| 365 | Reunirse con el encargado para formalizar la validación e informar del progreso semanal | 2019-04-19 08:30 → 2019-04-24 14:30 (+5d) | 2019-04-19 13:30 → 2019-04-25 09:30 (+6d) |
| 366 | **Análisis de errores y evaluación** | 2019-04-19 13:30 → 2019-04-25 09:30 (+6d) | 2019-04-24 08:40 → 2019-04-29 14:40 (+5d) |
| 367 | **Creación de documento de errores** | 2019-04-19 13:30 → 2019-04-25 09:30 (+6d) | 2019-04-22 13:30 → 2019-04-26 09:30 (+4d) |
| 368 | Redactar documento de errores | 2019-04-19 13:30 → 2019-04-25 09:30 (+6d) | 2019-04-22 13:30 → 2019-04-26 09:30 (+4d) |
| 369 | **Catalogación de errores** | 2019-04-19 13:30 → 2019-04-25 09:30 (+6d) | 2019-04-22 13:30 → 2019-04-26 09:30 (+4d) |
| 370 | Catalogar errores basandose en el análisis realizado en la ejecución de pruebas | 2019-04-19 13:30 → 2019-04-25 09:30 (+6d) | 2019-04-22 13:30 → 2019-04-26 09:30 (+4d) |
| 371 | **Realización de análisis estadísticos** | 2019-04-22 13:30 → 2019-04-26 09:30 (+4d) | 2019-04-24 08:30 → 2019-04-29 14:30 (+5d) |
| 372 | Realizar análisis estadístico de errores | 2019-04-22 13:30 → 2019-04-26 09:30 (+4d) | 2019-04-23 13:30 → 2019-04-29 09:30 (+6d) |
| 373 | Redactar informe estadístico | 2019-04-23 13:30 → 2019-04-29 09:30 (+6d) | 2019-04-24 08:30 → 2019-04-29 14:30 (+5d) |
| 374 | **Adición al archivo de proyectos de la empresa** | 2019-04-24 08:30 → 2019-04-29 14:30 (+5d) | 2019-04-24 08:40 → 2019-04-29 14:40 (+5d) |
| 375 | Añadir los documentos creados al archivo de la empresa | 2019-04-24 08:30 → 2019-04-29 14:30 (+5d) | 2019-04-24 08:40 → 2019-04-29 14:40 (+5d) |
