# WBSTool Project

How a schedule from ProjectLibre changed from version to version. A marks actual dates.

## Version 1 (saved 2018-12-14)

Note of the change: commit roy comunicaciones

| ID | WBS | Task | Duration | Start | Finish | Predecessors | Total float | Constraint |
| --- | --- | --- | --- | --- | --- | --- | --- | --- |
| 1 | 1 | **Proyecto de sistema para bar tecnológico** | 85.88d? | 2019-01-01 09:00 | 2019-04-30 17:00 |  |  | start no earlier than 2019-01-01 08:00 |
| 2 | 1.1 | **Tareas de comunicación** | 85.06d | 2019-01-01 09:00 | 2019-04-30 09:29 |  | 81.3d |  |
| 3 | 1.1.1 | **Reuniones equipo** | 85.06d | 2019-01-01 09:00 | 2019-04-30 09:29 |  | 81.3d |  |
| 4 |  | Reunión equipo 1 | 0.06d | 2019-01-01 09:00 | 2019-01-01 09:30 |  | 125.42d |  |
| 5 |  | Reunión equipo 2 | 0.06d | 2019-01-08 09:00 | 2019-01-08 09:29 |  | 8081.3d | start no earlier than 2019-01-08 09:00 |
| 6 |  | Reunión equipo 3 | 0.06d | 2019-01-15 09:00 | 2019-01-15 09:29 |  | 7581.3d | start no earlier than 2019-01-15 09:00 |
| 7 |  | Reunión equipo 4 | 0.06d | 2019-01-22 09:00 | 2019-01-22 09:29 |  | 7081.3d | start no earlier than 2019-01-22 09:00 |
| 8 |  | Reunión equipo 5 | 0.06d | 2019-01-29 09:00 | 2019-01-29 09:29 |  | 6581.3d | start no earlier than 2019-01-29 09:00 |
| 9 |  | Reunión equipo 6 | 0.06d | 2019-02-05 09:00 | 2019-02-05 09:29 |  | 6081.3d | start no earlier than 2019-02-05 09:00 |
| 10 |  | Reunión equipo 7 | 0.06d | 2019-02-12 09:00 | 2019-02-12 09:29 |  | 5581.3d | start no earlier than 2019-02-12 09:00 |
| 11 |  | Reunión equipo 8 | 0.06d | 2019-02-19 09:00 | 2019-02-19 09:29 |  | 5081.3d | start no earlier than 2019-02-19 09:00 |
| 12 |  | Reunión equipo 9 | 0.06d | 2019-02-26 09:00 | 2019-02-26 09:29 |  | 4581.3d | start no earlier than 2019-02-26 09:00 |
| 13 |  | Reunión equipo 10 | 0.06d | 2019-03-05 09:00 | 2019-03-05 09:29 |  | 4081.3d | start no earlier than 2019-03-05 09:00 |
| 14 |  | Reunión equipo 11 | 0.06d | 2019-03-12 09:00 | 2019-03-12 09:29 |  | 3581.3d | start no earlier than 2019-03-12 09:00 |
| 15 |  | Reunion equipo 12 | 0.06d | 2019-03-19 09:00 | 2019-03-19 09:29 |  | 3081.3d | start no earlier than 2019-03-19 09:00 |
| 16 |  | Reunión equipo 13 | 0.06d | 2019-03-26 09:00 | 2019-03-26 09:29 |  | 2581.3d | start no earlier than 2019-03-26 09:00 |
| 17 |  | Reunión equipo 14 | 0.06d | 2019-04-02 09:00 | 2019-04-02 09:29 |  | 2081.3d | start no earlier than 2019-04-02 09:00 |
| 18 |  | Reunión equipo 15 | 0.06d | 2019-04-09 09:00 | 2019-04-09 09:29 |  | 1581.3d | start no earlier than 2019-04-09 09:00 |
| 19 |  | Reunión equipo 16 | 0.06d | 2019-04-16 09:00 | 2019-04-16 09:29 |  | 1081.3d | start no earlier than 2019-04-16 09:00 |
| 20 |  | Reunión de equipo 17 | 0.06d | 2019-04-23 09:00 | 2019-04-23 09:29 |  | 581.3d | start no earlier than 2019-04-23 09:00 |
| 21 |  | Reunión de equipo 18 | 0.06d | 2019-04-30 09:00 | 2019-04-30 09:29 |  | 81.3d | start no earlier than 2019-04-30 09:00 |
| 22 | 1.1.2 | **Reuniones clientes** | 64.06d | 2019-01-30 09:00 | 2019-04-30 09:29 |  | 81.3d |  |
| 23 |  | Reunión cliente 1 | 0.06d | 2019-01-30 09:00 | 2019-01-30 09:29 |  | 6481.3d | start no earlier than 2019-01-30 09:00 |
| 24 |  | Reunión cliente 2 | 0.06d | 2019-02-28 09:00 | 2019-02-28 09:29 |  | 4381.3d | start no earlier than 2019-02-28 09:00 |
| 25 |  | Reunión cliente 3 | 0.06d | 2019-03-30 09:00 | 2019-04-01 08:29 |  | 2193.8d | start no earlier than 2019-03-30 09:00 |
| 26 |  | Reunión cliente 4 | 0.06d | 2019-04-30 09:00 | 2019-04-30 09:29 |  | 81.3d | start no earlier than 2019-04-30 09:00 |
| 27 | 1.2 | **Tareas de gestión de Costes** | 75.88d? | 2019-01-15 09:00 | 2019-04-30 17:00 |  |  |  |
| 28 |  | Control de costes 1 | 0.88d? | 2019-01-15 09:00 | 2019-01-15 17:00 |  | 7500d | start no earlier than 2019-01-15 09:00 |
| 29 |  | Control de costes 2 | 0.88d? | 2019-01-30 09:00 | 2019-01-30 17:00 |  | 6400d | start no earlier than 2019-01-30 09:00 |
| 30 |  | Control de costes 3 | 0.88d? | 2019-02-15 09:00 | 2019-02-15 17:00 |  | 5200d | start no earlier than 2019-02-15 09:00 |
| 31 |  | Control de costes 4 | 0.88d | 2019-03-02 09:00 | 2019-03-04 16:00 |  | 4112.5d | start no earlier than 2019-03-02 09:00 |
| 32 |  | Control de costes 5 | 0.88d | 2019-03-16 09:00 | 2019-03-18 16:00 |  | 3112.5d | start no earlier than 2019-03-16 09:00 |
| 33 |  | Control de costes 6 | 0.88d | 2019-03-30 09:00 | 2019-04-01 16:00 |  | 2112.5d | start no earlier than 2019-03-30 09:00 |
| 34 |  | Control de costes 7 | 0.88d? | 2019-04-15 09:00 | 2019-04-15 17:00 |  | 1100d | start no earlier than 2019-04-15 09:00 |
| 35 |  | Control de costes 8 | 0.88d? | 2019-04-30 09:00 | 2019-04-30 17:00 |  |  | start no earlier than 2019-04-30 09:00 |
| 36 |  | Informe de costes 1 | 0.88d? | 2019-01-15 09:00 | 2019-01-15 17:00 |  | 7500d | start no earlier than 2019-01-15 09:00 |
| 37 |  | Informe de costes 2 | 0.88d? | 2019-01-30 09:00 | 2019-01-30 17:00 |  | 6400d | start no earlier than 2019-01-30 09:00 |
| 38 |  | Informe de costes 3 | 0.88d? | 2019-02-15 09:00 | 2019-02-15 17:00 |  | 5200d | start no earlier than 2019-02-15 09:00 |
| 39 |  | Informe de costes 4 | 0.88d | 2019-03-02 09:00 | 2019-03-04 16:00 |  | 4112.5d | start no earlier than 2019-03-02 09:00 |
| 40 |  | Informe de costes 5 | 0.88d? | 2019-03-15 09:00 | 2019-03-15 17:00 |  | 3200d | start no earlier than 2019-03-15 09:00 |
| 41 |  | Informe de costes 6 | 0.88d | 2019-03-30 09:00 | 2019-04-01 16:00 |  | 2112.5d | start no earlier than 2019-03-30 09:00 |
| 42 |  | Informe de costes 7 | 0.88d? | 2019-04-15 09:00 | 2019-04-15 17:00 |  | 1100d | start no earlier than 2019-04-15 09:00 |
| 43 |  | Informe de costes 8 | 0.88d? | 2019-04-30 09:00 | 2019-04-30 17:00 |  |  | start no earlier than 2019-04-30 09:00 |
| 44 | 1.3 | **Respuestas iniciales a riesgos** | 1.75d | 2019-01-01 09:30 | 2019-01-02 16:30 |  | 125.42d |  |
| 45 |  | Crear Plan de incentivos | 1d | 2019-01-01 09:30 | 2019-01-02 09:30 | 4 | 125.42d | start no earlier than 2019-01-01 09:00 |
| 46 |  | Plan de comportamiento | 0.5d | 2019-01-02 09:30 | 2019-01-02 14:30 | 45 | 125.42d |  |
| 47 |  | Crear plan de errores y problemas | 0.25d | 2019-01-02 14:30 | 2019-01-02 16:30 | 46 | 125.42d |  |
| 48 | 1.4 | **Control de Comunicación** | 1d? | 2019-01-01 09:00 | 2019-01-02 09:00 |  | 8487.5d |  |
| 49 |  | Reuniones de resolución | 1d? | 2019-01-01 09:00 | 2019-01-02 09:00 |  | 8487.5d |  |
| 50 |  | Realización de informes | 1d? | 2019-01-01 09:00 | 2019-01-02 09:00 |  | 8487.5d |  |
| 51 | 1.1 | **Análisis de requisitos del sistema** | 17.85d | 2019-01-02 16:30 | 2019-01-28 15:18 | 44 | 125.42d |  |
| 52 | 1.1.1 | **Identificación de las necesidades del cliente** | 4.1d | 2019-01-02 16:30 | 2019-01-09 08:18 |  | 125.42d |  |
| 53 | 1.1.1.1 | **Especificación informal del sistema** | 4.1d | 2019-01-02 16:30 | 2019-01-09 08:18 |  | 125.42d |  |
| 54 | 1.1.1.1.1 | **Técnica de obtención de requisitos** | 3d | 2019-01-02 16:30 | 2019-01-07 16:30 |  | 125.42d |  |
| 55 |  | Preparar preguntas y temáticas para entrevista inicial | 0.5d | 2019-01-02 16:30 | 2019-01-03 11:30 |  | 125.42d |  |
| 56 |  | Entrevistar jefe de proyecto | 0.5d | 2019-01-03 11:30 | 2019-01-03 16:30 | 55 | 125.42d |  |
| 57 |  | Cuestionar futuros empleados para conocer sus necesidades | 1d | 2019-01-03 16:30 | 2019-01-04 16:30 | 56 | 125.42d |  |
| 58 |  | Cuestionar posibles clientes para conocer sus preferencias | 1d | 2019-01-04 16:30 | 2019-01-07 16:30 | 57 | 125.42d |  |
| 59 | 1.1.1.2 | **Determinación informal de aspectos del sistema** | 1.1d | 2019-01-07 16:30 | 2019-01-09 08:18 | 54 | 125.42d |  |
| 60 |  | Determinar necesidades de jefe de proyectos | 0.5d | 2019-01-07 16:30 | 2019-01-08 11:30 |  | 125.42d |  |
| 61 | 1.1.1.2.1 | **Determinación informal de funciones** | 0.6d | 2019-01-08 11:30 | 2019-01-09 08:18 | 60 | 125.42d |  |
| 62 |  | Cuestionar futuros empleados para conocer sus necesidades | 0.1d | 2019-01-08 11:30 | 2019-01-08 13:18 |  | 125.42d |  |
| 63 |  | Cuestionar posibles clientes para conocer sus preferencias | 0.1d | 2019-01-08 16:30 | 2019-01-09 08:18 | 74 | 125.42d | start no earlier than 2019-01-04 11:12 |
| 64 | 1.1.1.2.2 | **Determinación informal de información manejada** | 0.2d | 2019-01-08 11:30 | 2019-01-08 14:06 | 60 | 135.42d |  |
| 65 |  | Cuestionar futuros empleados para conocer sus necesidades | 0.1d | 2019-01-08 13:18 | 2019-01-08 14:06 | 62 | 125.42d |  |
| 66 |  | Cuestionar posibles clientes para conocer sus preferencias | 0.1d | 2019-01-08 11:30 | 2019-01-08 13:18 | 63 | 145.42d |  |
| 67 | 1.1.1.2.3 | **Determinación informal de interfaces del sistema** | 0.2d | 2019-01-08 13:18 | 2019-01-08 14:54 | 60 | 135.42d |  |
| 68 |  | Cuestionar futuros empleados para conocer sus necesidades | 0.1d | 2019-01-08 14:06 | 2019-01-08 14:54 | 65 | 125.42d |  |
| 69 |  | Cuestionar posibles clientes para conocer sus preferencias | 0.1d | 2019-01-08 13:18 | 2019-01-08 14:06 | 66 | 145.42d |  |
| 70 | 1.1.1.2.4 | **Determinación informal de rendimiento del sistema** | 0.2d | 2019-01-08 14:06 | 2019-01-08 15:42 | 60 | 135.42d |  |

| ID | WBS | Task | Duration | Start | Finish | Predecessors | Total float |
| --- | --- | --- | --- | --- | --- | --- | --- |
| 71 |  | Cuestionar futuros empleados para conocer sus necesidades | 0.1d | 2019-01-08 14:54 | 2019-01-08 15:42 | 68 | 125.42d |
| 72 |  | Cuestionar posibles clientes para conocer sus preferencias | 0.1d | 2019-01-08 14:06 | 2019-01-08 14:54 | 69 | 145.42d |
| 73 | 1.1.1.2.5 | **Determinación informal de las restricciones del sistema** | 0.2d | 2019-01-08 14:54 | 2019-01-08 16:30 | 60 | 135.42d |
| 74 |  | Cuestionar futuros empleados para conocer sus necesidades | 0.1d | 2019-01-08 15:42 | 2019-01-08 16:30 | 71 | 125.42d |
| 75 |  | Cuestionar posibles clientes para conocer sus preferencias | 0.1d | 2019-01-08 14:54 | 2019-01-08 15:42 | 72 | 145.42d |
| 76 | 1.1.2 | **Asignación de funciones a cada elemento del sistema** | 5d | 2019-01-09 08:18 | 2019-01-16 08:18 | 52 | 125.42d |
| 77 | 1.1.2.1 | **Alternativas de creación del sistema** | 2.5d | 2019-01-09 08:18 | 2019-01-11 13:18 |  | 125.42d |
| 78 |  | Buscar tecnologías y metodologías alternativas | 2.5d | 2019-01-09 08:18 | 2019-01-11 13:18 |  | 125.42d |
| 79 |  | Informar del progreso de la semana al Jefe de proyecto | 0.12d | 2019-01-11 13:18 | 2019-01-11 14:18 | 77 | 125.42d |
| 80 | 1.1.2.2 | **Validación de las alternativas de creación del sistema** | 2.38d | 2019-01-11 14:18 | 2019-01-16 08:18 | 79 | 125.42d |
| 81 |  | Analizar las alternativas obtenidas | 1d | 2019-01-11 14:18 | 2019-01-14 14:18 |  | 125.42d |
| 82 |  | Comparar las alternativas con la propuesta original | 1d | 2019-01-14 14:18 | 2019-01-15 14:18 | 81 | 125.42d |
| 83 |  | Decidir finalmente que tecnología usar | 0.25d | 2019-01-15 14:18 | 2019-01-15 16:18 | 82 | 125.42d |
| 84 |  | Informar al Jefe del progreso de la semana | 0.12d | 2019-01-15 16:18 | 2019-01-16 08:18 | 83 | 125.42d |
| 85 | 1.1.3 | **Evaluación de la viabilidad del sistema** | 7.62d | 2019-01-16 08:18 | 2019-01-25 14:18 | 76 | 125.42d |
| 86 | 1.1.3.1 | **Estudio de viabilidad económico** | 2.5d | 2019-01-16 08:18 | 2019-01-18 13:18 |  | 125.42d |
| 87 |  | Realizar análisis de costes económicos | 0.62d | 2019-01-16 08:18 | 2019-01-16 14:18 |  | 125.42d |
| 88 |  | Realizar análisis de mercado | 0.62d | 2019-01-16 14:18 | 2019-01-17 10:18 | 87 | 125.42d |
| 89 |  | Realizar estimaciones coste-beneficio y tiempo-beneficio | 0.62d | 2019-01-17 10:18 | 2019-01-17 16:18 | 88 | 125.42d |
| 90 |  | Reunirse con el jefe para decidir su el proyecto se considera viable | 0.62d | 2019-01-17 16:18 | 2019-01-18 13:18 | 89 | 125.42d |
| 91 | 1.1.3.2 | **Estudio de viabilidad técnico** | 1.75d | 2019-01-18 13:18 | 2019-01-22 10:18 | 86 | 125.42d |
| 92 |  | Estudiar las tecnologías disponibles para el proyecto | 0.62d | 2019-01-18 13:18 | 2019-01-21 09:18 |  | 125.42d |
| 93 |  | Analizar recursos y tecnologías a las que tiene acceso la empresa | 0.25d | 2019-01-21 09:18 | 2019-01-21 11:18 | 92 | 125.42d |
| 94 |  | Analizar recursos y tecnologías de terceros que podrían comprarse o contratarse | 0.25d | 2019-01-21 11:18 | 2019-01-21 14:18 | 93 | 125.42d |
| 95 |  | Analizar con la información obtenida si el proyecto es viable | 0.62d | 2019-01-21 14:18 | 2019-01-22 10:18 | 94 | 125.42d |
| 96 |  | Informar al jefe del progreso semanal | 0.12d | 2019-01-22 10:18 | 2019-01-22 11:18 | 91 | 125.42d |
| 97 | 1.1.3.3 | **Estudio de viabilidad legal** | 2d | 2019-01-22 11:18 | 2019-01-24 11:18 | 91, 96 | 125.42d |
| 98 |  | Estudiar las leyes relacionadas con la parte tecnológica del proyecto | 0.5d | 2019-01-22 11:18 | 2019-01-22 16:18 |  | 125.42d |
| 99 |  | Estudiar las leyes relacionadas con al parte de hostelería del proyecto | 0.5d | 2019-01-22 16:18 | 2019-01-23 11:18 | 98 | 125.42d |
| 100 |  | Estudiar las leyes relacionadas con salud e higiene de local | 0.5d | 2019-01-23 11:18 | 2019-01-23 16:18 | 99 | 125.42d |
| 101 |  | Realizar un informe sobre los estudios legales | 0.38d | 2019-01-23 16:18 | 2019-01-24 10:18 | 100 | 125.42d |
| 102 |  | Analizar con la información obtenida si el proyecto es legalmente viable | 0.12d | 2019-01-24 10:18 | 2019-01-24 11:18 | 101 | 125.42d |
| 103 | 1.1.3.4 | **Estudio de viabilidad de plazos** | 1.25d | 2019-01-24 11:18 | 2019-01-25 14:18 | 97 | 125.42d |
| 104 |  | Realizar análisis de costes temporales | 1d | 2019-01-24 11:18 | 2019-01-25 11:18 |  | 125.42d |
| 105 |  | Realizar planificación de distribución de trabajo | 0.25d | 2019-01-24 11:18 | 2019-01-24 14:18 |  | 200.42d |
| 106 |  | Determinar si el proyecto es viable en el tiempo elegido | 0.25d | 2019-01-25 11:18 | 2019-01-25 14:18 | 105, 104 | 125.42d |
| 107 | 1.1.4 | **Obtención de una definición del sistema** | 1.12d | 2019-01-25 14:18 | 2019-01-28 15:18 | 85 | 125.42d |
| 108 | 1.1.4.1 | **Especificación formal del sistema** | 0.4d | 2019-01-25 14:18 | 2019-01-28 08:30 |  | 125.42d |
| 109 | 1.1.4.1.1 | **Diagrama de contexto** | 0.2d | 2019-01-25 14:18 | 2019-01-25 15:54 |  | 125.42d |
| 110 |  | Dibujar el diagrama de contexto | 0.2d | 2019-01-25 14:18 | 2019-01-25 15:54 |  | 125.42d |
| 111 | 1.1.4.1.2 | **Diagrama de sistema** | 0.2d | 2019-01-25 15:54 | 2019-01-28 08:30 | 109 | 125.42d |
| 112 |  | Dibujar el diagrama de sistema | 0.2d | 2019-01-25 15:54 | 2019-01-28 08:30 |  | 125.42d |
| 113 | 1.1.4.2 | **Representación del sistema** | 0.6d | 2019-01-28 08:30 | 2019-01-28 14:18 | 108 | 125.42d |
| 114 | 1.1.4.2.1 | **Diagramas de flujo de datos** | 0.2d | 2019-01-28 08:30 | 2019-01-28 10:06 |  | 125.42d |
| 115 |  | Dibujar el diagrama de sistema | 0.2d | 2019-01-28 08:30 | 2019-01-28 10:06 |  | 125.42d |
| 116 | 1.1.4.2.2 | **Diagramas de flujo de control** | 0.2d | 2019-01-28 10:06 | 2019-01-28 11:42 | 114 | 125.42d |
| 117 |  | Dibujar el diagrama de sistema | 0.2d | 2019-01-28 10:06 | 2019-01-28 11:42 |  | 125.42d |
| 118 | 1.1.4.2.3 | **Diagramas del ámbito de la información** | 0.2d | 2019-01-28 11:42 | 2019-01-28 14:18 | 116 | 125.42d |
| 119 |  | Dibujar el diagrama de sistema | 0.2d | 2019-01-28 11:42 | 2019-01-28 14:18 |  | 125.42d |
| 120 |  | Informar al Jefe del progreso semanal | 0.12d | 2019-01-28 14:18 | 2019-01-28 15:18 | 113 | 125.42d |
| 121 | 1.2 | **Análisis de requisitos del software** | 2.75d | 2019-01-28 15:18 | 2019-01-31 13:18 | 51 | 125.42d |
| 122 | 1.2.1 | **Extracción o determinación de requisitos** | 0.38d | 2019-01-28 15:18 | 2019-01-29 09:18 |  | 125.42d |
| 123 | 1.2.1.1 | **Documentos de reuniones con cliente** | 0.12d | 2019-01-28 15:18 | 2019-01-28 16:18 |  | 125.42d |
| 124 |  | Realizar un acta de reunión para la reunión con el cliente | 0.12d | 2019-01-28 15:18 | 2019-01-28 16:18 |  | 125.42d |
| 125 |  | Realizar un informe sobre las solicitudes e información que se obtuvo del cliente | 0.12d | 2019-01-28 15:18 | 2019-01-28 16:18 |  | 125.42d |
| 126 | 1.2.1.2 | **Especificación informal de requisitos software** | 0.25d | 2019-01-28 16:18 | 2019-01-29 09:18 | 123 | 125.42d |
| 127 |  | Redactar un primer informe de los requisitos del software a partir del informe de reunión con el cliente | 0.25d | 2019-01-28 16:18 | 2019-01-29 09:18 |  | 125.42d |
| 128 | 1.2.2 | **Análisis de requisitos** | 0.75d | 2019-01-29 09:18 | 2019-01-29 16:18 | 122 | 125.42d |
| 129 | 1.2.2.1 | **Validación de especificación informal** | 0.12d | 2019-01-29 09:18 | 2019-01-29 10:18 |  | 125.42d |
| 130 |  | Analizar especificación informal para posibles mejoras | 0.12d | 2019-01-29 09:18 | 2019-01-29 10:18 |  | 125.42d |
| 131 |  | Buscar errores en la especificación informal | 0.12d | 2019-01-29 09:18 | 2019-01-29 10:18 |  | 125.42d |
| 132 | 1.2.2.2 | **Resolución de inconsistencias** | 0.25d | 2019-01-29 10:18 | 2019-01-29 13:18 | 129 | 125.42d |
| 133 |  | Corregir errores en la especificación informal | 0.25d | 2019-01-29 10:18 | 2019-01-29 13:18 |  | 125.42d |
| 134 |  | Encontrar redundancias y discrepancias en la especificación informal | 0.25d | 2019-01-29 10:18 | 2019-01-29 13:18 |  | 125.42d |
| 135 | 1.2.2.3 | **Coordinación de requisitos relacionados** | 0.38d | 2019-01-29 13:18 | 2019-01-29 16:18 | 132 | 125.42d |
| 136 |  | Formar relaciones entre requisitos que tengan puntos comunes | 0.25d | 2019-01-29 13:18 | 2019-01-29 15:18 |  | 125.42d |
| 137 |  | Purgar relaciones redundantes | 0.12d | 2019-01-29 15:18 | 2019-01-29 16:18 | 136 | 125.42d |
| 138 | 1.2.3 | **Especificación de requisitos** | 0.75d | 2019-01-29 16:18 | 2019-01-30 14:18 | 128 | 125.42d |
| 139 | 1.2.3.1 | **Documento de especificación formal de requisitos** | 0.5d | 2019-01-29 16:18 | 2019-01-30 11:18 |  | 125.42d |
| 140 |  | Redactar documento de requisitos formal | 0.5d | 2019-01-29 16:18 | 2019-01-30 11:18 |  | 125.42d |

| ID | WBS | Task | Duration | Start | Finish | Predecessors | Total float |
| --- | --- | --- | --- | --- | --- | --- | --- |
| 141 | 1.2.3.2 | **Revisión de documento de especificación formal** | 0.25d | 2019-01-30 11:18 | 2019-01-30 14:18 | 139 | 125.42d |
| 142 |  | Revisar documento de requisitos formal en busca de errores | 0.12d | 2019-01-30 11:18 | 2019-01-30 13:18 |  | 125.42d |
| 143 |  | Revisar documento de requisitos formal en busca de mejoras de formato y claridad | 0.12d | 2019-01-30 13:18 | 2019-01-30 14:18 | 142 | 125.42d |
| 144 | 1.2.4 | **Validación de requisitos** | 0.75d | 2019-01-30 14:18 | 2019-01-31 11:18 | 138 | 125.42d |
| 145 | 1.2.4.1 | **Reunión con cliente para validación de requisitos** | 0.25d | 2019-01-30 14:18 | 2019-01-30 16:18 |  | 125.42d |
| 146 |  | Redactar acta de reunión con el cliente y validar requisitos | 0.25d | 2019-01-30 14:18 | 2019-01-30 16:18 |  | 125.42d |
| 147 | 1.2.4.2 | **Corrección de especificación formal** | 0.25d | 2019-01-30 16:18 | 2019-01-31 09:18 | 145 | 125.42d |
| 148 |  | Ajustar los requisitos a partir de la validación realizada | 0.25d | 2019-01-30 16:18 | 2019-01-31 09:18 |  | 125.42d |
| 149 | 1.2.4.3 | **Validación de la especificación forma corregidsa** | 0.25d | 2019-01-31 09:18 | 2019-01-31 11:18 | 147 | 125.42d |
| 150 |  | Reunirse con el cliente para realizar la validación final de requisitos | 0.25d | 2019-01-31 09:18 | 2019-01-31 11:18 |  | 125.42d |
| 151 |  | Reunirse con el jefe para informar del progreso de la semana | 0.12d | 2019-01-31 11:18 | 2019-01-31 13:18 | 144 | 125.42d |
| 152 | 1.3 | **Diseño del sistema software** | 24.88d | 2019-01-31 13:18 | 2019-03-07 11:18 | 121 | 125.42d |
| 153 |  | Control de riesgos y daños | 2d | 2019-01-31 13:18 | 2019-02-04 13:18 |  | 2412.92d |
| 154 | 1.3.1 | **Diseño funcional** | 6d | 2019-01-31 13:18 | 2019-02-08 13:18 |  | 125.42d |
| 155 | 1.3.1.1 | **Diseño módulo del camarero** | 1d | 2019-01-31 13:18 | 2019-02-01 13:18 |  | 125.42d |
| 156 |  | Realizar diseño del módulo | 1d | 2019-01-31 13:18 | 2019-02-01 13:18 |  | 125.42d |
| 157 | 1.3.1.2 | **Diseño módulo de gestión de proveedores** | 1d | 2019-02-01 13:18 | 2019-02-04 13:18 | 155 | 125.42d |
| 158 |  | Realizar diseño del módulo | 1d | 2019-02-01 13:18 | 2019-02-04 13:18 |  | 125.42d |
| 159 | 1.3.1.3 | **Diseño módulo de cocinas/barras** | 1d | 2019-02-04 13:18 | 2019-02-05 13:18 | 157 | 125.42d |
| 160 |  | Realizar diseño del módulo | 1d | 2019-02-04 13:18 | 2019-02-05 13:18 |  | 125.42d |
| 161 | 1.3.1.4 | **Diseño módulo para muestra de datos y comandas** | 1d | 2019-02-05 13:18 | 2019-02-06 13:18 | 159 | 125.42d |
| 162 |  | Realizar diseño del módulo | 1d | 2019-02-05 13:18 | 2019-02-06 13:18 |  | 125.42d |
| 163 | 1.3.1.5 | **Diseño módulo de entretenimiento** | 1d | 2019-02-06 13:18 | 2019-02-07 13:18 | 161 | 125.42d |
| 164 |  | Realizar diseño del módulo | 1d | 2019-02-06 13:18 | 2019-02-07 13:18 |  | 125.42d |
| 165 | 1.3.1.6 | **Diseño módulo de monitorización general del sistema** | 1d | 2019-02-07 13:18 | 2019-02-08 13:18 | 163 | 125.42d |
| 166 |  | Realizar diseño del módulo | 1d | 2019-02-07 13:18 | 2019-02-08 13:18 |  | 125.42d |
| 167 |  | Informar al jefe del progreso semanal | 0.12d | 2019-02-08 13:18 | 2019-02-08 14:18 | 154 | 2000.42d |
| 168 | 1.3.2 | **Diseño técnico** | 8.38d | 2019-02-08 13:18 | 2019-02-20 16:18 | 154 | 125.42d |
| 169 | 1.3.2.1 | **Selección de tecnologías** | 4.25d | 2019-02-08 13:18 | 2019-02-14 15:18 |  | 125.42d |
| 170 | 1.3.2.1.1 | **Base de datos a usar** | 1.5d | 2019-02-08 13:18 | 2019-02-12 08:18 |  | 125.42d |
| 171 |  | Comparar bases de datos disponibles | 1d | 2019-02-08 13:18 | 2019-02-11 13:18 |  | 125.42d |
| 172 |  | Elegir la opción que mejor se adapte al proyecto | 0.5d | 2019-02-11 13:18 | 2019-02-12 08:18 | 171 | 125.42d |
| 173 | 1.3.2.1.2 | **Sistema operativo y aplicaciones de las tablets** | 1.5d | 2019-02-12 08:18 | 2019-02-13 13:18 | 170 | 125.42d |
| 174 |  | Comparar los sistemas operativos disponibles | 1d | 2019-02-12 08:18 | 2019-02-13 08:18 |  | 125.42d |
| 175 |  | Elegir la opción que mejor se adapte al proyecto | 0.5d | 2019-02-13 08:18 | 2019-02-13 13:18 | 174 | 125.42d |
| 176 | 1.3.2.1.3 | **Lenguaje de programación y consultas SQL** | 1.25d | 2019-02-13 13:18 | 2019-02-14 15:18 | 173 | 125.42d |
| 177 |  | Analizar que lenguaje de programación y consultas SQL se adapta mejor a nuestra BD elegida | 1.25d | 2019-02-13 13:18 | 2019-02-14 15:18 |  | 125.42d |
| 178 |  | Analizar que lenguaje se adapta mejor a las necesidades de la empresa | 1.25d | 2019-02-13 13:18 | 2019-02-14 15:18 |  | 125.42d |
| 179 | 1.3.2.1.4 | **Interfaces de comunicación e interoperación con otras aplicaciones** | 1d | 2019-02-08 13:18 | 2019-02-11 13:18 |  | 450.42d |
| 180 |  | Diseñar mediante diagramas y diseño informal las interfaces | 1d | 2019-02-08 13:18 | 2019-02-11 13:18 |  | 450.42d |
| 181 |  | Informar al jefe del progreso semanal | 0.12d | 2019-02-14 15:18 | 2019-02-14 16:18 | 169 | 125.42d |
| 182 | 1.3.2.2 | **Validación de tecnologías** | 4d | 2019-02-14 16:18 | 2019-02-20 16:18 | 181, 169 | 125.42d |
| 183 | 1.3.2.2.1 | **Diseño de pruebas de rendimiento de las tecnologías** | 2d | 2019-02-14 16:18 | 2019-02-18 16:18 |  | 125.42d |
| 184 |  | Diseñar las pruebas de rendimiento | 2d | 2019-02-14 16:18 | 2019-02-18 16:18 |  | 125.42d |
| 185 | 1.3.2.2.2 | **Diseño de pruebas de coste de las tecnologías** | 2d | 2019-02-18 16:18 | 2019-02-20 16:18 | 183 | 125.42d |
| 186 |  | Diseñar las pruebas de coste | 2d | 2019-02-18 16:18 | 2019-02-20 16:18 |  | 125.42d |
| 187 |  | Informar al jefe del progreso semanal | 0.12d | 2019-02-20 16:18 | 2019-02-21 08:18 | 168 | 1162.92d |
| 188 | 1.3.3 | **Diseño de pruebas** | 7.5d | 2019-02-20 16:18 | 2019-03-04 11:18 | 168 | 125.42d |
| 189 | 1.3.3.1 | **Diseño de pruebas de aceptación** | 3d | 2019-02-20 16:18 | 2019-02-25 16:18 |  | 425.42d |
| 190 | 1.3.3.1.1 | **Diseño de pruebas para los gerentes del local** | 1.5d | 2019-02-20 16:18 | 2019-02-22 11:18 |  | 425.42d |
| 191 |  | Redactar informe de los minimos que deben cubrir las pruebas | 0.5d | 2019-02-20 16:18 | 2019-02-21 11:18 |  | 425.42d |
| 192 |  | Diseñar las pruebas basandose en los informes | 1d | 2019-02-21 11:18 | 2019-02-22 11:18 | 191 | 425.42d |
| 193 | 1.3.3.1.2 | **Diseño de pruebas sobre el personal del local** | 1.5d | 2019-02-20 16:18 | 2019-02-22 11:18 |  | 125.42d |
| 194 |  | Redactar informe de los minimos que deben cubrir las pruebas | 0.5d | 2019-02-20 16:18 | 2019-02-21 11:18 |  | 125.42d |
| 195 |  | Diseñar las pruebas basandose en los informes | 1d | 2019-02-21 11:18 | 2019-02-22 11:18 | 194 | 125.42d |
| 196 | 1.3.3.1.3 | **Diseño de pruebas sobre los usuarios del local** | 1.5d | 2019-02-20 16:18 | 2019-02-22 11:18 |  | 575.42d |
| 197 |  | Redactar informe de los minimos que deben cubrir las pruebas | 0.5d | 2019-02-20 16:18 | 2019-02-21 11:18 |  | 575.42d |
| 198 |  | Diseñar las pruebas basandose en los informes | 1d | 2019-02-21 11:18 | 2019-02-22 11:18 | 197 | 575.42d |
| 199 | 1.3.3.1.4 | **Diseño de pruebas para los proveedores** | 1.5d | 2019-02-22 11:18 | 2019-02-25 16:18 | 190 | 425.42d |
| 200 |  | Redactar informe de los minimos que deben cubrir las pruebas | 0.5d | 2019-02-22 11:18 | 2019-02-22 16:18 |  | 425.42d |
| 201 |  | Diseñar las pruebas basandose en los informes | 1d | 2019-02-22 16:18 | 2019-02-25 16:18 | 200 | 425.42d |
| 202 | 1.3.3.2 | **Diseño de pruebas del sistema** | 3d | 2019-02-22 11:18 | 2019-02-27 11:18 |  | 425.42d |
| 203 | 1.3.3.2.1 | **Diseño de pruebas para comunicación con PayPal** | 1.5d | 2019-02-22 11:18 | 2019-02-25 16:18 | 193 | 125.42d |
| 204 |  | Redactar informe de los minimos que deben cubrir las pruebas | 0.5d | 2019-02-22 11:18 | 2019-02-22 16:18 |  | 125.42d |
| 205 |  | Diseñar las pruebas basandose en los informes | 1d | 2019-02-22 16:18 | 2019-02-25 16:18 | 204 | 125.42d |
| 206 | 1.3.3.2.2 | **Diseño de pruebas para comunicación con terminales TPV** | 1.5d | 2019-02-22 11:18 | 2019-02-25 16:18 | 196 | 575.42d |
| 207 |  | Redactar informe de los minimos que deben cubrir las pruebas | 0.5d | 2019-02-22 11:18 | 2019-02-22 16:18 |  | 575.42d |
| 208 |  | Diseñar las pruebas basandose en los informes | 1d | 2019-02-22 16:18 | 2019-02-25 16:18 | 207 | 575.42d |
| 209 | 1.3.3.2.3 | **Diseño de pruebas para comunicación con tablets del local** | 1.5d | 2019-02-25 16:18 | 2019-02-27 11:18 | 199 | 425.42d |
| 210 |  | Redactar informe de los minimos que deben cubrir las pruebas | 0.5d | 2019-02-25 16:18 | 2019-02-26 11:18 |  | 425.42d |

| ID | WBS | Task | Duration | Start | Finish | Predecessors | Total float |
| --- | --- | --- | --- | --- | --- | --- | --- |
| 211 |  | Diseñar las pruebas basandose en los informes | 1d | 2019-02-26 11:18 | 2019-02-27 11:18 | 210 | 425.42d |
| 212 | 1.3.3.3 | **Diseño de pruebas de integración** | 1.5d | 2019-02-25 16:18 | 2019-02-27 11:18 |  | 125.42d |
| 213 | 1.3.3.3.1 | **Diseño de pruebas para comunicación entre módulos** | 1.5d | 2019-02-25 16:18 | 2019-02-27 11:18 | 203 | 125.42d |
| 214 |  | Redactar informe de los minimos que deben cubrir las pruebas | 0.5d | 2019-02-25 16:18 | 2019-02-26 11:18 |  | 125.42d |
| 215 |  | Diseñar las pruebas basandose en los informes | 1d | 2019-02-26 11:18 | 2019-02-27 11:18 | 214 | 125.42d |
| 216 | 1.3.3.4 | **Diseño de pruebas de unidad** | 3d | 2019-02-27 11:18 | 2019-03-04 11:18 | 212 | 125.42d |
| 217 | 1.3.3.4.1 | **Diseño de pruebas de módulo de monitorización general del sistema** | 1.5d | 2019-02-27 11:18 | 2019-02-28 16:18 |  | 125.42d |
| 218 |  | Redactar informe de los minimos que deben cubrir las pruebas | 0.5d | 2019-02-27 11:18 | 2019-02-27 16:18 |  | 125.42d |
| 219 |  | Diseñar las pruebas basandose en los informes | 1d | 2019-02-27 16:18 | 2019-02-28 16:18 | 218 | 125.42d |
| 220 | 1.3.3.4.2 | **Diseño de pruebas de módulo de entretenimiento** | 1.5d | 2019-02-28 16:18 | 2019-03-04 11:18 | 217 | 125.42d |
| 221 |  | Redactar informe de los minimos que deben cubrir las pruebas | 0.5d | 2019-02-28 16:18 | 2019-03-01 11:18 |  | 125.42d |
| 222 |  | Diseñar las pruebas basandose en los informes | 1d | 2019-03-01 11:18 | 2019-03-04 11:18 | 221 | 125.42d |
| 223 | 1.3.3.4.3 | **Diseño de pruebas de módulo para muestra de datos y comandas** | 1.5d | 2019-02-27 11:18 | 2019-02-28 16:18 |  | 125.42d |
| 224 |  | Redactar informe de los minimos que deben cubrir las pruebas | 0.5d | 2019-02-27 11:18 | 2019-02-27 16:18 |  | 125.42d |
| 225 |  | Diseñar las pruebas basandose en los informes | 1d | 2019-02-27 16:18 | 2019-02-28 16:18 | 224 | 125.42d |
| 226 | 1.3.3.4.4 | **Diseño de pruebas de módulo de gestión de proveedores** | 1.5d | 2019-02-28 16:18 | 2019-03-04 11:18 | 223 | 125.42d |
| 227 |  | Redactar informe de los minimos que deben cubrir las pruebas | 0.5d | 2019-02-28 16:18 | 2019-03-01 11:18 |  | 125.42d |
| 228 |  | Diseñar las pruebas basandose en los informes | 1d | 2019-03-01 11:18 | 2019-03-04 11:18 | 227 | 125.42d |
| 229 | 1.3.3.4.5 | **Diseño de pruebas de módulo del camarero** | 1.5d | 2019-02-27 11:18 | 2019-02-28 16:18 |  | 125.42d |
| 230 |  | Redactar informe de los minimos que deben cubrir las pruebas | 0.5d | 2019-02-27 11:18 | 2019-02-27 16:18 |  | 125.42d |
| 231 |  | Diseñar las pruebas basandose en los informes | 1d | 2019-02-27 16:18 | 2019-02-28 16:18 | 230 | 125.42d |
| 232 | 1.3.3.4.6 | **Diseño de pruebas del módulo de cocinas/barra** | 1.5d | 2019-02-28 16:18 | 2019-03-04 11:18 | 229 | 125.42d |
| 233 |  | Redactar informe de los minimos que deben cubrir las pruebas | 0.5d | 2019-02-28 16:18 | 2019-03-01 11:18 |  | 125.42d |
| 234 |  | Diseñar las pruebas basandose en los informes | 1d | 2019-03-01 11:18 | 2019-03-04 11:18 | 233 | 125.42d |
| 235 |  | Informar al jefe del progreso semanal | 0.12d | 2019-03-04 11:18 | 2019-03-04 13:18 | 188 | 412.92d |
| 236 | 1.3.4 | **Planificación** | 3d | 2019-03-04 11:18 | 2019-03-07 11:18 | 188 | 125.42d |
| 237 | 1.3.4.1 | **Revisión de la planificación** | 2.5d | 2019-03-04 11:18 | 2019-03-06 16:18 |  | 125.42d |
| 238 |  | Revisar que la planificación se ajuste al tiempo adecuado | 1.5d | 2019-03-04 11:18 | 2019-03-05 16:18 |  | 125.42d |
| 239 |  | Revisar que la planificación se ajuste adecuadamente a nuestros recursos | 1d | 2019-03-05 16:18 | 2019-03-06 16:18 | 238 | 125.42d |
| 240 | 1.3.4.2 | **Validación de la planificación** | 0.5d | 2019-03-06 16:18 | 2019-03-07 11:18 | 237 | 125.42d |
| 241 |  | Reunirse con el jefe para validar la planificación revisada, incluye informe semanal | 0.5d | 2019-03-06 16:18 | 2019-03-07 11:18 |  | 125.42d |
| 242 | 1.4 | **Codificación del sistema** | 21.19d | 2019-03-07 11:18 | 2019-04-05 13:48 | 152 | 125.42d |
| 243 | 1.8.1 | **Riesgos Codificación** | 1d | 2019-03-07 11:18 | 2019-03-08 11:18 |  | 125.42d |
| 244 |  | Control de riesgos y daños | 1d | 2019-03-07 11:18 | 2019-03-08 11:18 |  | 125.42d |
| 245 |  | Formación de empleados | 1d | 2019-03-07 11:18 | 2019-03-08 11:18 |  | 125.42d |
| 246 | 1.4.1 | **Ambiente de desarrollo** | 6.38d | 2019-03-08 11:18 | 2019-03-18 15:18 | 243 | 125.42d |
| 247 | 1.4.1.1 | **Instalación del entorno de trabajo** | 2.12d | 2019-03-08 11:18 | 2019-03-12 13:18 |  | 125.42d |
| 248 | 1.4.1.1.1 | **Selección de tecnologías** | 0.5d | 2019-03-08 11:18 | 2019-03-08 16:18 |  | 125.42d |
| 249 |  | Seleccionar las tecnologías basandose en la fase de análisis | 0.5d | 2019-03-08 11:18 | 2019-03-08 16:18 |  | 125.42d |
| 250 | 1.4.1.1.2 | **Adquisición de tecnologías** | 0.5d | 2019-03-08 16:18 | 2019-03-11 11:18 | 248 | 125.42d |
| 251 |  | Realizar la compra de licencias de software de empresa | 0.5d | 2019-03-08 16:18 | 2019-03-11 11:18 |  | 125.42d |
| 252 |  | Comprar el hardware necesario | 0.5d | 2019-03-08 16:18 | 2019-03-11 11:18 |  | 125.42d |
| 253 | 1.4.1.1.3 | **Instalación en ordenadores locales** | 1d | 2019-03-11 11:18 | 2019-03-12 11:18 | 250 | 125.42d |
| 254 |  | Instalar el software adquirido en los ordenadores locales | 1d | 2019-03-11 11:18 | 2019-03-12 11:18 |  | 125.42d |
| 255 |  | Informar al jefe del progreso semanal | 0.12d | 2019-03-12 11:18 | 2019-03-12 13:18 | 253 | 125.42d |
| 256 | 1.4.1.2 | **Configuración del entorno de trabajo** | 2d | 2019-03-12 13:18 | 2019-03-14 13:18 | 247 | 125.42d |
| 257 | 1.4.1.2.1 | **Ajuste de propiedades generales** | 2d | 2019-03-12 13:18 | 2019-03-14 13:18 |  | 125.42d |
| 258 |  | Configurar el SO y programas básico de uso general | 2d | 2019-03-12 13:18 | 2019-03-14 13:18 |  | 125.42d |
| 259 | 1.4.1.2.2 | **Ajuste de propiedades específicas** | 2d | 2019-03-12 13:18 | 2019-03-14 13:18 |  | 125.42d |
| 260 |  | Preparar el software específico en los equipos de personal especializado | 2d | 2019-03-12 13:18 | 2019-03-14 13:18 |  | 125.42d |
| 261 | 1.4.1.3 | **Revisiones de eficiencia y velocidad del entorno** | 2.25d | 2019-03-14 13:18 | 2019-03-18 15:18 | 256 | 125.42d |
| 262 | 1.4.1.3.1 | **Evaluación de eficiencia y velocidad** | 1d | 2019-03-14 13:18 | 2019-03-15 13:18 |  | 125.42d |
| 263 |  | Realizar evaluación de eficiencia y velocidad durante la preparación de los ordenadores | 1d | 2019-03-14 13:18 | 2019-03-15 13:18 |  | 125.42d |
| 264 | 1.4.1.3.2 | **Reconfiguración de tecnologías o herramientas** | 1d | 2019-03-15 13:18 | 2019-03-18 13:18 | 262 | 125.42d |
| 265 |  | Ajustar las configuraciones iniciales basándose en las evaluaciones | 1d | 2019-03-15 13:18 | 2019-03-18 13:18 |  | 125.42d |
| 266 | 1.4.1.3.3 | **Selección parcial de otras herramientas** | 0.25d | 2019-03-18 13:18 | 2019-03-18 15:18 | 264 | 125.42d |
| 267 |  | Cubrir problemas encontrados con las herramientas de terceros necesarias | 0.25d | 2019-03-18 13:18 | 2019-03-18 15:18 |  | 125.42d |
| 268 | 1.4.2 | **Módulos** | 9.62d | 2019-03-18 15:18 | 2019-04-01 11:18 | 246 | 125.42d |
| 269 |  | Informar al jefe del progreso semanal | 0.12d | 2019-03-18 15:18 | 2019-03-18 16:18 |  | 237.92d |
| 270 | 1.4.2.1 | **Módulo del camarero** | 2.5d | 2019-03-18 15:18 | 2019-03-21 10:18 |  | 837.92d |
| 271 | 1.4.2.1.1 | **Almacén de datos de camareros** | 2.5d | 2019-03-18 15:18 | 2019-03-21 10:18 |  | 125.42d |
| 272 |  | Preparar la BD y funciones para uso de camareros | 2.5d | 2019-03-18 15:18 | 2019-03-21 10:18 |  | 125.42d |
| 273 | 1.4.2.1.2 | **Función de comunicar llamadas al camarero** | 1d | 2019-03-18 15:18 | 2019-03-19 15:18 |  | 987.92d |
| 274 |  | Implementar la función de llamadas al camararero mediante la interfaz diseñada | 1d | 2019-03-18 15:18 | 2019-03-19 15:18 |  | 987.92d |
| 275 | 1.4.2.1.3 | **Función de liberar una mesa ocupada** | 1d | 2019-03-18 15:18 | 2019-03-19 15:18 |  | 987.92d |
| 276 |  | Implementar la función que permite liberar mesas a camareros | 1d | 2019-03-18 15:18 | 2019-03-19 15:18 |  | 987.92d |
| 277 | 1.4.2.1.4 | **Interfaz visual agradable** | 0.5d | 2019-03-18 15:18 | 2019-03-19 10:18 |  | 1037.92d |
| 278 |  | Programar la interfaz visual | 0.5d | 2019-03-18 15:18 | 2019-03-19 10:18 |  | 1037.92d |
| 279 | 1.4.2.2 | **Módulo de gestión de proveedores** | 3.5d | 2019-03-18 15:18 | 2019-03-22 10:18 |  | 125.42d |
| 280 | 1.4.2.2.1 | **Almacén de stock** | 1d | 2019-03-21 10:18 | 2019-03-22 10:18 | 271 | 125.42d |

| ID | WBS | Task | Duration | Start | Finish | Predecessors | Total float |
| --- | --- | --- | --- | --- | --- | --- | --- |
| 281 |  | Programar el gestor de stock y conectarlo a la BD | 1d | 2019-03-21 10:18 | 2019-03-22 10:18 |  | 125.42d |
| 282 | 1.4.2.2.2 | **Interfaz visual agradable** | 0.5d | 2019-03-18 15:18 | 2019-03-19 10:18 |  | 425.42d |
| 283 |  | Programar la interfaz visual | 0.5d | 2019-03-18 15:18 | 2019-03-19 10:18 |  | 425.42d |
| 284 | 1.4.2.3 | **Módulo de cocinas/barra** | 2.25d | 2019-03-18 16:18 | 2019-03-21 09:18 | 269 | 237.92d |
| 285 | 1.4.2.3.1 | **Función de cobrar con tarjeta u otros métodos** | 2d | 2019-03-18 16:18 | 2019-03-20 16:18 |  | 262.92d |
| 286 |  | Programar funciones de cobro | 1.5d | 2019-03-18 16:18 | 2019-03-20 11:18 |  | 262.92d |
| 287 |  | Adaptar funciones de cobro a todos los métodos de pago | 0.5d | 2019-03-20 11:18 | 2019-03-20 16:18 | 286 | 262.92d |
| 288 | 1.4.2.3.2 | **Función de proteger los datos de las transacciones** | 1.5d | 2019-03-18 16:18 | 2019-03-20 11:18 |  | 312.92d |
| 289 |  | Asegurarse de que se guardan apropiadamente los datos | 0.5d | 2019-03-18 16:18 | 2019-03-19 11:18 |  | 312.92d |
| 290 |  | Proteger mediante encriptación o restricciones de acceso los datos | 1d | 2019-03-19 11:18 | 2019-03-20 11:18 | 289 | 312.92d |
| 291 | 1.4.2.3.3 | **Almacén de datos de comandas** | 2d | 2019-03-18 16:18 | 2019-03-20 16:18 |  | 237.92d |
| 292 |  | Programar el almacen de datos de pedidos | 2d | 2019-03-18 16:18 | 2019-03-20 16:18 |  | 237.92d |
| 293 | 1.4.2.3.4 | **Almacén de datos de mesas** | 0.25d | 2019-03-20 16:18 | 2019-03-21 09:18 | 291 | 237.92d |
| 294 |  | Adaptar el almacén de datos de pedidos a las mesas | 0.25d | 2019-03-20 16:18 | 2019-03-21 09:18 | 292 | 237.92d |
| 295 | 1.4.2.4 | **Módulo para muestra de datos y comandas** | 3d | 2019-03-22 10:18 | 2019-03-27 10:18 | 279, 284 | 125.42d |
| 296 | 1.4.2.4.1 | **Función de seleccionar productos y pedidos** | 2d | 2019-03-22 10:18 | 2019-03-26 10:18 |  | 125.42d |
| 297 |  | Implementar navegación de menú | 2d | 2019-03-22 10:18 | 2019-03-26 10:18 |  | 125.42d |
| 298 | 1.4.2.4.2 | **Función de plasmar información del pedido** | 1d | 2019-03-22 10:18 | 2019-03-25 10:18 |  | 175.42d |
| 299 |  | Implementar función de información de pedido | 1d | 2019-03-22 10:18 | 2019-03-25 10:18 |  | 175.42d |
| 300 | 1.4.2.4.3 | **Función de enviar la comanda** | 1d | 2019-03-22 10:18 | 2019-03-25 10:18 |  | 300.42d |
| 301 |  | Imlementar función de envio de comanda | 1d | 2019-03-22 10:18 | 2019-03-25 10:18 |  | 300.42d |
| 302 | 1.4.2.4.4 | **Función de reservar mesa libre** | 1d | 2019-03-22 10:18 | 2019-03-25 10:18 |  | 325.42d |
| 303 |  | Implementar función de reserva | 1d | 2019-03-22 10:18 | 2019-03-25 10:18 |  | 325.42d |
| 304 | 1.4.2.4.5 | **Función de ver estado de la mesa** | 1d | 2019-03-26 10:18 | 2019-03-27 10:18 |  | 125.42d |
| 305 |  | Implementar función de estado | 1d | 2019-03-26 10:18 | 2019-03-27 10:18 | 297 | 125.42d |
| 306 | 1.4.2.4.6 | **Función de informar al cliente** | 1.5d | 2019-03-25 10:18 | 2019-03-26 15:18 |  | 175.42d |
| 307 |  | Adaptar función de comunicación para el cliente | 1.5d | 2019-03-25 10:18 | 2019-03-26 15:18 | 299 | 175.42d |
| 308 | 1.4.2.4.7 | **Función de códigos QR** | 0.25d | 2019-03-25 10:18 | 2019-03-25 13:18 |  | 300.42d |
| 309 |  | Adaptar el lector QR a nuestros programas | 0.25d | 2019-03-25 10:18 | 2019-03-25 13:18 | 301 | 300.42d |
| 310 | 1.4.2.4.8 | **Interfaz visual agradable** | 0.25d | 2019-03-22 10:18 | 2019-03-22 13:18 |  | 400.42d |
| 311 |  | Programar la interfaz visual | 0.25d | 2019-03-22 10:18 | 2019-03-22 13:18 |  | 400.42d |
| 312 |  | Informar al jefe de progreso semanal | 0.12d | 2019-03-27 10:18 | 2019-03-27 11:18 | 295 | 125.42d |
| 313 | 1.4.2.5 | **Módulo de entretenimiento** | 2d | 2019-03-27 11:18 | 2019-03-29 11:18 | 312 | 125.42d |
| 314 | 1.4.2.5.1 | **Función de ofrecer entretenimiento al cliente** | 0.12d | 2019-03-27 11:18 | 2019-03-27 13:18 |  | 162.92d |
| 315 |  | Asegurar que los programas adecuados están instalados y son accesibles | 0.12d | 2019-03-27 11:18 | 2019-03-27 13:18 |  | 162.92d |
| 316 | 1.4.2.5.2 | **Función de interactuar con el local** | 2d | 2019-03-27 11:18 | 2019-03-29 11:18 |  | 125.42d |
| 317 |  | Preparar conexiones visuales de camaras | 0.5d | 2019-03-27 13:18 | 2019-03-28 08:18 | 315 | 162.92d |
| 318 |  | Preparar lista de música | 0.06d | 2019-03-27 11:18 | 2019-03-27 11:48 |  | 219.17d |
| 319 |  | Preparar programa de control de interacción | 1d | 2019-03-27 11:18 | 2019-03-28 11:18 |  | 125.42d |
| 320 |  | Completar programa de control de interacción con los módulos | 1d | 2019-03-28 11:18 | 2019-03-29 11:18 | 319, 318, 317 | 125.42d |
| 321 | 1.4.2.5.3 | **Interfaz visual agradable** | 0.5d | 2019-03-27 11:18 | 2019-03-27 16:18 |  | 275.42d |
| 322 |  | Programar interfaz visual | 0.5d | 2019-03-27 11:18 | 2019-03-27 16:18 |  | 275.42d |
| 323 | 1.4.2.6 | **Módulo de monitorización general y gerencia** | 1d | 2019-03-29 11:18 | 2019-04-01 11:18 | 313 | 125.42d |
| 324 | 1.4.2.6.1 | **Almacén de datos legales** | 1d | 2019-03-29 11:18 | 2019-04-01 11:18 |  | 125.42d |
| 325 |  | Preparar BD y gestión de BD | 1d | 2019-03-29 11:18 | 2019-04-01 11:18 |  | 125.42d |
| 326 |  | Revisar cumplimiento de requerimientos legales de la BD | 0.25d | 2019-03-29 11:18 | 2019-03-29 14:18 |  | 200.42d |
| 327 | 1.4.2.6.2 | **Almacén de nóminas** | 1d | 2019-03-29 11:18 | 2019-04-01 11:18 |  | 125.42d |
| 328 |  | Preparar BD y gestión de BD para nóminas | 1d | 2019-03-29 11:18 | 2019-04-01 11:18 |  | 125.42d |
| 329 |  | Automatizar las nóminas y su almacenamiento de datos | 1d | 2019-03-29 11:18 | 2019-04-01 11:18 |  | 125.42d |
| 330 | 1.4.2.6.3 | **Interfaz visual agrdable** | 0.5d | 2019-03-29 11:18 | 2019-03-29 16:18 |  | 175.42d |
| 331 |  | Programar la interfaz visual | 0.5d | 2019-03-29 11:18 | 2019-03-29 16:18 |  | 175.42d |
| 332 | 1.4.3 | **Depuración** | 4.19d | 2019-04-01 11:18 | 2019-04-05 13:48 | 268 | 125.42d |
| 333 |  | Informar al jefe del progreso semanal | 0.12d | 2019-04-01 11:18 | 2019-04-01 13:18 |  | 531.67d |
| 334 | 1.4.3.1 | **Localización de defectos** | 0.69d | 2019-04-01 11:18 | 2019-04-02 08:48 |  | 125.42d |
| 335 | 1.4.3.1.1 | **Listado de defectos** | 0.5d | 2019-04-01 11:18 | 2019-04-01 16:18 |  | 125.42d |
| 336 |  | Realizar un listado intensivo de defectos encontrados en la codificación | 0.5d | 2019-04-01 11:18 | 2019-04-01 16:18 |  | 125.42d |
| 337 | 1.4.3.1.2 | **Ubicación de defectos** | 0.19d | 2019-04-01 16:18 | 2019-04-02 08:48 | 335 | 125.42d |
| 338 |  | Completar listado con posiciones exactas (linea, programa, módulo, etc) de los errores | 0.06d | 2019-04-01 16:18 | 2019-04-01 16:48 |  | 125.42d |
| 339 |  | Incluir en listado posibles relaciones del error con otro módulo o trozo de código | 0.12d | 2019-04-01 16:48 | 2019-04-02 08:48 | 338 | 125.42d |
| 340 | 1.4.3.2 | **Corrección de defectos** | 3.5d | 2019-04-02 08:48 | 2019-04-05 13:48 | 334 | 125.42d |
| 341 | 1.4.3.2.1 | **Modificaciones necesarias** | 2.5d | 2019-04-02 08:48 | 2019-04-04 13:48 |  | 125.42d |
| 342 |  | Implementar las modificaciones y arreglos de la codificación | 2.5d | 2019-04-02 08:48 | 2019-04-04 13:48 |  | 125.42d |
| 343 | 1.4.3.2.2 | **Revisión de corrección del defecto** | 1d | 2019-04-04 13:48 | 2019-04-05 13:48 | 341 | 125.42d |
| 344 |  | Revisar todos los errores del listado para comprobar que han sido arreglados correctamente | 1d | 2019-04-04 13:48 | 2019-04-05 13:48 |  | 125.42d |
| 345 | 1.5 | **Pruebas del sistema y sus componentes** | 16.15d | 2019-04-05 13:48 | 2019-04-29 14:58 | 242 | 125.42d |
| 346 |  | Control de riesgos y daños | 1d | 2019-04-05 13:48 | 2019-04-08 13:48 |  | 125.42d |
| 347 |  | Informar al jefe del progreso semanal | 0.12d | 2019-04-08 13:48 | 2019-04-08 14:48 | 346 | 125.42d |
| 348 | 1.5.1 | **Planificación de pruebas** | 2.5d | 2019-04-08 14:48 | 2019-04-11 09:48 | 347 | 125.42d |
| 349 | 1.5.1.1 | **Pruebas de aceptación** | 0.5d | 2019-04-08 14:48 | 2019-04-09 09:48 |  | 125.42d |
| 350 | 1.5.1.1.1 | **Pruebas para los gerentes de local** | 0.5d | 2019-04-08 14:48 | 2019-04-09 09:48 |  | 125.42d |

| ID | WBS | Task | Duration | Start | Finish | Predecessors | Total float |
| --- | --- | --- | --- | --- | --- | --- | --- |
| 351 |  | Planear las pruebas basándose en su diseño | 0.5d | 2019-04-08 14:48 | 2019-04-09 09:48 |  | 125.42d |
| 352 | 1.5.1.1.2 | **Pruebas sobre el personal de local** | 0.5d | 2019-04-08 14:48 | 2019-04-09 09:48 |  | 125.42d |
| 353 |  | Planear las pruebas basándose en su diseño | 0.5d | 2019-04-08 14:48 | 2019-04-09 09:48 |  | 125.42d |
| 354 | 1.5.1.1.3 | **Pruebas sobre los usuarios del local** | 0.5d | 2019-04-08 14:48 | 2019-04-09 09:48 |  | 125.42d |
| 355 |  | Planear las pruebas basándose en su diseño | 0.5d | 2019-04-08 14:48 | 2019-04-09 09:48 |  | 125.42d |
| 356 | 1.5.1.1.4 | **Pruebas para los proveedores** | 0.5d | 2019-04-08 14:48 | 2019-04-09 09:48 |  | 125.42d |
| 357 |  | Planear las pruebas basándose en su diseño | 0.5d | 2019-04-08 14:48 | 2019-04-09 09:48 |  | 125.42d |
| 358 | 1.5.1.2 | **Pruebas del sistema** | 0.5d | 2019-04-09 09:48 | 2019-04-09 14:48 | 349 | 125.42d |
| 359 | 1.5.1.2.1 | **Pruebas para comunicación con PayPal** | 0.5d | 2019-04-09 09:48 | 2019-04-09 14:48 |  | 125.42d |
| 360 |  | Planear las pruebas basándose en su diseño | 0.5d | 2019-04-09 09:48 | 2019-04-09 14:48 |  | 125.42d |
| 361 | 1.5.1.2.2 | **Pruebas para comunicación con terminales TPV** | 0.5d | 2019-04-09 09:48 | 2019-04-09 14:48 |  | 125.42d |
| 362 |  | Planear las pruebas basándose en su diseño | 0.5d | 2019-04-09 09:48 | 2019-04-09 14:48 |  | 125.42d |
| 363 | 1.5.1.2.3 | **Pruebas para comunicación con tablets de local** | 0.5d | 2019-04-09 09:48 | 2019-04-09 14:48 |  | 125.42d |
| 364 |  | Planear las pruebas basándose en su diseño | 0.5d | 2019-04-09 09:48 | 2019-04-09 14:48 |  | 125.42d |
| 365 | 1.5.1.3 | **Pruebas de integración** | 0.5d | 2019-04-09 14:48 | 2019-04-10 09:48 | 358 | 125.42d |
| 366 | 1.5.1.3.1 | **Pruebas para comunicación entre módulos** | 0.5d | 2019-04-09 14:48 | 2019-04-10 09:48 |  | 125.42d |
| 367 |  | Planear las pruebas basándose en su diseño | 0.5d | 2019-04-09 14:48 | 2019-04-10 09:48 |  | 125.42d |
| 368 | 1.5.1.4 | **Pruebas de unidad** | 1d | 2019-04-10 09:48 | 2019-04-11 09:48 | 365 | 125.42d |
| 369 | 1.5.1.4.1 | **Pruebas de módulo de monitorización general del sistema** | 0.5d | 2019-04-10 09:48 | 2019-04-10 14:48 |  | 125.42d |
| 370 |  | Planear las pruebas basándose en su diseño | 0.5d | 2019-04-10 09:48 | 2019-04-10 14:48 |  | 125.42d |
| 371 | 1.5.1.4.2 | **Pruebas de módulo de entretenimiento** | 0.5d | 2019-04-10 09:48 | 2019-04-10 14:48 |  | 125.42d |
| 372 |  | Planear las pruebas basándose en su diseño | 0.5d | 2019-04-10 09:48 | 2019-04-10 14:48 |  | 125.42d |
| 373 | 1.5.1.4.3 | **Pruebas de módulo para muestra de datos y comandas** | 0.5d | 2019-04-10 09:48 | 2019-04-10 14:48 |  | 125.42d |
| 374 |  | Planear las pruebas basándose en su diseño | 0.5d | 2019-04-10 09:48 | 2019-04-10 14:48 |  | 125.42d |
| 375 | 1.5.1.4.4 | **Pruebas de módulo de gestión de proveedores** | 0.5d | 2019-04-10 14:48 | 2019-04-11 09:48 | 369 | 125.42d |
| 376 |  | Planear las pruebas basándose en su diseño | 0.5d | 2019-04-10 14:48 | 2019-04-11 09:48 |  | 125.42d |
| 377 | 1.5.1.4.5 | **Pruebas de módulo del camarero** | 0.5d | 2019-04-10 14:48 | 2019-04-11 09:48 | 371 | 125.42d |
| 378 |  | Planear las pruebas basándose en su diseño | 0.5d | 2019-04-10 14:48 | 2019-04-11 09:48 |  | 125.42d |
| 379 | 1.5.1.4.6 | **Pruebas del módulo de cocinas/barra** | 0.5d | 2019-04-10 14:48 | 2019-04-11 09:48 | 373 | 125.42d |
| 380 |  | Planear las pruebas basándose en su diseño | 0.5d | 2019-04-10 14:48 | 2019-04-11 09:48 |  | 125.42d |
| 381 | 1.5.2 | **Ejecución de pruebas** | 10d | 2019-04-11 09:48 | 2019-04-25 09:48 | 348 | 125.42d |
| 382 | 1.5.2.1 | **Ejecución de casos de prueba** | 3d | 2019-04-11 09:48 | 2019-04-16 09:48 |  | 125.42d |
| 383 | 1.5.2.1.1 | **Ejecución de conjunto de casos de unidad** | 2d | 2019-04-11 09:48 | 2019-04-15 09:48 |  | 225.42d |
| 384 |  | Dividir los equipos para ejecutar las pruebas de cada unidad | 0.5d | 2019-04-11 09:48 | 2019-04-11 14:48 |  | 125.42d |
| 385 |  | Ejecutar las pruebas de cada módulo individual | 2d | 2019-04-11 09:48 | 2019-04-15 09:48 |  | 225.42d |
| 386 | 1.5.2.1.2 | **Ejecución de conjunto de casos de integración** | 2.5d | 2019-04-11 09:48 | 2019-04-15 14:48 |  | 175.42d |
| 387 |  | Ejecutar las pruebas para comprobar que la integración de módulos no tiene fallos | 2.5d | 2019-04-11 09:48 | 2019-04-15 14:48 |  | 175.42d |
| 388 | 1.5.2.1.3 | **Ejecución de conjunto de casos de sistema** | 2.5d | 2019-04-11 09:48 | 2019-04-15 14:48 |  | 175.42d |
| 389 |  | Ejecutar las pruebas de sistema | 2.5d | 2019-04-11 09:48 | 2019-04-15 14:48 |  | 175.42d |
| 390 |  | Informar al jefe del progreso semanal | 0.12d | 2019-04-11 09:48 | 2019-04-11 10:48 |  | 412.92d |
| 391 | 1.5.2.1.4 | **Ejecución de conjunto de casos de validación** | 2.5d | 2019-04-11 14:48 | 2019-04-16 09:48 |  | 125.42d |
| 392 |  | Ejecutar las pruebas de validación del programa | 2.5d | 2019-04-11 14:48 | 2019-04-16 09:48 | 384 | 125.42d |
| 393 | 1.5.2.2 | **Listado de errores** | 2.5d | 2019-04-16 09:48 | 2019-04-18 14:48 | 382 | 125.42d |
| 394 | 1.5.2.2.1 | **Enumeración de errores graves** | 2d | 2019-04-16 09:48 | 2019-04-18 09:48 |  | 125.42d |
| 395 |  | Crear un listado con los errores que se consideran más graves | 0.5d | 2019-04-16 09:48 | 2019-04-16 14:48 |  | 125.42d |
| 396 |  | Analizar cuales de los errores son tan graves como se estima y cuales pueden desestimarse | 1.5d | 2019-04-16 14:48 | 2019-04-18 09:48 | 395 | 125.42d |
| 397 | 1.5.2.2.2 | **Desestimación de errores leves o de otro tipo** | 0.5d | 2019-04-18 09:48 | 2019-04-18 14:48 |  | 125.42d |
| 398 |  | Analizar los errores leves para observar que alguna combinación de estos no cause problemas graves | 0.5d | 2019-04-18 09:48 | 2019-04-18 14:48 | 396 | 125.42d |
| 399 |  | Informar al jefe del progreso semanal | 0.12d | 2019-04-16 09:48 | 2019-04-16 10:48 |  | 362.92d |
| 400 | 1.5.2.3 | **Corrección de errores** | 2.5d | 2019-04-18 14:48 | 2019-04-23 09:48 | 393 | 125.42d |
| 401 | 1.5.2.3.1 | **Depuración de errores** | 2d | 2019-04-18 14:48 | 2019-04-22 14:48 |  | 125.42d |
| 402 |  | Arreglar todos los errores graves | 2d | 2019-04-18 14:48 | 2019-04-22 14:48 |  | 125.42d |
| 403 |  | Arreglar los errores leves que causen errores graves como conjunto | 2d | 2019-04-18 14:48 | 2019-04-22 14:48 |  | 125.42d |
| 404 | 1.5.2.3.2 | **Verificación de corrección** | 0.5d | 2019-04-22 14:48 | 2019-04-23 09:48 | 401 | 125.42d |
| 405 |  | Comprobar que las correcciones han sido realizadas sin causar mas errores | 0.5d | 2019-04-22 14:48 | 2019-04-23 09:48 |  | 125.42d |
| 406 | 1.5.2.4 | **Verificación de terminación** | 2d | 2019-04-23 09:48 | 2019-04-25 09:48 | 400 | 125.42d |
| 407 | 1.5.2.4.1 | **Revisión de listado de errores** | 1.5d | 2019-04-23 09:48 | 2019-04-24 14:48 |  | 125.42d |
| 408 |  | Revisar el listado de errores e informe de correcciones | 1.5d | 2019-04-23 09:48 | 2019-04-24 14:48 |  | 125.42d |
| 409 | 1.5.2.4.2 | **Aprobación formal de finalización** | 0.5d | 2019-04-24 14:48 | 2019-04-25 09:48 | 407 | 125.42d |
| 410 |  | Reunirse con el encargado para formalizar la validación e informar del progreso semanal | 0.5d | 2019-04-24 14:48 | 2019-04-25 09:48 |  | 125.42d |
| 411 | 1.5.3 | **Análisis de errores y evaluación** | 2.52d | 2019-04-25 09:48 | 2019-04-29 14:58 | 381 | 125.42d |
| 412 | 1.5.3.1 | **Creación de documento de errores** | 1d | 2019-04-25 09:48 | 2019-04-26 09:48 |  | 125.42d |
| 413 |  | Redactar documento de errores | 1d | 2019-04-25 09:48 | 2019-04-26 09:48 |  | 125.42d |
| 414 | 1.5.3.2 | **Catalogación de errores** | 1d | 2019-04-25 09:48 | 2019-04-26 09:48 |  | 125.42d |
| 415 |  | Catalogar errores basandose en el análisis realizado en la ejecución de pruebas | 1d | 2019-04-25 09:48 | 2019-04-26 09:48 | 397, 394 | 125.42d |
| 416 | 1.5.3.3 | **Realización de análisis estadísticos** | 1.5d | 2019-04-26 09:48 | 2019-04-29 14:48 | 414, 412 | 125.42d |
| 417 |  | Realizar análisis estadístico de errores | 1d | 2019-04-26 09:48 | 2019-04-29 09:48 |  | 125.42d |
| 418 |  | Redactar informe estadístico | 0.5d | 2019-04-29 09:48 | 2019-04-29 14:48 | 417 | 125.42d |
| 419 | 1.5.3.4 | **Adición al archivo de proyectos de la empresa** | 0.02d | 2019-04-29 14:48 | 2019-04-29 14:58 | 416, 414, 412 | 125.42d |
| 420 |  | Añadir los documentos creados al archivo de la empresa | 0.02d | 2019-04-29 14:48 | 2019-04-29 14:58 |  | 125.42d |

## Version 2 (saved 2018-12-15)

Note of the change: Correcciones costes y un poco de generales

Last finish stays 2019-04-30.

Added:

| ID | Task | Duration | Start | Finish | Constraint | Resources |
| --- | --- | --- | --- | --- | --- | --- |
| 2 | **Tareas de Gestión** | 85.88d? | 2019-01-01 09:00 | 2019-04-30 17:00 |  |  |
| 3 | **Tareas de riesgos** | 64.33d? | 2019-01-01 09:00 | 2019-04-01 11:40 |  |  |
| 4 | Control de riesgos y daños 1 | 0.06d | 2019-02-01 09:00 | 2019-02-01 09:29 | start no earlier than 2019-02-01 09:00 | Director de proyecto [50%]; Personal de empresa |
| 5 | Control de riesgos y daños 2 | 0.06d | 2019-03-01 09:00 | 2019-03-01 09:29 | start no earlier than 2019-03-01 09:00 | Director de proyecto [50%]; Personal de empresa |
| 6 | Control de riesgos y daños 3 | 0.33d? | 2019-04-01 09:00 | 2019-04-01 11:40 | start no earlier than 2019-04-01 09:00 | Director de proyecto [50%]; Personal de empresa |

Removed: 96 Informar al jefe del progreso semanal; 120 Informar al Jefe del progreso semanal; 151 Reunirse con el jefe para informar del progreso de la semana; 153 Control de riesgos y daños; 167 Informar al jefe del progreso semanal; 181 Informar al jefe del progreso semanal; 187 Informar al jefe del progreso semanal; 235 Informar al jefe del progreso semanal; 243 Riesgos Codificación; 244 Control de riesgos y daños; 255 Informar al jefe del progreso semanal; 269 Informar al jefe del progreso semanal; 312 Informar al jefe de progreso semanal; 333 Informar al jefe del progreso semanal; 346 Control de riesgos y daños; 347 Informar al jefe del progreso semanal; 390 Informar al jefe del progreso semanal; 399 Informar al jefe del progreso semanal

Changed:

| ID | Task | Start | Finish | Duration | Total float | Predecessors | Other |
| --- | --- | --- | --- | --- | --- | --- | --- |
| 7 | **Respuestas iniciales a riesgos** | 2019-01-01 09:30 → 2019-01-01 09:00 | 2019-01-02 16:30 → 2019-01-08 09:00 (+6d) | 1.75d → 5d | 125.42d → 8087.5d |  |  |
| 11 | Formación de empleados | 2019-03-07 11:18 → 2019-01-01 09:00 (-65d) | 2019-03-08 11:18 → 2019-01-08 09:00 (-59d) | 1d → 5d | 125.42d → 8087.5d |  | resources Personal de empresa → Programador Junior1; Programador Senior |
| 57 | **Análisis de requisitos del sistema** |  | 2019-01-28 15:18 → 2019-01-28 13:18 | 17.85d → 17.6d | 125.42d → 712.92d | 7 → 10 |  |
| 68 | Cuestionar futuros empleados para conocer sus necesidades | 2019-01-08 14:06 → 2019-01-08 11:30 | 2019-01-08 14:54 → 2019-01-08 13:18 |  | 125.42d → 712.92d | 80 → none |  |
| 69 | Cuestionar posibles clientes para conocer sus preferencias | 2019-01-08 13:18 → 2019-01-08 16:30 | 2019-01-08 14:06 → 2019-01-09 08:18 (+1d) |  | 145.42d → 712.92d | 81 → 80 | constraint none → start no earlier than 2019-01-04 11:12 |
| 71 | Cuestionar futuros empleados para conocer sus necesidades | 2019-01-08 14:54 → 2019-01-08 13:18 | 2019-01-08 15:42 → 2019-01-08 14:06 |  | 125.42d → 712.92d |  |  |
| 72 | Cuestionar posibles clientes para conocer sus preferencias | 2019-01-08 14:06 → 2019-01-08 11:30 | 2019-01-08 14:54 → 2019-01-08 13:18 |  | 145.42d → 732.92d |  |  |
| 74 | Cuestionar futuros empleados para conocer sus necesidades | 2019-01-08 15:42 → 2019-01-08 14:06 | 2019-01-08 16:30 → 2019-01-08 14:54 |  | 125.42d → 712.92d |  |  |
| 75 | Cuestionar posibles clientes para conocer sus preferencias | 2019-01-08 14:54 → 2019-01-08 13:18 | 2019-01-08 15:42 → 2019-01-08 14:06 |  | 145.42d → 732.92d |  |  |
| 77 | Cuestionar futuros empleados para conocer sus necesidades | 2019-01-08 11:30 → 2019-01-08 14:54 | 2019-01-08 13:18 → 2019-01-08 15:42 |  | 125.42d → 712.92d | none → 74 |  |
| 78 | Cuestionar posibles clientes para conocer sus preferencias | 2019-01-08 16:30 → 2019-01-08 14:06 | 2019-01-09 08:18 → 2019-01-08 14:54 (-1d) |  | 125.42d → 732.92d | 74 → 75 | constraint start no earlier than 2019-01-04 11:12 → none |
| 80 | Cuestionar futuros empleados para conocer sus necesidades | 2019-01-08 13:18 → 2019-01-08 15:42 | 2019-01-08 14:06 → 2019-01-08 16:30 |  | 125.42d → 712.92d |  |  |
| 81 | Cuestionar posibles clientes para conocer sus preferencias | 2019-01-08 11:30 → 2019-01-08 14:54 | 2019-01-08 13:18 → 2019-01-08 15:42 |  | 145.42d → 732.92d |  |  |
| 91 | **Evaluación de la viabilidad del sistema** |  | 2019-01-25 14:18 → 2019-01-25 13:18 | 7.62d → 7.5d | 125.42d → 712.92d |  |  |
| 102 | **Estudio de viabilidad legal** | 2019-01-22 11:18 → 2019-01-22 10:18 | 2019-01-24 11:18 → 2019-01-24 10:18 |  | 125.42d → 712.92d | 97, Informar al jefe del progreso semanal → 97 |  |
| 103 | Estudiar las leyes relacionadas con la parte tecnológica del proyecto | 2019-01-22 11:18 → 2019-01-22 10:18 | 2019-01-22 16:18 → 2019-01-22 15:18 |  | 125.42d → 712.92d |  |  |
| 104 | Estudiar las leyes relacionadas con al parte de hostelería del proyecto | 2019-01-22 16:18 → 2019-01-22 15:18 | 2019-01-23 11:18 → 2019-01-23 10:18 |  | 125.42d → 712.92d |  |  |
| 105 | Estudiar las leyes relacionadas con salud e higiene de local | 2019-01-23 11:18 → 2019-01-23 10:18 | 2019-01-23 16:18 → 2019-01-23 15:18 |  | 125.42d → 712.92d |  |  |
| 106 | Realizar un informe sobre los estudios legales | 2019-01-23 16:18 → 2019-01-23 15:18 | 2019-01-24 10:18 → 2019-01-24 09:18 |  | 125.42d → 712.92d |  |  |
| 107 | Analizar con la información obtenida si el proyecto es legalmente viable | 2019-01-24 10:18 → 2019-01-24 09:18 | 2019-01-24 11:18 → 2019-01-24 10:18 |  | 125.42d → 712.92d |  |  |
| 108 | **Estudio de viabilidad de plazos** | 2019-01-24 11:18 → 2019-01-24 10:18 | 2019-01-25 14:18 → 2019-01-25 13:18 |  | 125.42d → 712.92d |  |  |
| 109 | Realizar análisis de costes temporales | 2019-01-24 11:18 → 2019-01-24 10:18 | 2019-01-25 11:18 → 2019-01-25 10:18 |  | 125.42d → 712.92d |  |  |
| 110 | Realizar planificación de distribución de trabajo | 2019-01-24 11:18 → 2019-01-24 10:18 | 2019-01-24 14:18 → 2019-01-24 13:18 |  | 200.42d → 787.92d |  |  |
| 111 | Determinar si el proyecto es viable en el tiempo elegido | 2019-01-25 11:18 → 2019-01-25 10:18 | 2019-01-25 14:18 → 2019-01-25 13:18 |  | 125.42d → 712.92d |  |  |
| 112 | **Obtención de una definición del sistema** | 2019-01-25 14:18 → 2019-01-25 13:18 | 2019-01-28 15:18 → 2019-01-28 13:18 | 1.12d → 1d | 125.42d → 712.92d |  |  |
| 113 | **Especificación formal del sistema** | 2019-01-25 14:18 → 2019-01-25 13:18 | 2019-01-28 08:30 → 2019-01-25 16:30 (-3d) |  | 125.42d → 712.92d |  |  |
| 114 | **Diagrama de contexto** | 2019-01-25 14:18 → 2019-01-25 13:18 | 2019-01-25 15:54 → 2019-01-25 14:54 |  | 125.42d → 712.92d |  |  |
| 115 | Dibujar el diagrama de contexto | 2019-01-25 14:18 → 2019-01-25 13:18 | 2019-01-25 15:54 → 2019-01-25 14:54 |  | 125.42d → 712.92d |  |  |
| 116 | **Diagrama de sistema** | 2019-01-25 15:54 → 2019-01-25 14:54 | 2019-01-28 08:30 → 2019-01-25 16:30 (-3d) |  | 125.42d → 712.92d |  |  |
| 117 | Dibujar el diagrama de sistema | 2019-01-28 10:06 → 2019-01-25 14:54 (-3d) | 2019-01-28 11:42 → 2019-01-25 16:30 (-3d) |  | 125.42d → 712.92d |  | resources Analista-Diseñador → Analista-Programador |
| 118 | **Representación del sistema** | 2019-01-28 08:30 → 2019-01-25 16:30 (-3d) | 2019-01-28 14:18 → 2019-01-28 13:18 |  | 125.42d → 712.92d |  |  |
| 119 | **Diagramas de flujo de datos** | 2019-01-28 08:30 → 2019-01-25 16:30 (-3d) | 2019-01-28 10:06 → 2019-01-28 09:06 |  | 125.42d → 712.92d |  |  |
| 120 | Dibujar el diagrama de sistema | 2019-01-25 15:54 → 2019-01-25 16:30 | 2019-01-28 08:30 → 2019-01-28 09:06 |  | 125.42d → 712.92d |  | resources Analista-Programador → Analista-Diseñador |
| 121 | **Diagramas de flujo de control** | 2019-01-28 10:06 → 2019-01-28 09:06 | 2019-01-28 11:42 → 2019-01-28 10:42 |  | 125.42d → 712.92d |  |  |
| 122 | Dibujar el diagrama de sistema | 2019-01-28 08:30 → 2019-01-28 09:06 | 2019-01-28 10:06 → 2019-01-28 10:42 |  | 125.42d → 712.92d |  |  |
| 123 | **Diagramas del ámbito de la información** | 2019-01-28 11:42 → 2019-01-28 10:42 | 2019-01-28 14:18 → 2019-01-28 13:18 |  | 125.42d → 712.92d |  |  |
| 124 | Dibujar el diagrama de sistema | 2019-01-28 11:42 → 2019-01-28 10:42 | 2019-01-28 14:18 → 2019-01-28 13:18 |  | 125.42d → 712.92d |  |  |
| 125 | **Análisis de requisitos del software** | 2019-01-28 15:18 → 2019-01-28 13:18 | 2019-01-31 13:18 → 2019-01-31 09:18 | 2.75d → 2.62d | 125.42d → 712.92d |  |  |
| 126 | **Extracción o determinación de requisitos** | 2019-01-28 15:18 → 2019-01-28 13:18 | 2019-01-29 09:18 → 2019-01-28 16:18 (-1d) |  | 125.42d → 712.92d |  |  |
| 127 | **Documentos de reuniones con cliente** | 2019-01-28 15:18 → 2019-01-28 13:18 | 2019-01-28 16:18 → 2019-01-28 14:18 |  | 125.42d → 712.92d |  |  |
| 128 | Realizar un acta de reunión para la reunión con el cliente | 2019-01-28 15:18 → 2019-01-28 13:18 | 2019-01-28 16:18 → 2019-01-28 14:18 |  | 125.42d → 712.92d |  |  |
| 129 | Realizar un informe sobre las solicitudes e información que se obtuvo del cliente | 2019-01-28 15:18 → 2019-01-28 13:18 | 2019-01-28 16:18 → 2019-01-28 14:18 |  | 125.42d → 712.92d |  |  |
| 130 | **Especificación informal de requisitos software** | 2019-01-28 16:18 → 2019-01-28 14:18 | 2019-01-29 09:18 → 2019-01-28 16:18 (-1d) |  | 125.42d → 712.92d |  |  |
| 131 | Redactar un primer informe de los requisitos del software a partir del informe de reunión con el cliente | 2019-01-28 16:18 → 2019-01-28 14:18 | 2019-01-29 09:18 → 2019-01-28 16:18 (-1d) |  | 125.42d → 712.92d |  |  |
| 132 | **Análisis de requisitos** | 2019-01-29 09:18 → 2019-01-28 16:18 (-1d) | 2019-01-29 16:18 → 2019-01-29 14:18 |  | 125.42d → 712.92d |  |  |
| 133 | **Validación de especificación informal** | 2019-01-29 09:18 → 2019-01-28 16:18 (-1d) | 2019-01-29 10:18 → 2019-01-29 08:18 |  | 125.42d → 712.92d |  |  |
| 134 | Analizar especificación informal para posibles mejoras | 2019-01-29 09:18 → 2019-01-28 16:18 (-1d) | 2019-01-29 10:18 → 2019-01-29 08:18 |  | 125.42d → 712.92d |  |  |
| 135 | Buscar errores en la especificación informal | 2019-01-29 09:18 → 2019-01-28 16:18 (-1d) | 2019-01-29 10:18 → 2019-01-29 08:18 |  | 125.42d → 712.92d |  |  |
| 136 | **Resolución de inconsistencias** | 2019-01-29 10:18 → 2019-01-29 08:18 | 2019-01-29 13:18 → 2019-01-29 10:18 |  | 125.42d → 712.92d |  |  |
| 137 | Corregir errores en la especificación informal | 2019-01-29 10:18 → 2019-01-29 08:18 | 2019-01-29 13:18 → 2019-01-29 10:18 |  | 125.42d → 712.92d |  |  |
| 138 | Encontrar redundancias y discrepancias en la especificación informal | 2019-01-29 10:18 → 2019-01-29 08:18 | 2019-01-29 13:18 → 2019-01-29 10:18 |  | 125.42d → 712.92d |  |  |
| 139 | **Coordinación de requisitos relacionados** | 2019-01-29 13:18 → 2019-01-29 10:18 | 2019-01-29 16:18 → 2019-01-29 14:18 |  | 125.42d → 712.92d |  |  |
| 140 | Formar relaciones entre requisitos que tengan puntos comunes | 2019-01-29 13:18 → 2019-01-29 10:18 | 2019-01-29 15:18 → 2019-01-29 13:18 |  | 125.42d → 712.92d |  |  |
| 141 | Purgar relaciones redundantes | 2019-01-29 15:18 → 2019-01-29 13:18 | 2019-01-29 16:18 → 2019-01-29 14:18 |  | 125.42d → 712.92d |  |  |
| 142 | **Especificación de requisitos** | 2019-01-29 16:18 → 2019-01-29 14:18 | 2019-01-30 14:18 → 2019-01-30 11:18 |  | 125.42d → 712.92d |  |  |
| 143 | **Documento de especificación formal de requisitos** | 2019-01-29 16:18 → 2019-01-29 14:18 | 2019-01-30 11:18 → 2019-01-30 09:18 |  | 125.42d → 712.92d |  |  |
| 144 | Redactar documento de requisitos formal | 2019-01-29 16:18 → 2019-01-29 14:18 | 2019-01-30 11:18 → 2019-01-30 09:18 |  | 125.42d → 712.92d |  |  |
| 145 | **Revisión de documento de especificación formal** | 2019-01-30 11:18 → 2019-01-30 09:18 | 2019-01-30 14:18 → 2019-01-30 11:18 |  | 125.42d → 712.92d |  |  |
| 146 | Revisar documento de requisitos formal en busca de errores | 2019-01-30 11:18 → 2019-01-30 09:18 | 2019-01-30 13:18 → 2019-01-30 10:18 |  | 125.42d → 712.92d |  |  |
| 147 | Revisar documento de requisitos formal en busca de mejoras de formato y claridad | 2019-01-30 13:18 → 2019-01-30 10:18 | 2019-01-30 14:18 → 2019-01-30 11:18 |  | 125.42d → 712.92d |  |  |
| 148 | **Validación de requisitos** | 2019-01-30 14:18 → 2019-01-30 11:18 | 2019-01-31 11:18 → 2019-01-31 09:18 |  | 125.42d → 712.92d |  |  |
| 149 | **Reunión con cliente para validación de requisitos** | 2019-01-30 14:18 → 2019-01-30 11:18 | 2019-01-30 16:18 → 2019-01-30 14:18 |  | 125.42d → 712.92d |  |  |
| 150 | Redactar acta de reunión con el cliente y validar requisitos | 2019-01-30 14:18 → 2019-01-30 11:18 | 2019-01-30 16:18 → 2019-01-30 14:18 |  | 125.42d → 712.92d |  |  |
| 151 | **Corrección de especificación formal** | 2019-01-30 16:18 → 2019-01-30 14:18 | 2019-01-31 09:18 → 2019-01-30 16:18 (-1d) |  | 125.42d → 712.92d |  |  |
| 152 | Ajustar los requisitos a partir de la validación realizada | 2019-01-30 16:18 → 2019-01-30 14:18 | 2019-01-31 09:18 → 2019-01-30 16:18 (-1d) |  | 125.42d → 712.92d |  |  |
| 153 | **Validación de la especificación forma corregidsa** | 2019-01-31 09:18 → 2019-01-30 16:18 (-1d) | 2019-01-31 11:18 → 2019-01-31 09:18 |  | 125.42d → 712.92d |  |  |
| 154 | Reunirse con el cliente para realizar la validación final de requisitos | 2019-01-31 09:18 → 2019-01-30 16:18 (-1d) | 2019-01-31 11:18 → 2019-01-31 09:18 |  | 125.42d → 712.92d |  |  |
| 155 | **Diseño del sistema software** | 2019-01-31 13:18 → 2019-01-31 09:18 | 2019-03-07 11:18 → 2019-03-06 16:18 (-1d) | 24.88d → 24.75d | 125.42d → 712.92d |  |  |
| 156 | **Diseño funcional** | 2019-01-31 13:18 → 2019-01-31 09:18 | 2019-02-08 13:18 → 2019-02-08 09:18 |  | 125.42d → 712.92d |  |  |
| 157 | **Diseño módulo del camarero** | 2019-01-31 13:18 → 2019-01-31 09:18 | 2019-02-01 13:18 → 2019-02-01 09:18 |  | 125.42d → 712.92d |  |  |

| ID | Task | Start | Finish | Duration | Total float | Predecessors |
| --- | --- | --- | --- | --- | --- | --- |
| 158 | Realizar diseño del módulo | 2019-02-01 13:18 → 2019-01-31 09:18 (-1d) | 2019-02-04 13:18 → 2019-02-01 09:18 (-3d) |  | 125.42d → 712.92d |  |
| 159 | **Diseño módulo de gestión de proveedores** | 2019-02-01 13:18 → 2019-02-01 09:18 | 2019-02-04 13:18 → 2019-02-04 09:18 |  | 125.42d → 712.92d |  |
| 160 | Realizar diseño del módulo | 2019-02-04 13:18 → 2019-02-01 09:18 (-3d) | 2019-02-05 13:18 → 2019-02-04 09:18 (-1d) |  | 125.42d → 712.92d |  |
| 161 | **Diseño módulo de cocinas/barras** | 2019-02-04 13:18 → 2019-02-04 09:18 | 2019-02-05 13:18 → 2019-02-05 09:18 |  | 125.42d → 712.92d |  |
| 162 | Realizar diseño del módulo | 2019-02-05 13:18 → 2019-02-04 09:18 (-1d) | 2019-02-06 13:18 → 2019-02-05 09:18 (-1d) |  | 125.42d → 712.92d |  |
| 163 | **Diseño módulo para muestra de datos y comandas** | 2019-02-05 13:18 → 2019-02-05 09:18 | 2019-02-06 13:18 → 2019-02-06 09:18 |  | 125.42d → 712.92d |  |
| 164 | Realizar diseño del módulo | 2019-02-06 13:18 → 2019-02-05 09:18 (-1d) | 2019-02-07 13:18 → 2019-02-06 09:18 (-1d) |  | 125.42d → 712.92d |  |
| 165 | **Diseño módulo de entretenimiento** | 2019-02-06 13:18 → 2019-02-06 09:18 | 2019-02-07 13:18 → 2019-02-07 09:18 |  | 125.42d → 712.92d |  |
| 166 | Realizar diseño del módulo | 2019-02-07 13:18 → 2019-02-06 09:18 (-1d) | 2019-02-08 13:18 → 2019-02-07 09:18 (-1d) |  | 125.42d → 712.92d |  |
| 167 | **Diseño módulo de monitorización general del sistema** | 2019-02-07 13:18 → 2019-02-07 09:18 | 2019-02-08 13:18 → 2019-02-08 09:18 |  | 125.42d → 712.92d |  |
| 168 | Realizar diseño del módulo | 2019-01-31 13:18 → 2019-02-07 09:18 (+7d) | 2019-02-01 13:18 → 2019-02-08 09:18 (+7d) |  | 125.42d → 712.92d |  |
| 169 | **Diseño técnico** | 2019-02-08 13:18 → 2019-02-08 09:18 | 2019-02-20 16:18 → 2019-02-20 11:18 | 8.38d → 8.25d | 125.42d → 712.92d |  |
| 170 | **Selección de tecnologías** | 2019-02-08 13:18 → 2019-02-08 09:18 | 2019-02-14 15:18 → 2019-02-14 11:18 |  | 125.42d → 712.92d |  |
| 171 | **Base de datos a usar** | 2019-02-08 13:18 → 2019-02-08 09:18 | 2019-02-12 08:18 → 2019-02-11 14:18 (-1d) |  | 125.42d → 712.92d |  |
| 172 | Comparar bases de datos disponibles | 2019-02-08 13:18 → 2019-02-08 09:18 | 2019-02-11 13:18 → 2019-02-11 09:18 |  | 125.42d → 712.92d |  |
| 173 | Elegir la opción que mejor se adapte al proyecto | 2019-02-11 13:18 → 2019-02-11 09:18 | 2019-02-12 08:18 → 2019-02-11 14:18 (-1d) |  | 125.42d → 712.92d |  |
| 174 | **Sistema operativo y aplicaciones de las tablets** | 2019-02-12 08:18 → 2019-02-11 14:18 (-1d) | 2019-02-13 13:18 → 2019-02-13 09:18 |  | 125.42d → 712.92d |  |
| 175 | Comparar los sistemas operativos disponibles | 2019-02-12 08:18 → 2019-02-11 14:18 (-1d) | 2019-02-13 08:18 → 2019-02-12 14:18 (-1d) |  | 125.42d → 712.92d |  |
| 176 | Elegir la opción que mejor se adapte al proyecto | 2019-02-13 08:18 → 2019-02-12 14:18 (-1d) | 2019-02-13 13:18 → 2019-02-13 09:18 |  | 125.42d → 712.92d |  |
| 177 | **Lenguaje de programación y consultas SQL** | 2019-02-13 13:18 → 2019-02-13 09:18 | 2019-02-14 15:18 → 2019-02-14 11:18 |  | 125.42d → 712.92d |  |
| 178 | Analizar que lenguaje de programación y consultas SQL se adapta mejor a nuestra BD elegida | 2019-02-13 13:18 → 2019-02-13 09:18 | 2019-02-14 15:18 → 2019-02-14 11:18 |  | 125.42d → 712.92d |  |
| 179 | Analizar que lenguaje se adapta mejor a las necesidades de la empresa | 2019-02-13 13:18 → 2019-02-13 09:18 | 2019-02-14 15:18 → 2019-02-14 11:18 |  | 125.42d → 712.92d |  |
| 180 | **Interfaces de comunicación e interoperación con otras aplicaciones** | 2019-02-08 13:18 → 2019-02-08 09:18 | 2019-02-11 13:18 → 2019-02-11 09:18 |  | 450.42d → 1037.92d |  |
| 181 | Diseñar mediante diagramas y diseño informal las interfaces | 2019-02-08 13:18 → 2019-02-08 09:18 | 2019-02-11 13:18 → 2019-02-11 09:18 |  | 450.42d → 1037.92d |  |
| 182 | **Validación de tecnologías** | 2019-02-14 16:18 → 2019-02-14 11:18 | 2019-02-20 16:18 → 2019-02-20 11:18 |  | 125.42d → 712.92d | Informar al jefe del progreso semanal, 170 → 170 |
| 183 | **Diseño de pruebas de rendimiento de las tecnologías** | 2019-02-14 16:18 → 2019-02-14 11:18 | 2019-02-18 16:18 → 2019-02-18 11:18 |  | 125.42d → 712.92d |  |
| 184 | Diseñar las pruebas de rendimiento | 2019-02-14 16:18 → 2019-02-14 11:18 | 2019-02-18 16:18 → 2019-02-18 11:18 |  | 125.42d → 712.92d |  |
| 185 | **Diseño de pruebas de coste de las tecnologías** | 2019-02-18 16:18 → 2019-02-18 11:18 | 2019-02-20 16:18 → 2019-02-20 11:18 |  | 125.42d → 712.92d |  |
| 186 | Diseñar las pruebas de coste | 2019-02-18 16:18 → 2019-02-18 11:18 | 2019-02-20 16:18 → 2019-02-20 11:18 |  | 125.42d → 712.92d |  |
| 187 | **Diseño de pruebas** | 2019-02-20 16:18 → 2019-02-20 11:18 | 2019-03-04 11:18 → 2019-03-01 16:18 (-3d) |  | 125.42d → 712.92d |  |
| 188 | **Diseño de pruebas de aceptación** | 2019-02-20 16:18 → 2019-02-20 11:18 | 2019-02-25 16:18 → 2019-02-25 11:18 |  | 425.42d → 1012.92d |  |
| 189 | **Diseño de pruebas para los gerentes del local** | 2019-02-20 16:18 → 2019-02-20 11:18 | 2019-02-22 11:18 → 2019-02-21 16:18 (-1d) |  | 425.42d → 1012.92d |  |
| 190 | Redactar informe de los minimos que deben cubrir las pruebas | 2019-02-20 16:18 → 2019-02-20 11:18 | 2019-02-21 11:18 → 2019-02-20 16:18 (-1d) |  | 425.42d → 1012.92d |  |
| 191 | Diseñar las pruebas basandose en los informes | 2019-02-21 11:18 → 2019-02-20 16:18 (-1d) | 2019-02-22 11:18 → 2019-02-21 16:18 (-1d) |  | 425.42d → 1012.92d |  |
| 192 | **Diseño de pruebas sobre el personal del local** | 2019-02-20 16:18 → 2019-02-20 11:18 | 2019-02-22 11:18 → 2019-02-21 16:18 (-1d) |  | 125.42d → 712.92d |  |
| 193 | Redactar informe de los minimos que deben cubrir las pruebas | 2019-02-20 16:18 → 2019-02-20 11:18 | 2019-02-21 11:18 → 2019-02-20 16:18 (-1d) |  | 125.42d → 712.92d |  |
| 194 | Diseñar las pruebas basandose en los informes | 2019-02-21 11:18 → 2019-02-20 16:18 (-1d) | 2019-02-22 11:18 → 2019-02-21 16:18 (-1d) |  | 125.42d → 712.92d |  |
| 195 | **Diseño de pruebas sobre los usuarios del local** | 2019-02-20 16:18 → 2019-02-20 11:18 | 2019-02-22 11:18 → 2019-02-21 16:18 (-1d) |  | 575.42d → 1162.92d |  |
| 196 | Redactar informe de los minimos que deben cubrir las pruebas | 2019-02-20 16:18 → 2019-02-20 11:18 | 2019-02-21 11:18 → 2019-02-20 16:18 (-1d) |  | 575.42d → 1162.92d |  |
| 197 | Diseñar las pruebas basandose en los informes | 2019-02-21 11:18 → 2019-02-20 16:18 (-1d) | 2019-02-22 11:18 → 2019-02-21 16:18 (-1d) |  | 575.42d → 1162.92d |  |
| 198 | **Diseño de pruebas para los proveedores** | 2019-02-22 11:18 → 2019-02-21 16:18 (-1d) | 2019-02-25 16:18 → 2019-02-25 11:18 |  | 425.42d → 1012.92d |  |
| 199 | Redactar informe de los minimos que deben cubrir las pruebas | 2019-02-22 11:18 → 2019-02-21 16:18 (-1d) | 2019-02-22 16:18 → 2019-02-22 11:18 |  | 425.42d → 1012.92d |  |
| 200 | Diseñar las pruebas basandose en los informes | 2019-02-22 16:18 → 2019-02-22 11:18 | 2019-02-25 16:18 → 2019-02-25 11:18 |  | 425.42d → 1012.92d |  |
| 201 | **Diseño de pruebas del sistema** | 2019-02-22 11:18 → 2019-02-21 16:18 (-1d) | 2019-02-27 11:18 → 2019-02-26 16:18 (-1d) |  | 425.42d → 1012.92d |  |
| 202 | **Diseño de pruebas para comunicación con PayPal** | 2019-02-22 11:18 → 2019-02-21 16:18 (-1d) | 2019-02-25 16:18 → 2019-02-25 11:18 |  | 125.42d → 712.92d |  |
| 203 | Redactar informe de los minimos que deben cubrir las pruebas | 2019-02-22 11:18 → 2019-02-21 16:18 (-1d) | 2019-02-22 16:18 → 2019-02-22 11:18 |  | 125.42d → 712.92d |  |
| 204 | Diseñar las pruebas basandose en los informes | 2019-02-22 16:18 → 2019-02-22 11:18 | 2019-02-25 16:18 → 2019-02-25 11:18 |  | 125.42d → 712.92d |  |
| 205 | **Diseño de pruebas para comunicación con terminales TPV** | 2019-02-22 11:18 → 2019-02-21 16:18 (-1d) | 2019-02-25 16:18 → 2019-02-25 11:18 |  | 575.42d → 1162.92d |  |
| 206 | Redactar informe de los minimos que deben cubrir las pruebas | 2019-02-22 11:18 → 2019-02-21 16:18 (-1d) | 2019-02-22 16:18 → 2019-02-22 11:18 |  | 575.42d → 1162.92d |  |
| 207 | Diseñar las pruebas basandose en los informes | 2019-02-22 16:18 → 2019-02-22 11:18 | 2019-02-25 16:18 → 2019-02-25 11:18 |  | 575.42d → 1162.92d |  |
| 208 | **Diseño de pruebas para comunicación con tablets del local** | 2019-02-25 16:18 → 2019-02-25 11:18 | 2019-02-27 11:18 → 2019-02-26 16:18 (-1d) |  | 425.42d → 1012.92d |  |
| 209 | Redactar informe de los minimos que deben cubrir las pruebas | 2019-02-25 16:18 → 2019-02-25 11:18 | 2019-02-26 11:18 → 2019-02-25 16:18 (-1d) |  | 425.42d → 1012.92d |  |
| 210 | Diseñar las pruebas basandose en los informes | 2019-02-26 11:18 → 2019-02-25 16:18 (-1d) | 2019-02-27 11:18 → 2019-02-26 16:18 (-1d) |  | 425.42d → 1012.92d |  |
| 211 | **Diseño de pruebas de integración** | 2019-02-25 16:18 → 2019-02-25 11:18 | 2019-02-27 11:18 → 2019-02-26 16:18 (-1d) |  | 125.42d → 712.92d |  |
| 212 | **Diseño de pruebas para comunicación entre módulos** | 2019-02-25 16:18 → 2019-02-25 11:18 | 2019-02-27 11:18 → 2019-02-26 16:18 (-1d) |  | 125.42d → 712.92d |  |
| 213 | Redactar informe de los minimos que deben cubrir las pruebas | 2019-02-25 16:18 → 2019-02-25 11:18 | 2019-02-26 11:18 → 2019-02-25 16:18 (-1d) |  | 125.42d → 712.92d |  |
| 214 | Diseñar las pruebas basandose en los informes | 2019-02-26 11:18 → 2019-02-25 16:18 (-1d) | 2019-02-27 11:18 → 2019-02-26 16:18 (-1d) |  | 125.42d → 712.92d |  |
| 215 | **Diseño de pruebas de unidad** | 2019-02-27 11:18 → 2019-02-26 16:18 (-1d) | 2019-03-04 11:18 → 2019-03-01 16:18 (-3d) |  | 125.42d → 712.92d |  |
| 216 | **Diseño de pruebas de módulo de monitorización general del sistema** | 2019-02-27 11:18 → 2019-02-26 16:18 (-1d) | 2019-02-28 16:18 → 2019-02-28 11:18 |  | 125.42d → 712.92d |  |
| 217 | Redactar informe de los minimos que deben cubrir las pruebas | 2019-02-27 11:18 → 2019-02-26 16:18 (-1d) | 2019-02-27 16:18 → 2019-02-27 11:18 |  | 125.42d → 712.92d |  |
| 218 | Diseñar las pruebas basandose en los informes | 2019-02-27 16:18 → 2019-02-27 11:18 | 2019-02-28 16:18 → 2019-02-28 11:18 |  | 125.42d → 712.92d |  |
| 219 | **Diseño de pruebas de módulo de entretenimiento** | 2019-02-28 16:18 → 2019-02-28 11:18 | 2019-03-04 11:18 → 2019-03-01 16:18 (-3d) |  | 125.42d → 712.92d |  |
| 220 | Redactar informe de los minimos que deben cubrir las pruebas | 2019-02-28 16:18 → 2019-02-28 11:18 | 2019-03-01 11:18 → 2019-02-28 16:18 (-1d) |  | 125.42d → 712.92d |  |
| 221 | Diseñar las pruebas basandose en los informes | 2019-03-01 11:18 → 2019-02-28 16:18 (-1d) | 2019-03-04 11:18 → 2019-03-01 16:18 (-3d) |  | 125.42d → 712.92d |  |
| 222 | **Diseño de pruebas de módulo para muestra de datos y comandas** | 2019-02-27 11:18 → 2019-02-26 16:18 (-1d) | 2019-02-28 16:18 → 2019-02-28 11:18 |  | 125.42d → 712.92d |  |
| 223 | Redactar informe de los minimos que deben cubrir las pruebas | 2019-02-27 11:18 → 2019-02-26 16:18 (-1d) | 2019-02-27 16:18 → 2019-02-27 11:18 |  | 125.42d → 712.92d |  |
| 224 | Diseñar las pruebas basandose en los informes | 2019-02-27 16:18 → 2019-02-27 11:18 | 2019-02-28 16:18 → 2019-02-28 11:18 |  | 125.42d → 712.92d |  |
| 225 | **Diseño de pruebas de módulo de gestión de proveedores** | 2019-02-28 16:18 → 2019-02-28 11:18 | 2019-03-04 11:18 → 2019-03-01 16:18 (-3d) |  | 125.42d → 712.92d |  |
| 226 | Redactar informe de los minimos que deben cubrir las pruebas | 2019-02-28 16:18 → 2019-02-28 11:18 | 2019-03-01 11:18 → 2019-02-28 16:18 (-1d) |  | 125.42d → 712.92d |  |
| 227 | Diseñar las pruebas basandose en los informes | 2019-03-01 11:18 → 2019-02-28 16:18 (-1d) | 2019-03-04 11:18 → 2019-03-01 16:18 (-3d) |  | 125.42d → 712.92d |  |

| ID | Task | Start | Finish | Duration | Total float | Predecessors |
| --- | --- | --- | --- | --- | --- | --- |
| 228 | **Diseño de pruebas de módulo del camarero** | 2019-02-27 11:18 → 2019-02-26 16:18 (-1d) | 2019-02-28 16:18 → 2019-02-28 11:18 |  | 125.42d → 712.92d |  |
| 229 | Redactar informe de los minimos que deben cubrir las pruebas | 2019-02-27 11:18 → 2019-02-26 16:18 (-1d) | 2019-02-27 16:18 → 2019-02-27 11:18 |  | 125.42d → 712.92d |  |
| 230 | Diseñar las pruebas basandose en los informes | 2019-02-27 16:18 → 2019-02-27 11:18 | 2019-02-28 16:18 → 2019-02-28 11:18 |  | 125.42d → 712.92d |  |
| 231 | **Diseño de pruebas del módulo de cocinas/barra** | 2019-02-28 16:18 → 2019-02-28 11:18 | 2019-03-04 11:18 → 2019-03-01 16:18 (-3d) |  | 125.42d → 712.92d |  |
| 232 | Redactar informe de los minimos que deben cubrir las pruebas | 2019-02-28 16:18 → 2019-02-28 11:18 | 2019-03-01 11:18 → 2019-02-28 16:18 (-1d) |  | 125.42d → 712.92d |  |
| 233 | Diseñar las pruebas basandose en los informes | 2019-03-01 11:18 → 2019-02-28 16:18 (-1d) | 2019-03-04 11:18 → 2019-03-01 16:18 (-3d) |  | 125.42d → 712.92d |  |
| 234 | **Planificación** | 2019-03-04 11:18 → 2019-03-01 16:18 (-3d) | 2019-03-07 11:18 → 2019-03-06 16:18 (-1d) |  | 125.42d → 712.92d |  |
| 235 | **Revisión de la planificación** | 2019-03-04 11:18 → 2019-03-01 16:18 (-3d) | 2019-03-06 16:18 → 2019-03-06 11:18 |  | 125.42d → 712.92d |  |
| 236 | Revisar que la planificación se ajuste al tiempo adecuado | 2019-03-04 11:18 → 2019-03-01 16:18 (-3d) | 2019-03-05 16:18 → 2019-03-05 11:18 |  | 125.42d → 712.92d |  |
| 237 | Revisar que la planificación se ajuste adecuadamente a nuestros recursos | 2019-03-05 16:18 → 2019-03-05 11:18 | 2019-03-06 16:18 → 2019-03-06 11:18 |  | 125.42d → 712.92d |  |
| 238 | **Validación de la planificación** | 2019-03-06 16:18 → 2019-03-06 11:18 | 2019-03-07 11:18 → 2019-03-06 16:18 (-1d) |  | 125.42d → 712.92d |  |
| 239 | Reunirse con el jefe para validar la planificación revisada, incluye informe semanal | 2019-03-06 16:18 → 2019-03-06 11:18 | 2019-03-07 11:18 → 2019-03-06 16:18 (-1d) |  | 125.42d → 712.92d |  |
| 240 | **Codificación del sistema** | 2019-03-07 11:18 → 2019-03-06 16:18 (-1d) | 2019-04-05 13:48 → 2019-03-29 15:48 (-7d) | 21.19d → 16.94d | 125.42d → 712.92d |  |
| 241 | **Ambiente de desarrollo** | 2019-03-08 11:18 → 2019-03-06 16:18 (-2d) | 2019-03-18 15:18 → 2019-03-15 09:18 (-3d) | 6.38d → 6.25d | 125.42d → 712.92d | Riesgos Codificación → none |
| 242 | **Instalación del entorno de trabajo** | 2019-03-08 11:18 → 2019-03-06 16:18 (-2d) | 2019-03-12 13:18 → 2019-03-08 16:18 (-4d) | 2.12d → 2d | 125.42d → 712.92d |  |
| 243 | **Selección de tecnologías** | 2019-03-08 11:18 → 2019-03-06 16:18 (-2d) | 2019-03-08 16:18 → 2019-03-07 11:18 (-1d) |  | 125.42d → 712.92d |  |
| 244 | Seleccionar las tecnologías basandose en la fase de análisis | 2019-03-08 11:18 → 2019-03-06 16:18 (-2d) | 2019-03-08 16:18 → 2019-03-07 11:18 (-1d) |  | 125.42d → 712.92d |  |
| 245 | **Adquisición de tecnologías** | 2019-03-08 16:18 → 2019-03-07 11:18 (-1d) | 2019-03-11 11:18 → 2019-03-07 16:18 (-4d) |  | 125.42d → 712.92d |  |
| 246 | Realizar la compra de licencias de software de empresa | 2019-03-08 16:18 → 2019-03-07 11:18 (-1d) | 2019-03-11 11:18 → 2019-03-07 16:18 (-4d) |  | 125.42d → 712.92d |  |
| 247 | Comprar el hardware necesario | 2019-03-08 16:18 → 2019-03-07 11:18 (-1d) | 2019-03-11 11:18 → 2019-03-07 16:18 (-4d) |  | 125.42d → 712.92d |  |
| 248 | **Instalación en ordenadores locales** | 2019-03-11 11:18 → 2019-03-07 16:18 (-4d) | 2019-03-12 11:18 → 2019-03-08 16:18 (-4d) |  | 125.42d → 712.92d |  |
| 249 | Instalar el software adquirido en los ordenadores locales | 2019-03-11 11:18 → 2019-03-07 16:18 (-4d) | 2019-03-12 11:18 → 2019-03-08 16:18 (-4d) |  | 125.42d → 712.92d |  |
| 250 | **Configuración del entorno de trabajo** | 2019-03-12 13:18 → 2019-03-08 16:18 (-4d) | 2019-03-14 13:18 → 2019-03-12 16:18 (-2d) |  | 125.42d → 712.92d |  |
| 251 | **Ajuste de propiedades generales** | 2019-03-12 13:18 → 2019-03-08 16:18 (-4d) | 2019-03-14 13:18 → 2019-03-12 16:18 (-2d) |  | 125.42d → 712.92d |  |
| 252 | Configurar el SO y programas básico de uso general | 2019-03-12 13:18 → 2019-03-08 16:18 (-4d) | 2019-03-14 13:18 → 2019-03-12 16:18 (-2d) |  | 125.42d → 712.92d |  |
| 253 | **Ajuste de propiedades específicas** | 2019-03-12 13:18 → 2019-03-08 16:18 (-4d) | 2019-03-14 13:18 → 2019-03-12 16:18 (-2d) |  | 125.42d → 712.92d |  |
| 254 | Preparar el software específico en los equipos de personal especializado | 2019-03-12 13:18 → 2019-03-08 16:18 (-4d) | 2019-03-14 13:18 → 2019-03-12 16:18 (-2d) |  | 125.42d → 712.92d |  |
| 255 | **Revisiones de eficiencia y velocidad del entorno** | 2019-03-14 13:18 → 2019-03-12 16:18 (-2d) | 2019-03-18 15:18 → 2019-03-15 09:18 (-3d) |  | 125.42d → 712.92d |  |
| 256 | **Evaluación de eficiencia y velocidad** | 2019-03-14 13:18 → 2019-03-12 16:18 (-2d) | 2019-03-15 13:18 → 2019-03-13 16:18 (-2d) |  | 125.42d → 712.92d |  |
| 257 | Realizar evaluación de eficiencia y velocidad durante la preparación de los ordenadores | 2019-03-14 13:18 → 2019-03-12 16:18 (-2d) | 2019-03-15 13:18 → 2019-03-13 16:18 (-2d) |  | 125.42d → 712.92d |  |
| 258 | **Reconfiguración de tecnologías o herramientas** | 2019-03-15 13:18 → 2019-03-13 16:18 (-2d) | 2019-03-18 13:18 → 2019-03-14 16:18 (-4d) |  | 125.42d → 712.92d |  |
| 259 | Ajustar las configuraciones iniciales basándose en las evaluaciones | 2019-03-15 13:18 → 2019-03-13 16:18 (-2d) | 2019-03-18 13:18 → 2019-03-14 16:18 (-4d) |  | 125.42d → 712.92d |  |
| 260 | **Selección parcial de otras herramientas** | 2019-03-18 13:18 → 2019-03-14 16:18 (-4d) | 2019-03-18 15:18 → 2019-03-15 09:18 (-3d) |  | 125.42d → 712.92d |  |
| 261 | Cubrir problemas encontrados con las herramientas de terceros necesarias | 2019-03-18 13:18 → 2019-03-14 16:18 (-4d) | 2019-03-18 15:18 → 2019-03-15 09:18 (-3d) |  | 125.42d → 712.92d |  |
| 262 | **Módulos** | 2019-03-18 15:18 → 2019-03-15 09:18 (-3d) | 2019-04-01 11:18 → 2019-03-25 14:18 (-7d) | 9.62d → 6.5d | 125.42d → 712.92d |  |
| 263 | **Módulo del camarero** | 2019-03-18 15:18 → 2019-03-15 09:18 (-3d) | 2019-03-21 10:18 → 2019-03-19 14:18 (-2d) |  | 837.92d → 1112.92d |  |
| 264 | **Almacén de datos de camareros** | 2019-03-18 15:18 → 2019-03-15 09:18 (-3d) | 2019-03-21 10:18 → 2019-03-19 14:18 (-2d) |  | 125.42d → 712.92d |  |
| 265 | Preparar la BD y funciones para uso de camareros | 2019-03-18 15:18 → 2019-03-15 09:18 (-3d) | 2019-03-21 10:18 → 2019-03-19 14:18 (-2d) |  | 125.42d → 712.92d |  |
| 266 | **Función de comunicar llamadas al camarero** | 2019-03-18 15:18 → 2019-03-15 09:18 (-3d) | 2019-03-19 15:18 → 2019-03-18 09:18 (-1d) |  | 987.92d → 1262.92d |  |
| 267 | Implementar la función de llamadas al camararero mediante la interfaz diseñada | 2019-03-18 15:18 → 2019-03-15 09:18 (-3d) | 2019-03-19 15:18 → 2019-03-18 09:18 (-1d) |  | 987.92d → 1262.92d |  |
| 268 | **Función de liberar una mesa ocupada** | 2019-03-18 15:18 → 2019-03-15 09:18 (-3d) | 2019-03-19 15:18 → 2019-03-18 09:18 (-1d) |  | 987.92d → 1262.92d |  |
| 269 | Implementar la función que permite liberar mesas a camareros | 2019-03-18 15:18 → 2019-03-15 09:18 (-3d) | 2019-03-19 15:18 → 2019-03-18 09:18 (-1d) |  | 987.92d → 1262.92d |  |
| 270 | **Interfaz visual agradable** | 2019-03-18 15:18 → 2019-03-15 09:18 (-3d) | 2019-03-19 10:18 → 2019-03-15 14:18 (-4d) |  | 1037.92d → 1312.92d |  |
| 271 | Programar la interfaz visual | 2019-03-18 15:18 → 2019-03-15 09:18 (-3d) | 2019-03-19 10:18 → 2019-03-15 14:18 (-4d) |  | 1037.92d → 1312.92d |  |
| 272 | **Módulo de gestión de proveedores** | 2019-03-18 15:18 → 2019-03-15 09:18 (-3d) | 2019-03-22 10:18 → 2019-03-20 14:18 (-2d) |  | 125.42d → 712.92d |  |
| 273 | **Almacén de stock** | 2019-03-21 10:18 → 2019-03-19 14:18 (-2d) | 2019-03-22 10:18 → 2019-03-20 14:18 (-2d) |  | 125.42d → 712.92d |  |
| 274 | Programar el gestor de stock y conectarlo a la BD | 2019-03-21 10:18 → 2019-03-19 14:18 (-2d) | 2019-03-22 10:18 → 2019-03-20 14:18 (-2d) |  | 125.42d → 712.92d |  |
| 275 | **Interfaz visual agradable** | 2019-03-18 15:18 → 2019-03-15 09:18 (-3d) | 2019-03-19 10:18 → 2019-03-15 14:18 (-4d) |  | 425.42d → 1012.92d |  |
| 276 | Programar la interfaz visual | 2019-03-18 15:18 → 2019-03-15 09:18 (-3d) | 2019-03-19 10:18 → 2019-03-15 14:18 (-4d) |  | 425.42d → 1012.92d |  |
| 277 | **Módulo de cocinas/barra** | 2019-03-18 16:18 → 2019-03-15 09:18 (-3d) | 2019-03-21 09:18 → 2019-03-19 11:18 (-2d) |  | 237.92d → 837.92d | Informar al jefe del progreso semanal → none |
| 278 | **Función de cobrar con tarjeta u otros métodos** | 2019-03-18 16:18 → 2019-03-15 09:18 (-3d) | 2019-03-20 16:18 → 2019-03-19 09:18 (-1d) |  | 262.92d → 862.92d |  |
| 279 | Programar funciones de cobro | 2019-03-18 16:18 → 2019-03-15 09:18 (-3d) | 2019-03-20 11:18 → 2019-03-18 14:18 (-2d) |  | 262.92d → 862.92d |  |
| 280 | Adaptar funciones de cobro a todos los métodos de pago | 2019-03-20 11:18 → 2019-03-18 14:18 (-2d) | 2019-03-20 16:18 → 2019-03-19 09:18 (-1d) |  | 262.92d → 862.92d |  |
| 281 | **Función de proteger los datos de las transacciones** | 2019-03-18 16:18 → 2019-03-15 09:18 (-3d) | 2019-03-20 11:18 → 2019-03-18 14:18 (-2d) |  | 312.92d → 912.92d |  |
| 282 | Asegurarse de que se guardan apropiadamente los datos | 2019-03-18 16:18 → 2019-03-15 09:18 (-3d) | 2019-03-19 11:18 → 2019-03-15 14:18 (-4d) |  | 312.92d → 912.92d |  |
| 283 | Proteger mediante encriptación o restricciones de acceso los datos | 2019-03-19 11:18 → 2019-03-15 14:18 (-4d) | 2019-03-20 11:18 → 2019-03-18 14:18 (-2d) |  | 312.92d → 912.92d |  |
| 284 | **Almacén de datos de comandas** | 2019-03-18 16:18 → 2019-03-15 09:18 (-3d) | 2019-03-20 16:18 → 2019-03-19 09:18 (-1d) |  | 237.92d → 837.92d |  |
| 285 | Programar el almacen de datos de pedidos | 2019-03-18 16:18 → 2019-03-15 09:18 (-3d) | 2019-03-20 16:18 → 2019-03-19 09:18 (-1d) |  | 237.92d → 837.92d |  |
| 286 | **Almacén de datos de mesas** | 2019-03-20 16:18 → 2019-03-19 09:18 (-1d) | 2019-03-21 09:18 → 2019-03-19 11:18 (-2d) |  | 237.92d → 837.92d |  |
| 287 | Adaptar el almacén de datos de pedidos a las mesas | 2019-03-20 16:18 → 2019-03-19 09:18 (-1d) | 2019-03-21 09:18 → 2019-03-19 11:18 (-2d) |  | 237.92d → 837.92d |  |
| 288 | **Módulo para muestra de datos y comandas** | 2019-03-22 10:18 → 2019-03-20 14:18 (-2d) | 2019-03-27 10:18 → 2019-03-25 14:18 (-2d) |  | 125.42d → 712.92d |  |
| 289 | **Función de seleccionar productos y pedidos** | 2019-03-22 10:18 → 2019-03-20 14:18 (-2d) | 2019-03-26 10:18 → 2019-03-22 14:18 (-4d) |  | 125.42d → 712.92d |  |
| 290 | Implementar navegación de menú | 2019-03-22 10:18 → 2019-03-20 14:18 (-2d) | 2019-03-26 10:18 → 2019-03-22 14:18 (-4d) |  | 125.42d → 712.92d |  |
| 291 | **Función de plasmar información del pedido** | 2019-03-22 10:18 → 2019-03-20 14:18 (-2d) | 2019-03-25 10:18 → 2019-03-21 14:18 (-4d) |  | 175.42d → 762.92d |  |
| 292 | Implementar función de información de pedido | 2019-03-22 10:18 → 2019-03-20 14:18 (-2d) | 2019-03-25 10:18 → 2019-03-21 14:18 (-4d) |  | 175.42d → 762.92d |  |
| 293 | **Función de enviar la comanda** | 2019-03-22 10:18 → 2019-03-20 14:18 (-2d) | 2019-03-25 10:18 → 2019-03-21 14:18 (-4d) |  | 300.42d → 887.92d |  |
| 294 | Imlementar función de envio de comanda | 2019-03-22 10:18 → 2019-03-20 14:18 (-2d) | 2019-03-25 10:18 → 2019-03-21 14:18 (-4d) |  | 300.42d → 887.92d |  |
| 295 | **Función de reservar mesa libre** | 2019-03-22 10:18 → 2019-03-20 14:18 (-2d) | 2019-03-25 10:18 → 2019-03-21 14:18 (-4d) |  | 325.42d → 912.92d |  |
| 296 | Implementar función de reserva | 2019-03-22 10:18 → 2019-03-20 14:18 (-2d) | 2019-03-25 10:18 → 2019-03-21 14:18 (-4d) |  | 325.42d → 912.92d |  |
| 297 | **Función de ver estado de la mesa** | 2019-03-26 10:18 → 2019-03-22 14:18 (-4d) | 2019-03-27 10:18 → 2019-03-25 14:18 (-2d) |  | 125.42d → 712.92d |  |

| ID | Task | Start | Finish | Duration | Total float | Predecessors | Other |
| --- | --- | --- | --- | --- | --- | --- | --- |
| 298 | Implementar función de estado | 2019-03-26 10:18 → 2019-03-22 14:18 (-4d) | 2019-03-27 10:18 → 2019-03-25 14:18 (-2d) |  | 125.42d → 712.92d |  |  |
| 299 | **Función de informar al cliente** | 2019-03-25 10:18 → 2019-03-21 14:18 (-4d) | 2019-03-26 15:18 → 2019-03-25 09:18 (-1d) |  | 175.42d → 762.92d |  |  |
| 300 | Adaptar función de comunicación para el cliente | 2019-03-25 10:18 → 2019-03-21 14:18 (-4d) | 2019-03-26 15:18 → 2019-03-25 09:18 (-1d) |  | 175.42d → 762.92d |  |  |
| 301 | **Función de códigos QR** | 2019-03-25 10:18 → 2019-03-21 14:18 (-4d) | 2019-03-25 13:18 → 2019-03-21 16:18 (-4d) |  | 300.42d → 887.92d |  |  |
| 302 | Adaptar el lector QR a nuestros programas | 2019-03-25 10:18 → 2019-03-21 14:18 (-4d) | 2019-03-25 13:18 → 2019-03-21 16:18 (-4d) |  | 300.42d → 887.92d |  |  |
| 303 | **Interfaz visual agradable** | 2019-03-22 10:18 → 2019-03-20 14:18 (-2d) | 2019-03-22 13:18 → 2019-03-20 16:18 (-2d) |  | 400.42d → 987.92d |  |  |
| 304 | Programar la interfaz visual | 2019-03-22 10:18 → 2019-03-20 14:18 (-2d) | 2019-03-22 13:18 → 2019-03-20 16:18 (-2d) |  | 400.42d → 987.92d |  |  |
| 305 | **Módulo de entretenimiento** | 2019-03-27 11:18 → 2019-03-15 09:18 (-12d) | 2019-03-29 11:18 → 2019-03-19 09:18 (-10d) |  | 125.42d → 1062.92d | Informar al jefe de progreso semanal → none |  |
| 306 | **Función de ofrecer entretenimiento al cliente** | 2019-03-27 11:18 → 2019-03-15 09:18 (-12d) | 2019-03-27 13:18 → 2019-03-15 10:18 (-12d) |  | 162.92d → 1100.42d |  |  |
| 307 | Asegurar que los programas adecuados están instalados y son accesibles | 2019-03-27 11:18 → 2019-03-15 09:18 (-12d) | 2019-03-27 13:18 → 2019-03-15 10:18 (-12d) |  | 162.92d → 1100.42d |  |  |
| 308 | **Función de interactuar con el local** | 2019-03-27 11:18 → 2019-03-15 09:18 (-12d) | 2019-03-29 11:18 → 2019-03-19 09:18 (-10d) |  | 125.42d → 1062.92d |  |  |
| 309 | Preparar conexiones visuales de camaras | 2019-03-27 13:18 → 2019-03-15 10:18 (-12d) | 2019-03-28 08:18 → 2019-03-15 15:18 (-13d) |  | 162.92d → 1100.42d |  |  |
| 310 | Preparar lista de música | 2019-03-27 11:18 → 2019-03-15 09:18 (-12d) | 2019-03-27 11:48 → 2019-03-15 09:48 (-12d) |  | 219.17d → 1156.67d |  |  |
| 311 | Preparar programa de control de interacción | 2019-03-27 11:18 → 2019-03-15 09:18 (-12d) | 2019-03-28 11:18 → 2019-03-18 09:18 (-10d) |  | 125.42d → 1062.92d |  |  |
| 312 | Completar programa de control de interacción con los módulos | 2019-03-28 11:18 → 2019-03-18 09:18 (-10d) | 2019-03-29 11:18 → 2019-03-19 09:18 (-10d) |  | 125.42d → 1062.92d |  |  |
| 313 | **Interfaz visual agradable** | 2019-03-27 11:18 → 2019-03-15 09:18 (-12d) | 2019-03-27 16:18 → 2019-03-15 14:18 (-12d) |  | 275.42d → 1212.92d |  |  |
| 314 | Programar interfaz visual | 2019-03-27 11:18 → 2019-03-15 09:18 (-12d) | 2019-03-27 16:18 → 2019-03-15 14:18 (-12d) |  | 275.42d → 1212.92d |  |  |
| 315 | **Módulo de monitorización general y gerencia** | 2019-03-29 11:18 → 2019-03-19 09:18 (-10d) | 2019-04-01 11:18 → 2019-03-20 09:18 (-12d) |  | 125.42d → 1062.92d |  |  |
| 316 | **Almacén de datos legales** | 2019-03-29 11:18 → 2019-03-19 09:18 (-10d) | 2019-04-01 11:18 → 2019-03-20 09:18 (-12d) |  | 125.42d → 1062.92d |  |  |
| 317 | Preparar BD y gestión de BD | 2019-03-29 11:18 → 2019-03-19 09:18 (-10d) | 2019-04-01 11:18 → 2019-03-20 09:18 (-12d) |  | 125.42d → 1062.92d |  |  |
| 318 | Revisar cumplimiento de requerimientos legales de la BD | 2019-03-29 11:18 → 2019-03-19 09:18 (-10d) | 2019-03-29 14:18 → 2019-03-19 11:18 (-10d) |  | 200.42d → 1137.92d |  |  |
| 319 | **Almacén de nóminas** | 2019-03-29 11:18 → 2019-03-19 09:18 (-10d) | 2019-04-01 11:18 → 2019-03-20 09:18 (-12d) |  | 125.42d → 1062.92d |  |  |
| 320 | Preparar BD y gestión de BD para nóminas | 2019-03-29 11:18 → 2019-03-19 09:18 (-10d) | 2019-04-01 11:18 → 2019-03-20 09:18 (-12d) |  | 125.42d → 1062.92d |  |  |
| 321 | Automatizar las nóminas y su almacenamiento de datos | 2019-03-29 11:18 → 2019-03-19 09:18 (-10d) | 2019-04-01 11:18 → 2019-03-20 09:18 (-12d) |  | 125.42d → 1062.92d |  |  |
| 322 | **Interfaz visual agrdable** | 2019-03-29 11:18 → 2019-03-19 09:18 (-10d) | 2019-03-29 16:18 → 2019-03-19 14:18 (-10d) |  | 175.42d → 1112.92d |  |  |
| 323 | Programar la interfaz visual | 2019-03-29 11:18 → 2019-03-19 09:18 (-10d) | 2019-03-29 16:18 → 2019-03-19 14:18 (-10d) |  | 175.42d → 1112.92d |  |  |
| 324 | **Depuración** | 2019-04-01 11:18 → 2019-03-25 14:18 (-7d) | 2019-04-05 13:48 → 2019-03-29 15:48 (-7d) |  | 125.42d → 712.92d |  |  |
| 325 | **Localización de defectos** | 2019-04-01 11:18 → 2019-03-25 14:18 (-7d) | 2019-04-02 08:48 → 2019-03-26 10:48 (-7d) |  | 125.42d → 712.92d |  |  |
| 326 | **Listado de defectos** | 2019-04-01 11:18 → 2019-03-25 14:18 (-7d) | 2019-04-01 16:18 → 2019-03-26 09:18 (-6d) |  | 125.42d → 712.92d |  |  |
| 327 | Realizar un listado intensivo de defectos encontrados en la codificación | 2019-04-01 11:18 → 2019-03-25 14:18 (-7d) | 2019-04-01 16:18 → 2019-03-26 09:18 (-6d) |  | 125.42d → 712.92d |  |  |
| 328 | **Ubicación de defectos** | 2019-04-01 16:18 → 2019-03-26 09:18 (-6d) | 2019-04-02 08:48 → 2019-03-26 10:48 (-7d) |  | 125.42d → 712.92d |  |  |
| 329 | Completar listado con posiciones exactas (linea, programa, módulo, etc) de los errores | 2019-04-01 16:18 → 2019-03-26 09:18 (-6d) | 2019-04-01 16:48 → 2019-03-26 09:48 (-6d) |  | 125.42d → 712.92d |  |  |
| 330 | Incluir en listado posibles relaciones del error con otro módulo o trozo de código | 2019-04-01 16:48 → 2019-03-26 09:48 (-6d) | 2019-04-02 08:48 → 2019-03-26 10:48 (-7d) |  | 125.42d → 712.92d |  |  |
| 331 | **Corrección de defectos** | 2019-04-02 08:48 → 2019-03-26 10:48 (-7d) | 2019-04-05 13:48 → 2019-03-29 15:48 (-7d) |  | 125.42d → 712.92d |  |  |
| 332 | **Modificaciones necesarias** | 2019-04-02 08:48 → 2019-03-26 10:48 (-7d) | 2019-04-04 13:48 → 2019-03-28 15:48 (-7d) |  | 125.42d → 712.92d |  |  |
| 333 | Implementar las modificaciones y arreglos de la codificación | 2019-04-02 08:48 → 2019-03-26 10:48 (-7d) | 2019-04-04 13:48 → 2019-03-28 15:48 (-7d) |  | 125.42d → 712.92d |  |  |
| 334 | **Revisión de corrección del defecto** | 2019-04-04 13:48 → 2019-03-28 15:48 (-7d) | 2019-04-05 13:48 → 2019-03-29 15:48 (-7d) |  | 125.42d → 712.92d |  |  |
| 335 | Revisar todos los errores del listado para comprobar que han sido arreglados correctamente | 2019-04-04 13:48 → 2019-03-28 15:48 (-7d) | 2019-04-05 13:48 → 2019-03-29 15:48 (-7d) |  | 125.42d → 712.92d |  |  |
| 336 | **Pruebas del sistema y sus componentes** | 2019-04-05 13:48 → 2019-03-29 15:48 (-7d) | 2019-04-29 14:58 → 2019-04-19 15:58 (-10d) | 16.15d → 15.02d | 125.42d → 712.92d |  |  |
| 337 | **Planificación de pruebas** | 2019-04-08 14:48 → 2019-03-29 15:48 (-10d) | 2019-04-11 09:48 → 2019-04-03 10:48 (-8d) |  | 125.42d → 712.92d | Informar al jefe del progreso semanal → none |  |
| 338 | **Pruebas de aceptación** | 2019-04-08 14:48 → 2019-03-29 15:48 (-10d) | 2019-04-09 09:48 → 2019-04-01 10:48 (-8d) |  | 125.42d → 712.92d |  |  |
| 339 | **Pruebas para los gerentes de local** | 2019-04-08 14:48 → 2019-03-29 15:48 (-10d) | 2019-04-09 09:48 → 2019-04-01 10:48 (-8d) |  | 125.42d → 712.92d |  |  |
| 340 | Planear las pruebas basándose en su diseño | 2019-04-08 14:48 → 2019-03-29 15:48 (-10d) | 2019-04-09 09:48 → 2019-04-01 10:48 (-8d) |  | 125.42d → 712.92d |  | resources Programador Senior → Programador Junior1 |
| 341 | **Pruebas sobre el personal de local** | 2019-04-08 14:48 → 2019-03-29 15:48 (-10d) | 2019-04-09 09:48 → 2019-04-01 10:48 (-8d) |  | 125.42d → 712.92d |  |  |
| 342 | Planear las pruebas basándose en su diseño | 2019-04-08 14:48 → 2019-03-29 15:48 (-10d) | 2019-04-09 09:48 → 2019-04-01 10:48 (-8d) |  | 125.42d → 712.92d |  | resources Analista-Diseñador → Programador Junior2 |
| 343 | **Pruebas sobre los usuarios del local** | 2019-04-08 14:48 → 2019-03-29 15:48 (-10d) | 2019-04-09 09:48 → 2019-04-01 10:48 (-8d) |  | 125.42d → 712.92d |  |  |
| 344 | Planear las pruebas basándose en su diseño | 2019-04-09 09:48 → 2019-03-29 15:48 (-11d) | 2019-04-09 14:48 → 2019-04-01 10:48 (-8d) |  | 125.42d → 712.92d |  | resources Programador Junior1 → Programador Senior |
| 345 | **Pruebas para los proveedores** | 2019-04-08 14:48 → 2019-03-29 15:48 (-10d) | 2019-04-09 09:48 → 2019-04-01 10:48 (-8d) |  | 125.42d → 712.92d |  |  |
| 346 | Planear las pruebas basándose en su diseño | 2019-04-09 09:48 → 2019-03-29 15:48 (-11d) | 2019-04-09 14:48 → 2019-04-01 10:48 (-8d) |  | 125.42d → 712.92d |  | resources Programador Junior2 → Analista-Diseñador |
| 347 | **Pruebas del sistema** | 2019-04-09 09:48 → 2019-04-01 10:48 (-8d) | 2019-04-09 14:48 → 2019-04-01 15:48 (-8d) |  | 125.42d → 712.92d |  |  |
| 348 | **Pruebas para comunicación con PayPal** | 2019-04-09 09:48 → 2019-04-01 10:48 (-8d) | 2019-04-09 14:48 → 2019-04-01 15:48 (-8d) |  | 125.42d → 712.92d |  |  |
| 349 | Planear las pruebas basándose en su diseño | 2019-04-09 09:48 → 2019-04-01 10:48 (-8d) | 2019-04-09 14:48 → 2019-04-01 15:48 (-8d) |  | 125.42d → 712.92d |  | resources Programador Senior → Programador Junior1 |
| 350 | **Pruebas para comunicación con terminales TPV** | 2019-04-09 09:48 → 2019-04-01 10:48 (-8d) | 2019-04-09 14:48 → 2019-04-01 15:48 (-8d) |  | 125.42d → 712.92d |  |  |
| 351 | Planear las pruebas basándose en su diseño | 2019-04-08 14:48 → 2019-04-01 10:48 (-7d) | 2019-04-09 09:48 → 2019-04-01 15:48 (-8d) |  | 125.42d → 712.92d |  | resources Programador Junior1 → Programador Junior2 |
| 352 | **Pruebas para comunicación con tablets de local** | 2019-04-09 09:48 → 2019-04-01 10:48 (-8d) | 2019-04-09 14:48 → 2019-04-01 15:48 (-8d) |  | 125.42d → 712.92d |  |  |
| 353 | Planear las pruebas basándose en su diseño | 2019-04-08 14:48 → 2019-04-01 10:48 (-7d) | 2019-04-09 09:48 → 2019-04-01 15:48 (-8d) |  | 125.42d → 712.92d |  | resources Programador Junior2 → Programador Senior |
| 354 | **Pruebas de integración** | 2019-04-09 14:48 → 2019-04-01 15:48 (-8d) | 2019-04-10 09:48 → 2019-04-02 10:48 (-8d) |  | 125.42d → 712.92d |  |  |
| 355 | **Pruebas para comunicación entre módulos** | 2019-04-09 14:48 → 2019-04-01 15:48 (-8d) | 2019-04-10 09:48 → 2019-04-02 10:48 (-8d) |  | 125.42d → 712.92d |  |  |
| 356 | Planear las pruebas basándose en su diseño | 2019-04-10 09:48 → 2019-04-01 15:48 (-9d) | 2019-04-10 14:48 → 2019-04-02 10:48 (-8d) |  | 125.42d → 712.92d |  | resources Programador Junior1 → Programador Senior |
| 357 | **Pruebas de unidad** | 2019-04-10 09:48 → 2019-04-02 10:48 (-8d) | 2019-04-11 09:48 → 2019-04-03 10:48 (-8d) |  | 125.42d → 712.92d |  |  |
| 358 | **Pruebas de módulo de monitorización general del sistema** | 2019-04-10 09:48 → 2019-04-02 10:48 (-8d) | 2019-04-10 14:48 → 2019-04-02 15:48 (-8d) |  | 125.42d → 712.92d |  |  |
| 359 | Planear las pruebas basándose en su diseño | 2019-04-10 09:48 → 2019-04-02 10:48 (-8d) | 2019-04-10 14:48 → 2019-04-02 15:48 (-8d) |  | 125.42d → 712.92d |  | resources Programador Junior2 → Programador Junior1 |
| 360 | **Pruebas de módulo de entretenimiento** | 2019-04-10 09:48 → 2019-04-02 10:48 (-8d) | 2019-04-10 14:48 → 2019-04-02 15:48 (-8d) |  | 125.42d → 712.92d |  |  |
| 361 | Planear las pruebas basándose en su diseño | 2019-04-10 09:48 → 2019-04-02 10:48 (-8d) | 2019-04-10 14:48 → 2019-04-02 15:48 (-8d) |  | 125.42d → 712.92d |  | resources Programador Senior → Programador Junior2 |
| 362 | **Pruebas de módulo para muestra de datos y comandas** | 2019-04-10 09:48 → 2019-04-02 10:48 (-8d) | 2019-04-10 14:48 → 2019-04-02 15:48 (-8d) |  | 125.42d → 712.92d |  |  |
| 363 | Planear las pruebas basándose en su diseño | 2019-04-10 14:48 → 2019-04-02 10:48 (-8d) | 2019-04-11 09:48 → 2019-04-02 15:48 (-9d) |  | 125.42d → 712.92d |  | resources Programador Junior1 → Programador Senior |
| 364 | **Pruebas de módulo de gestión de proveedores** | 2019-04-10 14:48 → 2019-04-02 15:48 (-8d) | 2019-04-11 09:48 → 2019-04-03 10:48 (-8d) |  | 125.42d → 712.92d |  |  |
| 365 | Planear las pruebas basándose en su diseño | 2019-04-10 14:48 → 2019-04-02 15:48 (-8d) | 2019-04-11 09:48 → 2019-04-03 10:48 (-8d) |  | 125.42d → 712.92d |  | resources Programador Junior2 → Programador Junior1 |
| 366 | **Pruebas de módulo del camarero** | 2019-04-10 14:48 → 2019-04-02 15:48 (-8d) | 2019-04-11 09:48 → 2019-04-03 10:48 (-8d) |  | 125.42d → 712.92d |  |  |
| 367 | Planear las pruebas basándose en su diseño | 2019-04-09 14:48 → 2019-04-02 15:48 (-7d) | 2019-04-10 09:48 → 2019-04-03 10:48 (-7d) |  | 125.42d → 712.92d |  | resources Programador Senior → Programador Junior2 |

| ID | Task | Start | Finish | Total float |
| --- | --- | --- | --- | --- |
| 368 | **Pruebas del módulo de cocinas/barra** | 2019-04-10 14:48 → 2019-04-02 15:48 (-8d) | 2019-04-11 09:48 → 2019-04-03 10:48 (-8d) | 125.42d → 712.92d |
| 369 | Planear las pruebas basándose en su diseño | 2019-04-10 14:48 → 2019-04-02 15:48 (-8d) | 2019-04-11 09:48 → 2019-04-03 10:48 (-8d) | 125.42d → 712.92d |
| 370 | **Ejecución de pruebas** | 2019-04-11 09:48 → 2019-04-03 10:48 (-8d) | 2019-04-25 09:48 → 2019-04-17 10:48 (-8d) | 125.42d → 712.92d |
| 371 | **Ejecución de casos de prueba** | 2019-04-11 09:48 → 2019-04-03 10:48 (-8d) | 2019-04-16 09:48 → 2019-04-08 10:48 (-8d) | 125.42d → 712.92d |
| 372 | **Ejecución de conjunto de casos de unidad** | 2019-04-11 09:48 → 2019-04-03 10:48 (-8d) | 2019-04-15 09:48 → 2019-04-05 10:48 (-10d) | 225.42d → 812.92d |
| 373 | Dividir los equipos para ejecutar las pruebas de cada unidad | 2019-04-11 09:48 → 2019-04-03 10:48 (-8d) | 2019-04-11 14:48 → 2019-04-03 15:48 (-8d) | 125.42d → 712.92d |
| 374 | Ejecutar las pruebas de cada módulo individual | 2019-04-11 09:48 → 2019-04-03 10:48 (-8d) | 2019-04-15 09:48 → 2019-04-05 10:48 (-10d) | 225.42d → 812.92d |
| 375 | **Ejecución de conjunto de casos de integración** | 2019-04-11 09:48 → 2019-04-03 10:48 (-8d) | 2019-04-15 14:48 → 2019-04-05 15:48 (-10d) | 175.42d → 762.92d |
| 376 | Ejecutar las pruebas para comprobar que la integración de módulos no tiene fallos | 2019-04-11 09:48 → 2019-04-03 10:48 (-8d) | 2019-04-15 14:48 → 2019-04-05 15:48 (-10d) | 175.42d → 762.92d |
| 377 | **Ejecución de conjunto de casos de sistema** | 2019-04-11 09:48 → 2019-04-03 10:48 (-8d) | 2019-04-15 14:48 → 2019-04-05 15:48 (-10d) | 175.42d → 762.92d |
| 378 | Ejecutar las pruebas de sistema | 2019-04-11 09:48 → 2019-04-03 10:48 (-8d) | 2019-04-15 14:48 → 2019-04-05 15:48 (-10d) | 175.42d → 762.92d |
| 379 | **Ejecución de conjunto de casos de validación** | 2019-04-11 14:48 → 2019-04-03 15:48 (-8d) | 2019-04-16 09:48 → 2019-04-08 10:48 (-8d) | 125.42d → 712.92d |
| 380 | Ejecutar las pruebas de validación del programa | 2019-04-11 14:48 → 2019-04-03 15:48 (-8d) | 2019-04-16 09:48 → 2019-04-08 10:48 (-8d) | 125.42d → 712.92d |
| 381 | **Listado de errores** | 2019-04-16 09:48 → 2019-04-08 10:48 (-8d) | 2019-04-18 14:48 → 2019-04-10 15:48 (-8d) | 125.42d → 712.92d |
| 382 | **Enumeración de errores graves** | 2019-04-16 09:48 → 2019-04-08 10:48 (-8d) | 2019-04-18 09:48 → 2019-04-10 10:48 (-8d) | 125.42d → 712.92d |
| 383 | Crear un listado con los errores que se consideran más graves | 2019-04-16 09:48 → 2019-04-08 10:48 (-8d) | 2019-04-16 14:48 → 2019-04-08 15:48 (-8d) | 125.42d → 712.92d |
| 384 | Analizar cuales de los errores son tan graves como se estima y cuales pueden desestimarse | 2019-04-16 14:48 → 2019-04-08 15:48 (-8d) | 2019-04-18 09:48 → 2019-04-10 10:48 (-8d) | 125.42d → 712.92d |
| 385 | **Desestimación de errores leves o de otro tipo** | 2019-04-18 09:48 → 2019-04-10 10:48 (-8d) | 2019-04-18 14:48 → 2019-04-10 15:48 (-8d) | 125.42d → 712.92d |
| 386 | Analizar los errores leves para observar que alguna combinación de estos no cause problemas graves | 2019-04-18 09:48 → 2019-04-10 10:48 (-8d) | 2019-04-18 14:48 → 2019-04-10 15:48 (-8d) | 125.42d → 712.92d |
| 387 | **Corrección de errores** | 2019-04-18 14:48 → 2019-04-10 15:48 (-8d) | 2019-04-23 09:48 → 2019-04-15 10:48 (-8d) | 125.42d → 712.92d |
| 388 | **Depuración de errores** | 2019-04-18 14:48 → 2019-04-10 15:48 (-8d) | 2019-04-22 14:48 → 2019-04-12 15:48 (-10d) | 125.42d → 712.92d |
| 389 | Arreglar todos los errores graves | 2019-04-18 14:48 → 2019-04-10 15:48 (-8d) | 2019-04-22 14:48 → 2019-04-12 15:48 (-10d) | 125.42d → 712.92d |
| 390 | Arreglar los errores leves que causen errores graves como conjunto | 2019-04-18 14:48 → 2019-04-10 15:48 (-8d) | 2019-04-22 14:48 → 2019-04-12 15:48 (-10d) | 125.42d → 712.92d |
| 391 | **Verificación de corrección** | 2019-04-22 14:48 → 2019-04-12 15:48 (-10d) | 2019-04-23 09:48 → 2019-04-15 10:48 (-8d) | 125.42d → 712.92d |
| 392 | Comprobar que las correcciones han sido realizadas sin causar mas errores | 2019-04-22 14:48 → 2019-04-12 15:48 (-10d) | 2019-04-23 09:48 → 2019-04-15 10:48 (-8d) | 125.42d → 712.92d |
| 393 | **Verificación de terminación** | 2019-04-23 09:48 → 2019-04-15 10:48 (-8d) | 2019-04-25 09:48 → 2019-04-17 10:48 (-8d) | 125.42d → 712.92d |
| 394 | **Revisión de listado de errores** | 2019-04-23 09:48 → 2019-04-15 10:48 (-8d) | 2019-04-24 14:48 → 2019-04-16 15:48 (-8d) | 125.42d → 712.92d |
| 395 | Revisar el listado de errores e informe de correcciones | 2019-04-23 09:48 → 2019-04-15 10:48 (-8d) | 2019-04-24 14:48 → 2019-04-16 15:48 (-8d) | 125.42d → 712.92d |
| 396 | **Aprobación formal de finalización** | 2019-04-24 14:48 → 2019-04-16 15:48 (-8d) | 2019-04-25 09:48 → 2019-04-17 10:48 (-8d) | 125.42d → 712.92d |
| 397 | Reunirse con el encargado para formalizar la validación e informar del progreso semanal | 2019-04-24 14:48 → 2019-04-16 15:48 (-8d) | 2019-04-25 09:48 → 2019-04-17 10:48 (-8d) | 125.42d → 712.92d |
| 398 | **Análisis de errores y evaluación** | 2019-04-25 09:48 → 2019-04-17 10:48 (-8d) | 2019-04-29 14:58 → 2019-04-19 15:58 (-10d) | 125.42d → 712.92d |
| 399 | **Creación de documento de errores** | 2019-04-25 09:48 → 2019-04-17 10:48 (-8d) | 2019-04-26 09:48 → 2019-04-18 10:48 (-8d) | 125.42d → 712.92d |
| 400 | Redactar documento de errores | 2019-04-25 09:48 → 2019-04-17 10:48 (-8d) | 2019-04-26 09:48 → 2019-04-18 10:48 (-8d) | 125.42d → 712.92d |
| 401 | **Catalogación de errores** | 2019-04-25 09:48 → 2019-04-17 10:48 (-8d) | 2019-04-26 09:48 → 2019-04-18 10:48 (-8d) | 125.42d → 712.92d |
| 402 | Catalogar errores basandose en el análisis realizado en la ejecución de pruebas | 2019-04-25 09:48 → 2019-04-17 10:48 (-8d) | 2019-04-26 09:48 → 2019-04-18 10:48 (-8d) | 125.42d → 712.92d |
| 403 | **Realización de análisis estadísticos** | 2019-04-26 09:48 → 2019-04-18 10:48 (-8d) | 2019-04-29 14:48 → 2019-04-19 15:48 (-10d) | 125.42d → 712.92d |
| 404 | Realizar análisis estadístico de errores | 2019-04-26 09:48 → 2019-04-18 10:48 (-8d) | 2019-04-29 09:48 → 2019-04-19 10:48 (-10d) | 125.42d → 712.92d |
| 405 | Redactar informe estadístico | 2019-04-29 09:48 → 2019-04-19 10:48 (-10d) | 2019-04-29 14:48 → 2019-04-19 15:48 (-10d) | 125.42d → 712.92d |
| 406 | **Adición al archivo de proyectos de la empresa** | 2019-04-29 14:48 → 2019-04-19 15:48 (-10d) | 2019-04-29 14:58 → 2019-04-19 15:58 (-10d) | 125.42d → 712.92d |
| 407 | Añadir los documentos creados al archivo de la empresa | 2019-04-29 14:48 → 2019-04-19 15:48 (-10d) | 2019-04-29 14:58 → 2019-04-19 15:58 (-10d) | 125.42d → 712.92d |

## Version 3 (saved 2018-12-17)

Note of the change: gant sobreasignaciones resueltas

Last finish 2019-04-30 → 2019-05-02 (+2d).

Removed: 54 Control de Comunicación; 55 Reuniones de resolución; 56 Realización de informes

Changed:

| ID | Task | Start | Finish | Duration | Total float | Predecessors | Other |
| --- | --- | --- | --- | --- | --- | --- | --- |
| 1 | **Proyecto de sistema para bar tecnológico** |  | 2019-04-30 17:00 → 2019-05-02 14:39 (+2d) | 85.88d? → 87.58d? |  |  |  |
| 2 | **Tareas de Gestión** |  | 2019-04-30 17:00 → 2019-05-01 08:59 (+1d) | 85.88d? → 86d? | none → 158.39d |  |  |
| 9 | Plan de comportamiento | 2019-01-02 09:30 → 2019-01-01 09:00 (-1d) | 2019-01-02 14:30 → 2019-01-01 14:00 (-1d) |  | 712.92d → 2977.66d |  |  |
| 10 | Crear plan de errores y problemas | 2019-01-02 14:30 → 2019-01-01 14:00 (-1d) | 2019-01-02 16:30 → 2019-01-01 16:00 (-1d) |  | 712.92d → 2977.66d |  |  |
| 12 | **Tareas de comunicación** |  | 2019-04-30 09:29 → 2019-04-30 09:59 | 85.06d → 85.12d | 81.3d → 245.89d |  |  |
| 15 | Reunión equipo 2 |  |  |  | 8081.3d → 8252.08d | none → 63 |  |
| 17 | Reunión equipo 4 | 2019-01-22 09:00 → 2019-01-22 09:29 | 2019-01-22 09:29 → 2019-01-22 09:59 |  | 7081.3d → 2818.96d | none → 97 |  |
| 19 | Reunión equipo 6 |  |  |  | 6081.3d → 6252.08d | none → 159 |  |
| 20 | Reunión equipo 7 |  |  |  | 5581.3d → 268.85d | none → 170 |  |
| 21 | Reunión equipo 8 |  |  |  | 5081.3d → 250.05d | none → 181 |  |
| 23 | Reunión equipo 10 | 2019-03-05 09:00 → 2019-03-05 13:00 | 2019-03-05 09:29 → 2019-03-05 13:30 |  | 4081.3d → 250.05d | none → 218 |  |
| 25 | Reunion equipo 12 | 2019-03-19 09:00 → 2019-03-19 14:29 | 2019-03-19 09:29 → 2019-03-19 14:59 |  | 3081.3d → 3195.89d | none → 249 |  |
| 27 | Reunión equipo 14 | 2019-04-02 09:00 → 2019-04-02 14:29 | 2019-04-02 09:29 → 2019-04-02 14:59 |  | 2081.3d → 12.66d | none → 287 |  |
| 28 | Reunión equipo 15 | 2019-04-09 09:00 → 2019-04-10 11:29 (+1d) | 2019-04-09 09:29 → 2019-04-10 11:59 (+1d) |  | 1581.3d → 12.66d | none → 330 |  |
| 29 | Reunión equipo 16 | 2019-04-16 09:00 → 2019-04-16 11:59 | 2019-04-16 09:29 → 2019-04-16 13:29 |  | 1081.3d → 1214.74d | none → 370 |  |
| 30 | Reunión de equipo 17 | 2019-04-23 09:00 → 2019-04-23 11:59 | 2019-04-23 09:29 → 2019-04-23 13:29 |  | 581.3d → 12.66d | none → 383 |  |
| 32 | **Reuniones clientes** |  | 2019-04-30 09:29 → 2019-04-30 09:59 | 64.06d → 64.12d | 81.3d → 245.89d |  |  |
| 34 | Reunión cliente 2 |  |  |  | 4381.3d → 4552.08d | none → 197 |  |
| 36 | Reunión cliente 4 | 2019-04-30 09:00 → 2019-04-30 09:29 | 2019-04-30 09:29 → 2019-04-30 09:59 |  | 81.3d → 158.39d | none → 31 |  |
| 37 | **Tareas de gestión de Costes** | 2019-01-15 09:00 → 2019-01-15 09:29 | 2019-04-30 17:00 → 2019-05-01 08:59 (+1d) | 75.88d? → 75.94d? | none → 158.39d |  |  |
| 38 | Control de costes 1 | 2019-01-15 09:00 → 2019-01-15 09:29 | 2019-01-15 17:00 → 2019-01-16 08:29 (+1d) |  | 7500d → 7664.58d | none → 16 |  |
| 43 | Control de costes 6 | 2019-03-30 09:00 → 2019-04-01 11:40 (+2d) | 2019-04-01 16:00 → 2019-04-02 10:40 (+1d) |  | 2112.5d → 2237.45d | none → 6 |  |
| 45 | Control de costes 8 | 2019-04-30 09:00 → 2019-04-30 09:59 | 2019-04-30 17:00 → 2019-05-01 08:59 (+1d) |  | none → 158.39d | none → 36 |  |
| 46 | Informe de costes 1 | 2019-01-15 09:00 → 2019-01-15 09:29 | 2019-01-15 17:00 → 2019-01-16 08:29 (+1d) |  | 7500d → 7664.58d | none → 16 |  |
| 50 | Informe de costes 5 | 2019-03-15 09:00 → 2019-03-16 09:00 (+1d) | 2019-03-15 17:00 → 2019-03-18 16:00 (+3d) |  | 3200d → 3283.28d |  | constraint start no earlier than 2019-03-15 09:00 → start no earlier than 2019-03-16 09:00 |
| 51 | Informe de costes 6 | 2019-03-30 09:00 → 2019-04-01 11:40 (+2d) | 2019-04-01 16:00 → 2019-04-02 10:40 (+1d) |  | 2112.5d → 2237.45d | none → 6 |  |
| 53 | Informe de costes 8 | 2019-04-30 09:00 → 2019-04-30 09:59 | 2019-04-30 17:00 → 2019-05-01 08:59 (+1d) |  | none → 158.39d | none → 36 |  |
| 54 | **Análisis de requisitos del sistema** | 2019-01-02 16:30 → 2019-01-01 16:00 (-1d) | 2019-01-28 13:18 → 2019-01-29 08:59 (+1d) | 17.6d → 19.25d | 712.92d → 2818.96d |  |  |
| 55 | **Identificación de las necesidades del cliente** | 2019-01-02 16:30 → 2019-01-01 16:00 (-1d) | 2019-01-09 08:18 → 2019-01-07 16:48 (-2d) |  | 712.92d → 2977.66d |  |  |
| 56 | **Especificación informal del sistema** | 2019-01-02 16:30 → 2019-01-01 16:00 (-1d) | 2019-01-09 08:18 → 2019-01-07 16:48 (-2d) |  | 712.92d → 2977.66d |  |  |
| 57 | **Técnica de obtención de requisitos** | 2019-01-02 16:30 → 2019-01-01 16:00 (-1d) | 2019-01-07 16:30 → 2019-01-04 16:00 (-3d) |  | 712.92d → 2977.66d |  |  |
| 58 | Preparar preguntas y temáticas para entrevista inicial | 2019-01-02 16:30 → 2019-01-01 16:00 (-1d) | 2019-01-03 11:30 → 2019-01-02 11:00 (-1d) |  | 712.92d → 2977.66d |  |  |
| 59 | Entrevistar jefe de proyecto | 2019-01-03 11:30 → 2019-01-02 11:00 (-1d) | 2019-01-03 16:30 → 2019-01-02 16:00 (-1d) |  | 712.92d → 2977.66d |  |  |
| 60 | Cuestionar futuros empleados para conocer sus necesidades | 2019-01-03 16:30 → 2019-01-02 16:00 (-1d) | 2019-01-04 16:30 → 2019-01-03 16:00 (-1d) |  | 712.92d → 2977.66d |  |  |
| 61 | Cuestionar posibles clientes para conocer sus preferencias | 2019-01-04 16:30 → 2019-01-03 16:00 (-1d) | 2019-01-07 16:30 → 2019-01-04 16:00 (-3d) |  | 712.92d → 2977.66d |  |  |
| 62 | **Determinación informal de aspectos del sistema** | 2019-01-07 16:30 → 2019-01-04 16:00 (-3d) | 2019-01-09 08:18 → 2019-01-07 16:48 (-2d) |  | 712.92d → 2977.66d |  |  |
| 63 | Determinar necesidades de jefe de proyectos | 2019-01-07 16:30 → 2019-01-04 16:00 (-3d) | 2019-01-08 11:30 → 2019-01-07 11:00 (-1d) |  | 712.92d → 2977.66d |  |  |
| 64 | **Determinación informal de funciones** | 2019-01-08 11:30 → 2019-01-07 11:00 (-1d) | 2019-01-09 08:18 → 2019-01-07 16:48 (-2d) |  | 712.92d → 2977.66d |  |  |
| 65 | Cuestionar futuros empleados para conocer sus necesidades | 2019-01-08 15:42 → 2019-01-07 11:00 (-1d) | 2019-01-08 16:30 → 2019-01-07 11:48 (-1d) |  | 712.92d → 2977.66d | 77 → 15 |  |
| 66 | Cuestionar posibles clientes para conocer sus preferencias | 2019-01-08 14:54 → 2019-01-07 16:00 (-1d) | 2019-01-08 15:42 → 2019-01-07 16:48 (-1d) |  | 732.92d → 2977.66d | 78 → 77 | constraint none → start no earlier than 2019-01-04 11:12 |
| 67 | **Determinación informal de información manejada** | 2019-01-08 11:30 → 2019-01-07 11:00 (-1d) | 2019-01-08 14:06 → 2019-01-07 13:36 (-1d) |  | 722.92d → 2987.66d |  |  |
| 68 | Cuestionar futuros empleados para conocer sus necesidades | 2019-01-08 11:30 → 2019-01-07 11:48 (-1d) | 2019-01-08 13:18 → 2019-01-07 13:36 (-1d) |  | 712.92d → 2977.66d | none → 65 |  |
| 69 | Cuestionar posibles clientes para conocer sus preferencias | 2019-01-08 16:30 → 2019-01-07 11:00 (-1d) | 2019-01-09 08:18 → 2019-01-07 11:48 (-2d) |  | 712.92d → 2997.66d | 65 → 66 | constraint start no earlier than 2019-01-04 11:12 → none |
| 70 | **Determinación informal de interfaces del sistema** | 2019-01-08 13:18 → 2019-01-07 11:48 (-1d) | 2019-01-08 14:54 → 2019-01-07 14:24 (-1d) |  | 722.92d → 2987.66d |  |  |
| 71 | Cuestionar futuros empleados para conocer sus necesidades | 2019-01-08 13:18 → 2019-01-07 13:36 (-1d) | 2019-01-08 14:06 → 2019-01-07 14:24 (-1d) |  | 712.92d → 2977.66d |  |  |
| 72 | Cuestionar posibles clientes para conocer sus preferencias | 2019-01-08 11:30 → 2019-01-07 11:48 (-1d) | 2019-01-08 13:18 → 2019-01-07 13:36 (-1d) |  | 732.92d → 2997.66d |  |  |
| 73 | **Determinación informal de rendimiento del sistema** | 2019-01-08 14:06 → 2019-01-07 13:36 (-1d) | 2019-01-08 15:42 → 2019-01-07 15:12 (-1d) |  | 722.92d → 2987.66d |  |  |
| 74 | Cuestionar futuros empleados para conocer sus necesidades | 2019-01-08 14:06 → 2019-01-07 14:24 (-1d) | 2019-01-08 14:54 → 2019-01-07 15:12 (-1d) |  | 712.92d → 2977.66d |  |  |
| 75 | Cuestionar posibles clientes para conocer sus preferencias | 2019-01-08 13:18 → 2019-01-07 13:36 (-1d) | 2019-01-08 14:06 → 2019-01-07 14:24 (-1d) |  | 732.92d → 2997.66d |  |  |
| 76 | **Determinación informal de las restricciones del sistema** | 2019-01-08 14:54 → 2019-01-07 14:24 (-1d) | 2019-01-08 16:30 → 2019-01-07 16:00 (-1d) |  | 722.92d → 2987.66d |  |  |
| 77 | Cuestionar futuros empleados para conocer sus necesidades | 2019-01-08 14:54 → 2019-01-07 15:12 (-1d) | 2019-01-08 15:42 → 2019-01-07 16:00 (-1d) |  | 712.92d → 2977.66d |  |  |
| 78 | Cuestionar posibles clientes para conocer sus preferencias | 2019-01-08 14:06 → 2019-01-07 14:24 (-1d) | 2019-01-08 14:54 → 2019-01-07 15:12 (-1d) |  | 732.92d → 2997.66d |  |  |
| 79 | **Asignación de funciones a cada elemento del sistema** | 2019-01-09 08:18 → 2019-01-07 16:48 (-2d) | 2019-01-16 08:18 → 2019-01-16 13:29 | 5d → 6.59d | 712.92d → 2818.96d |  |  |
| 80 | **Alternativas de creación del sistema** | 2019-01-09 08:18 → 2019-01-07 16:48 (-2d) | 2019-01-11 13:18 → 2019-01-10 11:48 (-1d) |  | 712.92d → 2977.66d |  |  |
| 81 | Buscar tecnologías y metodologías alternativas | 2019-01-09 08:18 → 2019-01-07 16:48 (-2d) | 2019-01-11 13:18 → 2019-01-10 11:48 (-1d) |  | 712.92d → 2977.66d |  |  |
| 82 | Informar del progreso de la semana al Jefe de proyecto | 2019-01-11 13:18 → 2019-01-10 11:48 (-1d) | 2019-01-11 14:18 → 2019-01-10 13:48 (-1d) |  | 712.92d → 2977.66d |  |  |
| 83 | **Validación de las alternativas de creación del sistema** | 2019-01-11 14:18 → 2019-01-10 13:48 (-1d) | 2019-01-16 08:18 → 2019-01-16 13:29 | 2.38d → 3.96d | 712.92d → 2818.96d |  |  |
| 84 | Analizar las alternativas obtenidas | 2019-01-11 14:18 → 2019-01-10 13:48 (-1d) | 2019-01-14 14:18 → 2019-01-11 13:48 (-3d) |  | 712.92d → 2977.66d |  |  |
| 85 | Comparar las alternativas con la propuesta original | 2019-01-14 14:18 → 2019-01-15 09:29 (+1d) | 2019-01-15 14:18 → 2019-01-16 09:29 (+1d) |  | 712.92d → 2818.96d | 84 → 16, 84 |  |
| 86 | Decidir finalmente que tecnología usar | 2019-01-15 14:18 → 2019-01-16 09:29 (+1d) | 2019-01-15 16:18 → 2019-01-16 11:29 (+1d) |  | 712.92d → 2818.96d |  |  |
| 87 | Informar al Jefe del progreso de la semana | 2019-01-15 16:18 → 2019-01-16 11:29 (+1d) | 2019-01-16 08:18 → 2019-01-16 13:29 |  | 712.92d → 2818.96d |  |  |
| 88 | **Evaluación de la viabilidad del sistema** | 2019-01-16 08:18 → 2019-01-16 13:29 | 2019-01-25 13:18 → 2019-01-28 08:59 (+3d) | 7.5d → 7.56d | 712.92d → 2818.96d |  |  |
| 89 | **Estudio de viabilidad económico** | 2019-01-16 08:18 → 2019-01-16 13:29 | 2019-01-18 13:18 → 2019-01-21 08:29 (+3d) |  | 712.92d → 2818.96d |  |  |
| 90 | Realizar análisis de costes económicos | 2019-01-16 08:18 → 2019-01-16 13:29 | 2019-01-16 14:18 → 2019-01-17 09:29 (+1d) |  | 712.92d → 2818.96d |  |  |
| 91 | Realizar análisis de mercado | 2019-01-16 14:18 → 2019-01-17 09:29 (+1d) | 2019-01-17 10:18 → 2019-01-17 15:29 |  | 712.92d → 2818.96d |  |  |
| 92 | Realizar estimaciones coste-beneficio y tiempo-beneficio | 2019-01-17 10:18 → 2019-01-17 15:29 | 2019-01-17 16:18 → 2019-01-18 11:29 (+1d) |  | 712.92d → 2818.96d |  |  |
| 93 | Reunirse con el jefe para decidir su el proyecto se considera viable | 2019-01-17 16:18 → 2019-01-18 11:29 (+1d) | 2019-01-18 13:18 → 2019-01-21 08:29 (+3d) |  | 712.92d → 2818.96d |  |  |
| 94 | **Estudio de viabilidad técnico** | 2019-01-18 13:18 → 2019-01-21 08:29 (+3d) | 2019-01-22 10:18 → 2019-01-22 15:59 | 1.75d → 1.81d | 712.92d → 2818.96d |  |  |
| 95 | Estudiar las tecnologías disponibles para el proyecto | 2019-01-18 13:18 → 2019-01-21 08:29 (+3d) | 2019-01-21 09:18 → 2019-01-21 14:29 |  | 712.92d → 2818.96d |  |  |
| 96 | Analizar recursos y tecnologías a las que tiene acceso la empresa | 2019-01-21 09:18 → 2019-01-21 14:29 | 2019-01-21 11:18 → 2019-01-21 16:29 |  | 712.92d → 2818.96d |  |  |

| ID | Task | Start | Finish | Duration | Total float | Predecessors | Other |
| --- | --- | --- | --- | --- | --- | --- | --- |
| 97 | Analizar recursos y tecnologías de terceros que podrían comprarse o contratarse | 2019-01-21 11:18 → 2019-01-21 16:29 | 2019-01-21 14:18 → 2019-01-22 09:29 (+1d) |  | 712.92d → 2818.96d |  |  |
| 98 | Analizar con la información obtenida si el proyecto es viable | 2019-01-21 14:18 → 2019-01-22 09:59 (+1d) | 2019-01-22 10:18 → 2019-01-22 15:59 |  | 712.92d → 2818.96d | 97 → 17, 97 |  |
| 99 | **Estudio de viabilidad legal** | 2019-01-22 10:18 → 2019-01-22 15:59 | 2019-01-24 10:18 → 2019-01-24 15:59 |  | 712.92d → 2818.96d |  |  |
| 100 | Estudiar las leyes relacionadas con la parte tecnológica del proyecto | 2019-01-22 10:18 → 2019-01-22 15:59 | 2019-01-22 15:18 → 2019-01-23 10:59 (+1d) |  | 712.92d → 2818.96d |  |  |
| 101 | Estudiar las leyes relacionadas con al parte de hostelería del proyecto | 2019-01-22 15:18 → 2019-01-23 10:59 (+1d) | 2019-01-23 10:18 → 2019-01-23 15:59 |  | 712.92d → 2818.96d |  |  |
| 102 | Estudiar las leyes relacionadas con salud e higiene de local | 2019-01-23 10:18 → 2019-01-23 15:59 | 2019-01-23 15:18 → 2019-01-24 10:59 (+1d) |  | 712.92d → 2818.96d |  |  |
| 103 | Realizar un informe sobre los estudios legales | 2019-01-23 15:18 → 2019-01-24 10:59 (+1d) | 2019-01-24 09:18 → 2019-01-24 14:59 |  | 712.92d → 2818.96d |  |  |
| 104 | Analizar con la información obtenida si el proyecto es legalmente viable | 2019-01-24 09:18 → 2019-01-24 14:59 | 2019-01-24 10:18 → 2019-01-24 15:59 |  | 712.92d → 2818.96d |  |  |
| 105 | **Estudio de viabilidad de plazos** | 2019-01-24 10:18 → 2019-01-24 15:59 | 2019-01-25 13:18 → 2019-01-28 08:59 (+3d) |  | 712.92d → 2818.96d |  |  |
| 106 | Realizar análisis de costes temporales | 2019-01-24 10:18 → 2019-01-24 15:59 | 2019-01-25 10:18 → 2019-01-25 15:59 |  | 712.92d → 2818.96d |  |  |
| 107 | Realizar planificación de distribución de trabajo | 2019-01-24 10:18 → 2019-01-24 15:59 | 2019-01-24 13:18 → 2019-01-25 08:59 (+1d) |  | 787.92d → 2893.96d |  |  |
| 108 | Determinar si el proyecto es viable en el tiempo elegido | 2019-01-25 10:18 → 2019-01-25 15:59 | 2019-01-25 13:18 → 2019-01-28 08:59 (+3d) |  | 712.92d → 2818.96d |  |  |
| 109 | **Obtención de una definición del sistema** | 2019-01-25 13:18 → 2019-01-28 08:59 (+3d) | 2019-01-28 13:18 → 2019-01-29 08:59 (+1d) |  | 712.92d → 2818.96d |  |  |
| 110 | **Especificación formal del sistema** | 2019-01-25 13:18 → 2019-01-28 08:59 (+3d) | 2019-01-25 16:30 → 2019-01-28 13:11 (+3d) |  | 712.92d → 2818.96d |  |  |
| 111 | **Diagrama de contexto** | 2019-01-25 13:18 → 2019-01-28 08:59 (+3d) | 2019-01-25 14:54 → 2019-01-28 10:35 (+3d) |  | 712.92d → 2818.96d |  |  |
| 112 | Dibujar el diagrama de contexto | 2019-01-25 13:18 → 2019-01-28 08:59 (+3d) | 2019-01-25 14:54 → 2019-01-28 10:35 (+3d) |  | 712.92d → 2818.96d |  |  |
| 113 | **Diagrama de sistema** | 2019-01-25 14:54 → 2019-01-28 10:35 (+3d) | 2019-01-25 16:30 → 2019-01-28 13:11 (+3d) |  | 712.92d → 2818.96d |  |  |
| 114 | Dibujar el diagrama de sistema | 2019-01-25 16:30 → 2019-01-28 10:35 (+3d) | 2019-01-28 09:06 → 2019-01-28 13:11 |  | 712.92d → 2818.96d |  | resources Analista-Diseñador → Analista-Programador |
| 115 | **Representación del sistema** | 2019-01-25 16:30 → 2019-01-28 13:11 (+3d) | 2019-01-28 13:18 → 2019-01-29 08:59 (+1d) |  | 712.92d → 2818.96d |  |  |
| 116 | **Diagramas de flujo de datos** | 2019-01-25 16:30 → 2019-01-28 13:11 (+3d) | 2019-01-28 09:06 → 2019-01-28 14:47 |  | 712.92d → 2818.96d |  |  |
| 117 | Dibujar el diagrama de sistema | 2019-01-25 14:54 → 2019-01-28 13:11 (+3d) | 2019-01-25 16:30 → 2019-01-28 14:47 (+3d) |  | 712.92d → 2818.96d |  | resources Analista-Programador → Analista-Diseñador |
| 118 | **Diagramas de flujo de control** | 2019-01-28 09:06 → 2019-01-28 14:47 | 2019-01-28 10:42 → 2019-01-28 16:23 |  | 712.92d → 2818.96d |  |  |
| 119 | Dibujar el diagrama de sistema | 2019-01-28 09:06 → 2019-01-28 14:47 | 2019-01-28 10:42 → 2019-01-28 16:23 |  | 712.92d → 2818.96d |  |  |
| 120 | **Diagramas del ámbito de la información** | 2019-01-28 10:42 → 2019-01-28 16:23 | 2019-01-28 13:18 → 2019-01-29 08:59 (+1d) |  | 712.92d → 2818.96d |  |  |
| 121 | Dibujar el diagrama de sistema | 2019-01-28 10:42 → 2019-01-28 16:23 | 2019-01-28 13:18 → 2019-01-29 08:59 (+1d) |  | 712.92d → 2818.96d |  |  |
| 122 | **Análisis de requisitos del software** | 2019-01-28 13:18 → 2019-01-30 09:29 (+2d) | 2019-01-31 09:18 → 2019-02-01 16:29 (+1d) | 2.62d → 2.75d | 712.92d → 2712.66d |  |  |
| 123 | **Extracción o determinación de requisitos** | 2019-01-28 13:18 → 2019-01-30 09:29 (+2d) | 2019-01-28 16:18 → 2019-01-30 14:29 (+2d) | 0.38d → 0.5d | 712.92d → 2712.66d |  |  |
| 124 | **Documentos de reuniones con cliente** | 2019-01-28 13:18 → 2019-01-30 09:29 (+2d) | 2019-01-28 14:18 → 2019-01-30 11:29 (+2d) | 0.12d → 0.25d | 712.92d → 2712.66d |  |  |
| 125 | Realizar un acta de reunión para la reunión con el cliente | 2019-01-28 13:18 → 2019-01-30 09:29 (+2d) | 2019-01-28 14:18 → 2019-01-30 10:29 (+2d) |  | 712.92d → 2712.66d | none → 18, 33 |  |
| 126 | Realizar un informe sobre las solicitudes e información que se obtuvo del cliente | 2019-01-28 13:18 → 2019-01-30 10:29 (+2d) | 2019-01-28 14:18 → 2019-01-30 11:29 (+2d) |  | 712.92d → 2712.66d | none → 125 |  |
| 127 | **Especificación informal de requisitos software** | 2019-01-28 14:18 → 2019-01-30 11:29 (+2d) | 2019-01-28 16:18 → 2019-01-30 14:29 (+2d) |  | 712.92d → 2712.66d |  |  |
| 128 | Redactar un primer informe de los requisitos del software a partir del informe de reunión con el cliente | 2019-01-28 14:18 → 2019-01-30 11:29 (+2d) | 2019-01-28 16:18 → 2019-01-30 14:29 (+2d) |  | 712.92d → 2712.66d |  |  |
| 129 | **Análisis de requisitos** | 2019-01-28 16:18 → 2019-01-30 14:29 (+2d) | 2019-01-29 14:18 → 2019-01-31 11:29 (+2d) |  | 712.92d → 2712.66d |  |  |
| 130 | **Validación de especificación informal** | 2019-01-28 16:18 → 2019-01-30 14:29 (+2d) | 2019-01-29 08:18 → 2019-01-30 15:29 (+1d) |  | 712.92d → 2712.66d |  |  |
| 131 | Analizar especificación informal para posibles mejoras | 2019-01-28 16:18 → 2019-01-30 14:29 (+2d) | 2019-01-29 08:18 → 2019-01-30 15:29 (+1d) |  | 712.92d → 2712.66d |  |  |
| 132 | Buscar errores en la especificación informal | 2019-01-28 16:18 → 2019-01-30 14:29 (+2d) | 2019-01-29 08:18 → 2019-01-30 15:29 (+1d) |  | 712.92d → 2712.66d |  |  |
| 133 | **Resolución de inconsistencias** | 2019-01-29 08:18 → 2019-01-30 15:29 (+1d) | 2019-01-29 10:18 → 2019-01-31 08:29 (+2d) |  | 712.92d → 2712.66d |  |  |
| 134 | Corregir errores en la especificación informal | 2019-01-29 08:18 → 2019-01-30 15:29 (+1d) | 2019-01-29 10:18 → 2019-01-31 08:29 (+2d) |  | 712.92d → 2712.66d |  |  |
| 135 | Encontrar redundancias y discrepancias en la especificación informal | 2019-01-29 08:18 → 2019-01-30 15:29 (+1d) | 2019-01-29 10:18 → 2019-01-31 08:29 (+2d) |  | 712.92d → 2712.66d |  |  |
| 136 | **Coordinación de requisitos relacionados** | 2019-01-29 10:18 → 2019-01-31 08:29 (+2d) | 2019-01-29 14:18 → 2019-01-31 11:29 (+2d) |  | 712.92d → 2712.66d |  |  |
| 137 | Formar relaciones entre requisitos que tengan puntos comunes | 2019-01-29 10:18 → 2019-01-31 08:29 (+2d) | 2019-01-29 13:18 → 2019-01-31 10:29 (+2d) |  | 712.92d → 2712.66d |  |  |
| 138 | Purgar relaciones redundantes | 2019-01-29 13:18 → 2019-01-31 10:29 (+2d) | 2019-01-29 14:18 → 2019-01-31 11:29 (+2d) |  | 712.92d → 2712.66d |  |  |
| 139 | **Especificación de requisitos** | 2019-01-29 14:18 → 2019-01-31 11:29 (+2d) | 2019-01-30 11:18 → 2019-02-01 09:29 (+2d) |  | 712.92d → 2712.66d |  |  |
| 140 | **Documento de especificación formal de requisitos** | 2019-01-29 14:18 → 2019-01-31 11:29 (+2d) | 2019-01-30 09:18 → 2019-01-31 16:29 (+1d) |  | 712.92d → 2712.66d |  |  |
| 141 | Redactar documento de requisitos formal | 2019-01-29 14:18 → 2019-01-31 11:29 (+2d) | 2019-01-30 09:18 → 2019-01-31 16:29 (+1d) |  | 712.92d → 2712.66d |  |  |
| 142 | **Revisión de documento de especificación formal** | 2019-01-30 09:18 → 2019-01-31 16:29 (+1d) | 2019-01-30 11:18 → 2019-02-01 09:29 (+2d) |  | 712.92d → 2712.66d |  |  |
| 143 | Revisar documento de requisitos formal en busca de errores | 2019-01-30 09:18 → 2019-01-31 16:29 (+1d) | 2019-01-30 10:18 → 2019-02-01 08:29 (+2d) |  | 712.92d → 2712.66d |  |  |
| 144 | Revisar documento de requisitos formal en busca de mejoras de formato y claridad | 2019-01-30 10:18 → 2019-02-01 08:29 (+2d) | 2019-01-30 11:18 → 2019-02-01 09:29 (+2d) |  | 712.92d → 2712.66d |  |  |
| 145 | **Validación de requisitos** | 2019-01-30 11:18 → 2019-02-01 09:29 (+2d) | 2019-01-31 09:18 → 2019-02-01 16:29 (+1d) |  | 712.92d → 2712.66d |  |  |
| 146 | **Reunión con cliente para validación de requisitos** | 2019-01-30 11:18 → 2019-02-01 09:29 (+2d) | 2019-01-30 14:18 → 2019-02-01 11:29 (+2d) |  | 712.92d → 2712.66d |  |  |
| 147 | Redactar acta de reunión con el cliente y validar requisitos | 2019-01-30 11:18 → 2019-02-01 09:29 (+2d) | 2019-01-30 14:18 → 2019-02-01 11:29 (+2d) |  | 712.92d → 2712.66d |  |  |
| 148 | **Corrección de especificación formal** | 2019-01-30 14:18 → 2019-02-01 11:29 (+2d) | 2019-01-30 16:18 → 2019-02-01 14:29 (+2d) |  | 712.92d → 2712.66d |  |  |
| 149 | Ajustar los requisitos a partir de la validación realizada | 2019-01-30 14:18 → 2019-02-01 11:29 (+2d) | 2019-01-30 16:18 → 2019-02-01 14:29 (+2d) |  | 712.92d → 2712.66d |  |  |
| 150 | **Validación de la especificación forma corregidsa** | 2019-01-30 16:18 → 2019-02-01 14:29 (+2d) | 2019-01-31 09:18 → 2019-02-01 16:29 (+1d) |  | 712.92d → 2712.66d |  |  |
| 151 | Reunirse con el cliente para realizar la validación final de requisitos | 2019-01-30 16:18 → 2019-02-01 14:29 (+2d) | 2019-01-31 09:18 → 2019-02-01 16:29 (+1d) |  | 712.92d → 2712.66d |  |  |
| 152 | **Diseño del sistema software** | 2019-01-31 09:18 → 2019-01-01 09:00 (-30d) | 2019-03-06 16:18 → 2019-03-13 14:29 (+7d) | 24.75d → 51.56d | 712.92d → 3595.89d |  |  |
| 153 | **Diseño funcional** | 2019-01-31 09:18 → 2019-01-01 09:00 (-30d) | 2019-02-08 09:18 → 2019-01-09 09:00 (-30d) |  | 712.92d → 2518.85d |  |  |
| 154 | **Diseño módulo del camarero** | 2019-01-31 09:18 → 2019-01-01 09:00 (-30d) | 2019-02-01 09:18 → 2019-01-02 09:00 (-30d) |  | 712.92d → 2518.85d |  |  |
| 155 | Realizar diseño del módulo | 2019-01-31 09:18 → 2019-01-01 09:00 (-30d) | 2019-02-01 09:18 → 2019-01-02 09:00 (-30d) |  | 712.92d → 2518.85d |  |  |
| 156 | **Diseño módulo de gestión de proveedores** | 2019-02-01 09:18 → 2019-01-02 09:00 (-30d) | 2019-02-04 09:18 → 2019-01-03 09:00 (-32d) |  | 712.92d → 2518.85d |  |  |
| 157 | Realizar diseño del módulo | 2019-02-01 09:18 → 2019-01-02 09:00 (-30d) | 2019-02-04 09:18 → 2019-01-03 09:00 (-32d) |  | 712.92d → 2518.85d |  |  |
| 158 | **Diseño módulo de cocinas/barras** | 2019-02-04 09:18 → 2019-01-03 09:00 (-32d) | 2019-02-05 09:18 → 2019-01-04 09:00 (-32d) |  | 712.92d → 2518.85d |  |  |
| 159 | Realizar diseño del módulo | 2019-02-04 09:18 → 2019-02-01 16:29 (-3d) | 2019-02-05 09:18 → 2019-02-04 16:29 (-1d) |  | 712.92d → 337.66d |  |  |
| 160 | **Diseño módulo para muestra de datos y comandas** | 2019-02-05 09:18 → 2019-01-04 09:00 (-32d) | 2019-02-06 09:18 → 2019-01-07 09:00 (-30d) |  | 712.92d → 2518.85d |  |  |
| 161 | Realizar diseño del módulo | 2019-02-05 09:18 → 2019-01-04 09:00 (-32d) | 2019-02-06 09:18 → 2019-01-07 09:00 (-30d) |  | 712.92d → 2518.85d | none → 19 |  |
| 162 | **Diseño módulo de entretenimiento** | 2019-02-06 09:18 → 2019-01-07 09:00 (-30d) | 2019-02-07 09:18 → 2019-01-08 09:00 (-30d) |  | 712.92d → 2518.85d |  |  |
| 163 | Realizar diseño del módulo | 2019-02-06 09:18 → 2019-01-07 09:00 (-30d) | 2019-02-07 09:18 → 2019-01-08 09:00 (-30d) |  | 712.92d → 2518.85d |  |  |
| 164 | **Diseño módulo de monitorización general del sistema** | 2019-02-07 09:18 → 2019-01-08 09:00 (-30d) | 2019-02-08 09:18 → 2019-01-09 09:00 (-30d) |  | 712.92d → 2518.85d |  |  |
| 165 | Realizar diseño del módulo | 2019-02-07 09:18 → 2019-01-08 09:00 (-30d) | 2019-02-08 09:18 → 2019-01-09 09:00 (-30d) |  | 712.92d → 2518.85d |  |  |
| 166 | **Diseño técnico** | 2019-02-08 09:18 → 2019-01-09 09:00 (-30d) | 2019-02-20 11:18 → 2019-02-22 08:00 (+2d) | 8.25d → 31.88d | 712.92d → 250.05d |  |  |

| ID | Task | Start | Finish | Duration | Total float | Predecessors | Other |
| --- | --- | --- | --- | --- | --- | --- | --- |
| 167 | **Selección de tecnologías** | 2019-02-08 09:18 → 2019-01-09 09:00 (-30d) | 2019-02-14 11:18 → 2019-02-14 16:29 | 4.25d → 26.81d | 712.92d → 268.85d |  |  |
| 168 | **Base de datos a usar** | 2019-02-08 09:18 → 2019-01-09 09:00 (-30d) | 2019-02-11 14:18 → 2019-01-10 14:00 (-32d) |  | 712.92d → 2518.85d |  |  |
| 169 | Comparar bases de datos disponibles | 2019-02-08 09:18 → 2019-01-09 09:00 (-30d) | 2019-02-11 09:18 → 2019-01-10 09:00 (-32d) |  | 712.92d → 2518.85d |  |  |
| 170 | Elegir la opción que mejor se adapte al proyecto | 2019-02-12 14:18 → 2019-01-10 09:00 (-33d) | 2019-02-13 09:18 → 2019-01-10 14:00 (-34d) |  | 712.92d → 2518.85d | 172 → 169 |  |
| 171 | **Sistema operativo y aplicaciones de las tablets** | 2019-02-11 14:18 → 2019-02-12 09:29 (+1d) | 2019-02-13 09:18 → 2019-02-13 14:29 |  | 712.92d → 268.85d |  |  |
| 172 | Comparar los sistemas operativos disponibles | 2019-02-11 14:18 → 2019-02-12 09:29 (+1d) | 2019-02-12 14:18 → 2019-02-13 09:29 (+1d) |  | 712.92d → 268.85d | none → 20 |  |
| 173 | Elegir la opción que mejor se adapte al proyecto | 2019-02-11 09:18 → 2019-02-13 09:29 (+2d) | 2019-02-11 14:18 → 2019-02-13 14:29 (+2d) |  | 712.92d → 268.85d | 169 → 172 |  |
| 174 | **Lenguaje de programación y consultas SQL** | 2019-02-13 09:18 → 2019-02-13 14:29 | 2019-02-14 11:18 → 2019-02-14 16:29 |  | 712.92d → 268.85d |  |  |
| 175 | Analizar que lenguaje de programación y consultas SQL se adapta mejor a nuestra BD elegida | 2019-02-13 09:18 → 2019-02-13 14:29 | 2019-02-14 11:18 → 2019-02-14 16:29 |  | 712.92d → 268.85d |  |  |
| 176 | Analizar que lenguaje se adapta mejor a las necesidades de la empresa | 2019-02-13 09:18 → 2019-02-13 14:29 | 2019-02-14 11:18 → 2019-02-14 16:29 |  | 712.92d → 268.85d |  |  |
| 177 | **Interfaces de comunicación e interoperación con otras aplicaciones** | 2019-02-08 09:18 → 2019-01-09 09:00 (-30d) | 2019-02-11 09:18 → 2019-01-10 09:00 (-32d) |  | 1037.92d → 2850.05d |  |  |
| 178 | Diseñar mediante diagramas y diseño informal las interfaces | 2019-02-08 09:18 → 2019-01-09 09:00 (-30d) | 2019-02-11 09:18 → 2019-01-10 09:00 (-32d) |  | 1037.92d → 2850.05d |  |  |
| 179 | **Validación de tecnologías** | 2019-02-14 11:18 → 2019-02-14 16:29 | 2019-02-20 11:18 → 2019-02-22 08:00 (+2d) | 4d → 5.06d | 712.92d → 250.05d |  |  |
| 180 | **Diseño de pruebas de rendimiento de las tecnologías** | 2019-02-14 11:18 → 2019-02-14 16:29 | 2019-02-18 11:18 → 2019-02-18 16:29 |  | 712.92d → 268.85d |  |  |
| 181 | Diseñar las pruebas de rendimiento | 2019-02-14 11:18 → 2019-02-14 16:29 | 2019-02-18 11:18 → 2019-02-18 16:29 |  | 712.92d → 268.85d |  |  |
| 182 | **Diseño de pruebas de coste de las tecnologías** | 2019-02-18 11:18 → 2019-02-19 09:29 (+1d) | 2019-02-20 11:18 → 2019-02-22 08:00 (+2d) | 2d → 2.81d | 712.92d → 250.05d |  |  |
| 183 | Diseñar las pruebas de coste | 2019-02-18 11:18 → 2019-02-19 09:29 (+1d) | 2019-02-20 11:18 → 2019-02-22 08:00 (+2d) | 2d → 2.81d | 712.92d → 250.05d | none → 21 |  |
| 184 | **Diseño de pruebas** | 2019-02-20 11:18 → 2019-02-22 08:00 (+2d) | 2019-03-01 16:18 → 2019-03-08 13:30 (+7d) | 7.5d → 10.56d | 712.92d → 250.05d |  |  |
| 185 | **Diseño de pruebas de aceptación** | 2019-02-20 11:18 → 2019-02-22 08:00 (+2d) | 2019-02-25 11:18 → 2019-02-27 09:29 (+2d) | 3d → 3.19d | 1012.92d → 837.66d |  |  |
| 186 | **Diseño de pruebas para los gerentes del local** | 2019-02-20 11:18 → 2019-02-22 08:00 (+2d) | 2019-02-21 16:18 → 2019-02-25 13:00 (+4d) |  | 1012.92d → 856.25d |  |  |
| 187 | Redactar informe de los minimos que deben cubrir las pruebas | 2019-02-21 16:18 → 2019-02-22 08:00 (+1d) | 2019-02-22 11:18 → 2019-02-22 13:00 |  | 1012.92d → 856.25d |  |  |
| 188 | Diseñar las pruebas basandose en los informes | 2019-02-22 11:18 → 2019-02-22 13:00 | 2019-02-25 11:18 → 2019-02-25 13:00 |  | 1012.92d → 856.25d |  |  |
| 189 | **Diseño de pruebas sobre el personal del local** | 2019-02-20 11:18 → 2019-02-22 08:00 (+2d) | 2019-02-21 16:18 → 2019-02-25 13:00 (+4d) |  | 712.92d → 250.05d |  |  |
| 190 | Redactar informe de los minimos que deben cubrir las pruebas | 2019-02-20 11:18 → 2019-02-22 08:00 (+2d) | 2019-02-20 16:18 → 2019-02-22 13:00 (+2d) |  | 1012.92d → 250.05d |  | resources Analista-Diseñador → Analista-Programador |
| 191 | Diseñar las pruebas basandose en los informes | 2019-02-20 16:18 → 2019-02-22 13:00 (+2d) | 2019-02-21 16:18 → 2019-02-25 13:00 (+4d) |  | 1012.92d → 250.05d |  | resources Analista-Diseñador → Analista-Programador |
| 192 | **Diseño de pruebas sobre los usuarios del local** | 2019-02-20 11:18 → 2019-02-22 08:00 (+2d) | 2019-02-21 16:18 → 2019-02-25 13:00 (+4d) |  | 1162.92d → 1006.25d |  |  |
| 193 | Redactar informe de los minimos que deben cubrir las pruebas | 2019-02-20 11:18 → 2019-02-22 08:00 (+2d) | 2019-02-20 16:18 → 2019-02-22 13:00 (+2d) |  | 712.92d → 1006.25d |  | resources Analista-Programador → Programador Junior1; Programador Junior2 |
| 194 | Diseñar las pruebas basandose en los informes | 2019-02-20 16:18 → 2019-02-22 13:00 (+2d) | 2019-02-21 16:18 → 2019-02-25 13:00 (+4d) |  | 712.92d → 1006.25d |  | resources Analista-Programador → Programador Junior1; Programador Junior2 |
| 195 | **Diseño de pruebas para los proveedores** | 2019-02-21 16:18 → 2019-02-25 13:00 (+4d) | 2019-02-25 11:18 → 2019-02-27 09:29 (+2d) | 1.5d → 1.69d | 1012.92d → 837.66d |  |  |
| 196 | Redactar informe de los minimos que deben cubrir las pruebas | 2019-02-20 11:18 → 2019-02-25 13:00 (+5d) | 2019-02-20 16:18 → 2019-02-26 08:00 (+6d) |  | 1162.92d → 856.25d |  | resources Programador Junior1; Programador Junior2 → Analista-Diseñador |
| 197 | Diseñar las pruebas basandose en los informes | 2019-02-20 16:18 → 2019-02-26 09:29 (+6d) | 2019-02-21 16:18 → 2019-02-27 09:29 (+6d) |  | 1162.92d → 837.66d | 196 → 22, 196 | resources Programador Junior1; Programador Junior2 → Analista-Diseñador |
| 198 | **Diseño de pruebas del sistema** | 2019-02-21 16:18 → 2019-02-25 13:00 (+4d) | 2019-02-26 16:18 → 2019-02-28 14:29 (+2d) | 3d → 3.19d | 1012.92d → 837.66d |  |  |
| 199 | **Diseño de pruebas para comunicación con PayPal** | 2019-02-21 16:18 → 2019-02-25 13:00 (+4d) | 2019-02-25 11:18 → 2019-02-27 08:00 (+2d) |  | 712.92d → 250.05d |  |  |
| 200 | Redactar informe de los minimos que deben cubrir las pruebas | 2019-02-25 11:18 → 2019-02-25 13:00 | 2019-02-25 16:18 → 2019-02-26 08:00 (+1d) |  | 1012.92d → 250.05d |  | resources Analista-Diseñador → Analista-Programador |
| 201 | Diseñar las pruebas basandose en los informes | 2019-02-25 16:18 → 2019-02-26 08:00 (+1d) | 2019-02-26 16:18 → 2019-02-27 08:00 (+1d) |  | 1012.92d → 250.05d |  | resources Analista-Diseñador → Analista-Programador |
| 202 | **Diseño de pruebas para comunicación con terminales TPV** | 2019-02-21 16:18 → 2019-02-25 13:00 (+4d) | 2019-02-25 11:18 → 2019-02-27 08:00 (+2d) |  | 1162.92d → 1006.25d |  |  |
| 203 | Redactar informe de los minimos que deben cubrir las pruebas | 2019-02-21 16:18 → 2019-02-25 13:00 (+4d) | 2019-02-22 11:18 → 2019-02-26 08:00 (+4d) |  | 712.92d → 1006.25d |  | resources Analista-Programador → Programador Junior1; Programador Junior2 |
| 204 | Diseñar las pruebas basandose en los informes | 2019-02-22 11:18 → 2019-02-26 08:00 (+4d) | 2019-02-25 11:18 → 2019-02-27 08:00 (+2d) |  | 712.92d → 1006.25d |  | resources Analista-Programador → Programador Junior1; Programador Junior2 |
| 205 | **Diseño de pruebas para comunicación con tablets del local** | 2019-02-25 11:18 → 2019-02-27 09:29 (+2d) | 2019-02-26 16:18 → 2019-02-28 14:29 (+2d) |  | 1012.92d → 837.66d |  |  |
| 206 | Redactar informe de los minimos que deben cubrir las pruebas | 2019-02-21 16:18 → 2019-02-27 09:29 (+6d) | 2019-02-22 11:18 → 2019-02-27 14:29 (+5d) |  | 1162.92d → 837.66d |  | resources Programador Junior1; Programador Junior2 → Analista-Diseñador |
| 207 | Diseñar las pruebas basandose en los informes | 2019-02-22 11:18 → 2019-02-27 14:29 (+5d) | 2019-02-25 11:18 → 2019-02-28 14:29 (+3d) |  | 1162.92d → 837.66d |  | resources Programador Junior1; Programador Junior2 → Analista-Diseñador |
| 208 | **Diseño de pruebas de integración** | 2019-02-25 11:18 → 2019-02-27 08:00 (+2d) | 2019-02-26 16:18 → 2019-02-28 13:00 (+2d) |  | 712.92d → 250.05d |  |  |
| 209 | **Diseño de pruebas para comunicación entre módulos** | 2019-02-25 11:18 → 2019-02-27 08:00 (+2d) | 2019-02-26 16:18 → 2019-02-28 13:00 (+2d) |  | 712.92d → 250.05d |  |  |
| 210 | Redactar informe de los minimos que deben cubrir las pruebas | 2019-02-25 11:18 → 2019-02-27 08:00 (+2d) | 2019-02-25 16:18 → 2019-02-27 13:00 (+2d) |  | 712.92d → 250.05d |  |  |
| 211 | Diseñar las pruebas basandose en los informes | 2019-02-25 16:18 → 2019-02-27 13:00 (+2d) | 2019-02-26 16:18 → 2019-02-28 13:00 (+2d) |  | 712.92d → 250.05d |  |  |
| 212 | **Diseño de pruebas de unidad** | 2019-02-26 16:18 → 2019-02-28 13:00 (+2d) | 2019-03-01 16:18 → 2019-03-08 13:30 (+7d) | 3d → 6.06d | 712.92d → 250.05d |  |  |
| 213 | **Diseño de pruebas de módulo de monitorización general del sistema** | 2019-02-26 16:18 → 2019-02-28 13:00 (+2d) | 2019-02-28 11:18 → 2019-03-04 08:00 (+4d) |  | 712.92d → 250.05d |  |  |
| 214 | Redactar informe de los minimos que deben cubrir las pruebas | 2019-02-28 11:18 → 2019-02-28 13:00 | 2019-02-28 16:18 → 2019-03-01 08:00 (+1d) |  | 712.92d → 250.05d |  | resources Programador Junior1; Programador Junior2 → Analista-Diseñador |
| 215 | Diseñar las pruebas basandose en los informes | 2019-02-28 16:18 → 2019-03-01 08:00 (+1d) | 2019-03-01 16:18 → 2019-03-04 08:00 (+3d) |  | 712.92d → 250.05d |  | resources Programador Junior1; Programador Junior2 → Analista-Diseñador |
| 216 | **Diseño de pruebas de módulo de entretenimiento** | 2019-02-28 11:18 → 2019-03-04 08:00 (+4d) | 2019-03-01 16:18 → 2019-03-05 13:00 (+4d) |  | 712.92d → 250.05d |  |  |
| 217 | Redactar informe de los minimos que deben cubrir las pruebas | 2019-02-26 16:18 → 2019-03-04 08:00 (+6d) | 2019-02-27 11:18 → 2019-03-04 13:00 (+5d) |  | 712.92d → 250.05d |  |  |
| 218 | Diseñar las pruebas basandose en los informes | 2019-02-27 11:18 → 2019-03-04 13:00 (+5d) | 2019-02-28 11:18 → 2019-03-05 13:00 (+5d) |  | 712.92d → 250.05d |  |  |
| 219 | **Diseño de pruebas de módulo para muestra de datos y comandas** | 2019-02-26 16:18 → 2019-03-05 13:30 (+7d) | 2019-02-28 11:18 → 2019-03-07 08:30 (+7d) |  | 712.92d → 250.05d |  |  |
| 220 | Redactar informe de los minimos que deben cubrir las pruebas | 2019-02-28 11:18 → 2019-03-05 13:30 (+5d) | 2019-02-28 16:18 → 2019-03-06 08:30 (+6d) |  | 712.92d → 250.05d | none → 23 | resources Analista-Diseñador → Analista-Programador |
| 221 | Diseñar las pruebas basandose en los informes | 2019-02-28 16:18 → 2019-03-06 08:30 (+6d) | 2019-03-01 16:18 → 2019-03-07 08:30 (+6d) |  | 712.92d → 250.05d |  | resources Analista-Diseñador → Analista-Programador |
| 222 | **Diseño de pruebas de módulo de gestión de proveedores** | 2019-02-28 11:18 → 2019-03-07 08:30 (+7d) | 2019-03-01 16:18 → 2019-03-08 13:30 (+7d) |  | 712.92d → 250.05d |  |  |
| 223 | Redactar informe de los minimos que deben cubrir las pruebas | 2019-02-26 16:18 → 2019-03-07 08:30 (+9d) | 2019-02-27 11:18 → 2019-03-07 13:30 (+8d) |  | 712.92d → 250.05d |  |  |
| 224 | Diseñar las pruebas basandose en los informes | 2019-02-27 11:18 → 2019-03-07 13:30 (+8d) | 2019-02-28 11:18 → 2019-03-08 13:30 (+8d) |  | 712.92d → 250.05d |  |  |
| 225 | **Diseño de pruebas de módulo del camarero** | 2019-02-26 16:18 → 2019-02-28 13:00 (+2d) | 2019-02-28 11:18 → 2019-03-04 08:00 (+4d) |  | 712.92d → 556.25d |  |  |
| 226 | Redactar informe de los minimos que deben cubrir las pruebas | 2019-02-28 11:18 → 2019-02-28 13:00 | 2019-02-28 16:18 → 2019-03-01 08:00 (+1d) |  | 712.92d → 556.25d |  | resources Analista-Programador → Programador Junior1; Programador Junior2 |
| 227 | Diseñar las pruebas basandose en los informes | 2019-02-28 16:18 → 2019-03-01 08:00 (+1d) | 2019-03-01 16:18 → 2019-03-04 08:00 (+3d) |  | 712.92d → 556.25d |  | resources Analista-Programador → Programador Junior1; Programador Junior2 |
| 228 | **Diseño de pruebas del módulo de cocinas/barra** | 2019-02-28 11:18 → 2019-03-04 08:00 (+4d) | 2019-03-01 16:18 → 2019-03-05 13:00 (+4d) |  | 712.92d → 556.25d |  |  |
| 229 | Redactar informe de los minimos que deben cubrir las pruebas | 2019-02-26 16:18 → 2019-03-04 08:00 (+6d) | 2019-02-27 11:18 → 2019-03-04 13:00 (+5d) |  | 712.92d → 556.25d |  |  |
| 230 | Diseñar las pruebas basandose en los informes | 2019-02-27 11:18 → 2019-03-04 13:00 (+5d) | 2019-02-28 11:18 → 2019-03-05 13:00 (+5d) |  | 712.92d → 556.25d |  |  |
| 231 | **Planificación** | 2019-03-01 16:18 → 2019-03-08 13:30 (+7d) | 2019-03-06 16:18 → 2019-03-13 14:29 (+7d) | 3d → 3.12d | 712.92d → 237.66d |  |  |
| 232 | **Revisión de la planificación** | 2019-03-01 16:18 → 2019-03-08 13:30 (+7d) | 2019-03-06 11:18 → 2019-03-13 09:29 (+7d) | 2.5d → 2.62d | 712.92d → 237.66d |  |  |
| 233 | Revisar que la planificación se ajuste al tiempo adecuado | 2019-03-01 16:18 → 2019-03-08 13:30 (+7d) | 2019-03-05 11:18 → 2019-03-12 08:30 (+7d) |  | 712.92d → 250.05d |  |  |
| 234 | Revisar que la planificación se ajuste adecuadamente a nuestros recursos | 2019-03-05 11:18 → 2019-03-12 09:29 (+7d) | 2019-03-06 11:18 → 2019-03-13 09:29 (+7d) |  | 712.92d → 237.66d | 233 → 24, 233 |  |
| 235 | **Validación de la planificación** | 2019-03-06 11:18 → 2019-03-13 09:29 (+7d) | 2019-03-06 16:18 → 2019-03-13 14:29 (+7d) |  | 712.92d → 237.66d |  |  |
| 236 | Reunirse con el jefe para validar la planificación revisada, incluye informe semanal | 2019-03-06 11:18 → 2019-03-13 09:29 (+7d) | 2019-03-06 16:18 → 2019-03-13 14:29 (+7d) |  | 712.92d → 237.66d |  |  |

| ID | Task | Start | Finish | Duration | Total float | Predecessors |
| --- | --- | --- | --- | --- | --- | --- |
| 237 | **Codificación del sistema** | 2019-03-06 16:18 → 2019-03-13 14:29 (+7d) | 2019-03-29 15:48 → 2019-04-11 11:59 (+13d) | 16.94d → 20.81d | 712.92d → 12.66d |  |
| 238 | **Ambiente de desarrollo** | 2019-03-06 16:18 → 2019-03-13 14:29 (+7d) | 2019-03-15 09:18 → 2019-03-21 16:29 (+6d) |  | 712.92d → 237.66d |  |
| 239 | **Instalación del entorno de trabajo** | 2019-03-06 16:18 → 2019-03-13 14:29 (+7d) | 2019-03-08 16:18 → 2019-03-15 14:29 (+7d) |  | 712.92d → 237.66d |  |
| 240 | **Selección de tecnologías** | 2019-03-06 16:18 → 2019-03-13 14:29 (+7d) | 2019-03-07 11:18 → 2019-03-14 09:29 (+7d) |  | 712.92d → 237.66d |  |
| 241 | Seleccionar las tecnologías basandose en la fase de análisis | 2019-03-06 16:18 → 2019-03-13 14:29 (+7d) | 2019-03-07 11:18 → 2019-03-14 09:29 (+7d) |  | 712.92d → 237.66d |  |
| 242 | **Adquisición de tecnologías** | 2019-03-07 11:18 → 2019-03-14 09:29 (+7d) | 2019-03-07 16:18 → 2019-03-14 14:29 (+7d) |  | 712.92d → 237.66d |  |
| 243 | Realizar la compra de licencias de software de empresa | 2019-03-07 11:18 → 2019-03-14 09:29 (+7d) | 2019-03-07 16:18 → 2019-03-14 14:29 (+7d) |  | 712.92d → 237.66d |  |
| 244 | Comprar el hardware necesario | 2019-03-07 11:18 → 2019-03-14 09:29 (+7d) | 2019-03-07 16:18 → 2019-03-14 14:29 (+7d) |  | 712.92d → 237.66d |  |
| 245 | **Instalación en ordenadores locales** | 2019-03-07 16:18 → 2019-03-14 14:29 (+7d) | 2019-03-08 16:18 → 2019-03-15 14:29 (+7d) |  | 712.92d → 237.66d |  |
| 246 | Instalar el software adquirido en los ordenadores locales | 2019-03-07 16:18 → 2019-03-14 14:29 (+7d) | 2019-03-08 16:18 → 2019-03-15 14:29 (+7d) |  | 712.92d → 237.66d |  |
| 247 | **Configuración del entorno de trabajo** | 2019-03-08 16:18 → 2019-03-15 14:29 (+7d) | 2019-03-12 16:18 → 2019-03-19 14:29 (+7d) |  | 712.92d → 237.66d |  |
| 248 | **Ajuste de propiedades generales** | 2019-03-08 16:18 → 2019-03-15 14:29 (+7d) | 2019-03-12 16:18 → 2019-03-19 14:29 (+7d) |  | 712.92d → 237.66d |  |
| 249 | Configurar el SO y programas básico de uso general | 2019-03-08 16:18 → 2019-03-15 14:29 (+7d) | 2019-03-12 16:18 → 2019-03-19 14:29 (+7d) |  | 712.92d → 237.66d |  |
| 250 | **Ajuste de propiedades específicas** | 2019-03-08 16:18 → 2019-03-15 14:29 (+7d) | 2019-03-12 16:18 → 2019-03-19 14:29 (+7d) |  | 712.92d → 237.66d |  |
| 251 | Preparar el software específico en los equipos de personal especializado | 2019-03-08 16:18 → 2019-03-15 14:29 (+7d) | 2019-03-12 16:18 → 2019-03-19 14:29 (+7d) |  | 712.92d → 237.66d | none → 25 |
| 252 | **Revisiones de eficiencia y velocidad del entorno** | 2019-03-12 16:18 → 2019-03-19 14:29 (+7d) | 2019-03-15 09:18 → 2019-03-21 16:29 (+6d) |  | 712.92d → 237.66d |  |
| 253 | **Evaluación de eficiencia y velocidad** | 2019-03-12 16:18 → 2019-03-19 14:29 (+7d) | 2019-03-13 16:18 → 2019-03-20 14:29 (+7d) |  | 712.92d → 237.66d |  |
| 254 | Realizar evaluación de eficiencia y velocidad durante la preparación de los ordenadores | 2019-03-12 16:18 → 2019-03-19 14:29 (+7d) | 2019-03-13 16:18 → 2019-03-20 14:29 (+7d) |  | 712.92d → 237.66d |  |
| 255 | **Reconfiguración de tecnologías o herramientas** | 2019-03-13 16:18 → 2019-03-20 14:29 (+7d) | 2019-03-14 16:18 → 2019-03-21 14:29 (+7d) |  | 712.92d → 237.66d |  |
| 256 | Ajustar las configuraciones iniciales basándose en las evaluaciones | 2019-03-13 16:18 → 2019-03-20 14:29 (+7d) | 2019-03-14 16:18 → 2019-03-21 14:29 (+7d) |  | 712.92d → 237.66d |  |
| 257 | **Selección parcial de otras herramientas** | 2019-03-14 16:18 → 2019-03-21 14:29 (+7d) | 2019-03-15 09:18 → 2019-03-21 16:29 (+6d) |  | 712.92d → 237.66d |  |
| 258 | Cubrir problemas encontrados con las herramientas de terceros necesarias | 2019-03-14 16:18 → 2019-03-21 14:29 (+7d) | 2019-03-15 09:18 → 2019-03-21 16:29 (+6d) |  | 712.92d → 237.66d |  |
| 259 | **Módulos** | 2019-03-15 09:18 → 2019-03-21 16:29 (+6d) | 2019-03-25 14:18 → 2019-04-05 09:59 (+11d) | 6.5d → 10.31d | 712.92d → 12.66d |  |
| 260 | **Módulo del camarero** | 2019-03-15 09:18 → 2019-03-21 16:29 (+6d) | 2019-03-19 14:18 → 2019-03-28 14:29 (+9d) | 2.5d → 4.75d | 1112.92d → 568.85d |  |
| 261 | **Almacén de datos de camareros** | 2019-03-15 09:18 → 2019-03-26 09:29 (+11d) | 2019-03-19 14:18 → 2019-03-28 14:29 (+9d) |  | 712.92d → 12.66d |  |
| 262 | Preparar la BD y funciones para uso de camareros | 2019-03-15 09:18 → 2019-03-26 09:29 (+11d) | 2019-03-19 14:18 → 2019-03-28 14:29 (+9d) |  | 712.92d → 12.66d | none → 26 |
| 263 | **Función de comunicar llamadas al camarero** | 2019-03-15 09:18 → 2019-03-21 16:29 (+6d) | 2019-03-18 09:18 → 2019-03-22 16:29 (+4d) |  | 1262.92d → 943.85d |  |
| 264 | Implementar la función de llamadas al camararero mediante la interfaz diseñada | 2019-03-15 09:18 → 2019-03-21 16:29 (+6d) | 2019-03-18 09:18 → 2019-03-22 16:29 (+4d) |  | 1262.92d → 943.85d |  |
| 265 | **Función de liberar una mesa ocupada** | 2019-03-15 09:18 → 2019-03-21 16:29 (+6d) | 2019-03-18 09:18 → 2019-03-22 16:29 (+4d) |  | 1262.92d → 943.85d |  |
| 266 | Implementar la función que permite liberar mesas a camareros | 2019-03-15 09:18 → 2019-03-21 16:29 (+6d) | 2019-03-18 09:18 → 2019-03-22 16:29 (+4d) |  | 1262.92d → 943.85d |  |
| 267 | **Interfaz visual agradable** | 2019-03-15 09:18 → 2019-03-21 16:29 (+6d) | 2019-03-15 14:18 → 2019-03-22 11:29 (+7d) |  | 1312.92d → 993.85d |  |
| 268 | Programar la interfaz visual | 2019-03-15 09:18 → 2019-03-21 16:29 (+6d) | 2019-03-15 14:18 → 2019-03-22 11:29 (+7d) |  | 1312.92d → 993.85d |  |
| 269 | **Módulo de gestión de proveedores** | 2019-03-15 09:18 → 2019-03-21 16:29 (+6d) | 2019-03-20 14:18 → 2019-03-29 14:29 (+9d) | 3.5d → 5.75d | 712.92d → 12.66d |  |
| 270 | **Almacén de stock** | 2019-03-19 14:18 → 2019-03-28 14:29 (+9d) | 2019-03-20 14:18 → 2019-03-29 14:29 (+9d) |  | 712.92d → 12.66d |  |
| 271 | Programar el gestor de stock y conectarlo a la BD | 2019-03-19 14:18 → 2019-03-28 14:29 (+9d) | 2019-03-20 14:18 → 2019-03-29 14:29 (+9d) |  | 712.92d → 12.66d |  |
| 272 | **Interfaz visual agradable** | 2019-03-15 09:18 → 2019-03-21 16:29 (+6d) | 2019-03-15 14:18 → 2019-03-22 11:29 (+7d) |  | 1012.92d → 537.66d |  |
| 273 | Programar la interfaz visual | 2019-03-15 09:18 → 2019-03-21 16:29 (+6d) | 2019-03-15 14:18 → 2019-03-22 11:29 (+7d) |  | 1012.92d → 537.66d |  |
| 274 | **Módulo de cocinas/barra** | 2019-03-15 09:18 → 2019-03-21 16:29 (+6d) | 2019-03-19 11:18 → 2019-03-26 09:29 (+7d) |  | 837.92d → 362.66d |  |
| 275 | **Función de cobrar con tarjeta u otros métodos** | 2019-03-15 09:18 → 2019-03-21 16:29 (+6d) | 2019-03-19 09:18 → 2019-03-25 16:29 (+6d) |  | 862.92d → 387.66d |  |
| 276 | Programar funciones de cobro | 2019-03-15 09:18 → 2019-03-21 16:29 (+6d) | 2019-03-18 14:18 → 2019-03-25 11:29 (+7d) |  | 862.92d → 387.66d |  |
| 277 | Adaptar funciones de cobro a todos los métodos de pago | 2019-03-18 14:18 → 2019-03-25 11:29 (+7d) | 2019-03-19 09:18 → 2019-03-25 16:29 (+6d) |  | 862.92d → 387.66d |  |
| 278 | **Función de proteger los datos de las transacciones** | 2019-03-15 09:18 → 2019-03-21 16:29 (+6d) | 2019-03-18 14:18 → 2019-03-25 11:29 (+7d) |  | 912.92d → 437.66d |  |
| 279 | Asegurarse de que se guardan apropiadamente los datos | 2019-03-15 09:18 → 2019-03-21 16:29 (+6d) | 2019-03-15 14:18 → 2019-03-22 11:29 (+7d) |  | 912.92d → 437.66d |  |
| 280 | Proteger mediante encriptación o restricciones de acceso los datos | 2019-03-15 14:18 → 2019-03-22 11:29 (+7d) | 2019-03-18 14:18 → 2019-03-25 11:29 (+7d) |  | 912.92d → 437.66d |  |
| 281 | **Almacén de datos de comandas** | 2019-03-15 09:18 → 2019-03-21 16:29 (+6d) | 2019-03-19 09:18 → 2019-03-25 16:29 (+6d) |  | 837.92d → 362.66d |  |
| 282 | Programar el almacen de datos de pedidos | 2019-03-15 09:18 → 2019-03-21 16:29 (+6d) | 2019-03-19 09:18 → 2019-03-25 16:29 (+6d) |  | 837.92d → 362.66d |  |
| 283 | **Almacén de datos de mesas** | 2019-03-19 09:18 → 2019-03-25 16:29 (+6d) | 2019-03-19 11:18 → 2019-03-26 09:29 (+7d) |  | 837.92d → 362.66d |  |
| 284 | Adaptar el almacén de datos de pedidos a las mesas | 2019-03-19 09:18 → 2019-03-25 16:29 (+6d) | 2019-03-19 11:18 → 2019-03-26 09:29 (+7d) |  | 837.92d → 362.66d |  |
| 285 | **Módulo para muestra de datos y comandas** | 2019-03-20 14:18 → 2019-03-29 14:29 (+9d) | 2019-03-25 14:18 → 2019-04-05 09:59 (+11d) | 3d → 4.56d | 712.92d → 12.66d |  |
| 286 | **Función de seleccionar productos y pedidos** | 2019-03-20 14:18 → 2019-03-29 14:29 (+9d) | 2019-03-22 14:18 → 2019-04-02 14:29 (+11d) |  | 712.92d → 12.66d |  |
| 287 | Implementar navegación de menú | 2019-03-20 14:18 → 2019-03-29 14:29 (+9d) | 2019-03-22 14:18 → 2019-04-02 14:29 (+11d) |  | 712.92d → 12.66d |  |
| 288 | **Función de plasmar información del pedido** | 2019-03-20 14:18 → 2019-04-02 14:59 (+13d) | 2019-03-21 14:18 → 2019-04-03 14:59 (+13d) |  | 762.92d → 12.66d |  |
| 289 | Implementar función de información de pedido | 2019-03-20 14:18 → 2019-04-02 14:59 (+13d) | 2019-03-21 14:18 → 2019-04-03 14:59 (+13d) |  | 762.92d → 12.66d | none → 27 |
| 290 | **Función de enviar la comanda** | 2019-03-20 14:18 → 2019-03-29 14:29 (+9d) | 2019-03-21 14:18 → 2019-04-01 14:29 (+11d) |  | 887.92d → 343.85d |  |
| 291 | Imlementar función de envio de comanda | 2019-03-20 14:18 → 2019-03-29 14:29 (+9d) | 2019-03-21 14:18 → 2019-04-01 14:29 (+11d) |  | 887.92d → 343.85d |  |
| 292 | **Función de reservar mesa libre** | 2019-03-20 14:18 → 2019-03-29 14:29 (+9d) | 2019-03-21 14:18 → 2019-04-01 14:29 (+11d) |  | 912.92d → 368.85d |  |
| 293 | Implementar función de reserva | 2019-03-20 14:18 → 2019-03-29 14:29 (+9d) | 2019-03-21 14:18 → 2019-04-01 14:29 (+11d) |  | 912.92d → 368.85d |  |
| 294 | **Función de ver estado de la mesa** | 2019-03-22 14:18 → 2019-04-02 14:29 (+11d) | 2019-03-25 14:18 → 2019-04-03 14:29 (+9d) |  | 712.92d → 168.85d |  |
| 295 | Implementar función de estado | 2019-03-22 14:18 → 2019-04-02 14:29 (+11d) | 2019-03-25 14:18 → 2019-04-03 14:29 (+9d) |  | 712.92d → 168.85d |  |
| 296 | **Función de informar al cliente** | 2019-03-21 14:18 → 2019-04-03 14:59 (+13d) | 2019-03-25 09:18 → 2019-04-05 09:59 (+11d) |  | 762.92d → 12.66d |  |
| 297 | Adaptar función de comunicación para el cliente | 2019-03-21 14:18 → 2019-04-03 14:59 (+13d) | 2019-03-25 09:18 → 2019-04-05 09:59 (+11d) |  | 762.92d → 12.66d |  |
| 298 | **Función de códigos QR** | 2019-03-21 14:18 → 2019-04-01 14:29 (+11d) | 2019-03-21 16:18 → 2019-04-01 16:29 (+11d) |  | 887.92d → 343.85d |  |
| 299 | Adaptar el lector QR a nuestros programas | 2019-03-21 14:18 → 2019-04-01 14:29 (+11d) | 2019-03-21 16:18 → 2019-04-01 16:29 (+11d) |  | 887.92d → 343.85d |  |
| 300 | **Interfaz visual agradable** | 2019-03-20 14:18 → 2019-03-29 14:29 (+9d) | 2019-03-20 16:18 → 2019-03-29 16:29 (+9d) |  | 987.92d → 443.85d |  |
| 301 | Programar la interfaz visual | 2019-03-20 14:18 → 2019-03-29 14:29 (+9d) | 2019-03-20 16:18 → 2019-03-29 16:29 (+9d) |  | 987.92d → 443.85d |  |
| 302 | **Módulo de entretenimiento** | 2019-03-15 09:18 → 2019-03-21 16:29 (+6d) | 2019-03-19 09:18 → 2019-03-25 16:29 (+6d) |  | 1062.92d → 743.85d |  |
| 303 | **Función de ofrecer entretenimiento al cliente** | 2019-03-15 09:18 → 2019-03-21 16:29 (+6d) | 2019-03-15 10:18 → 2019-03-22 08:29 (+7d) |  | 1100.42d → 781.35d |  |
| 304 | Asegurar que los programas adecuados están instalados y son accesibles | 2019-03-15 09:18 → 2019-03-21 16:29 (+6d) | 2019-03-15 10:18 → 2019-03-22 08:29 (+7d) |  | 1100.42d → 781.35d |  |
| 305 | **Función de interactuar con el local** | 2019-03-15 09:18 → 2019-03-21 16:29 (+6d) | 2019-03-19 09:18 → 2019-03-25 16:29 (+6d) |  | 1062.92d → 743.85d |  |
| 306 | Preparar conexiones visuales de camaras | 2019-03-15 10:18 → 2019-03-22 08:29 (+7d) | 2019-03-15 15:18 → 2019-03-22 13:29 (+7d) |  | 1100.42d → 781.35d |  |

| ID | Task | Start | Finish | Duration | Total float | Predecessors | Other |
| --- | --- | --- | --- | --- | --- | --- | --- |
| 307 | Preparar lista de música | 2019-03-15 09:18 → 2019-03-21 16:29 (+6d) | 2019-03-15 09:48 → 2019-03-21 16:59 (+6d) |  | 1156.67d → 837.6d |  |  |
| 308 | Preparar programa de control de interacción | 2019-03-15 09:18 → 2019-03-21 16:29 (+6d) | 2019-03-18 09:18 → 2019-03-22 16:29 (+4d) |  | 1062.92d → 743.85d |  |  |
| 309 | Completar programa de control de interacción con los módulos | 2019-03-18 09:18 → 2019-03-22 16:29 (+4d) | 2019-03-19 09:18 → 2019-03-25 16:29 (+6d) |  | 1062.92d → 743.85d |  |  |
| 310 | **Interfaz visual agradable** | 2019-03-15 09:18 → 2019-03-21 16:29 (+6d) | 2019-03-15 14:18 → 2019-03-22 11:29 (+7d) |  | 1212.92d → 893.85d |  |  |
| 311 | Programar interfaz visual | 2019-03-15 09:18 → 2019-03-21 16:29 (+6d) | 2019-03-15 14:18 → 2019-03-22 11:29 (+7d) |  | 1212.92d → 893.85d |  |  |
| 312 | **Módulo de monitorización general y gerencia** | 2019-03-19 09:18 → 2019-03-25 16:29 (+6d) | 2019-03-20 09:18 → 2019-03-26 16:29 (+6d) |  | 1062.92d → 743.85d |  |  |
| 313 | **Almacén de datos legales** | 2019-03-19 09:18 → 2019-03-25 16:29 (+6d) | 2019-03-20 09:18 → 2019-03-26 16:29 (+6d) |  | 1062.92d → 743.85d |  |  |
| 314 | Preparar BD y gestión de BD | 2019-03-19 09:18 → 2019-03-25 16:29 (+6d) | 2019-03-20 09:18 → 2019-03-26 16:29 (+6d) |  | 1062.92d → 743.85d |  |  |
| 315 | Revisar cumplimiento de requerimientos legales de la BD | 2019-03-19 09:18 → 2019-03-25 16:29 (+6d) | 2019-03-19 11:18 → 2019-03-26 09:29 (+7d) |  | 1137.92d → 818.85d |  |  |
| 316 | **Almacén de nóminas** | 2019-03-19 09:18 → 2019-03-25 16:29 (+6d) | 2019-03-20 09:18 → 2019-03-26 16:29 (+6d) |  | 1062.92d → 743.85d |  |  |
| 317 | Preparar BD y gestión de BD para nóminas | 2019-03-19 09:18 → 2019-03-25 16:29 (+6d) | 2019-03-20 09:18 → 2019-03-26 16:29 (+6d) |  | 1062.92d → 743.85d |  |  |
| 318 | Automatizar las nóminas y su almacenamiento de datos | 2019-03-19 09:18 → 2019-03-25 16:29 (+6d) | 2019-03-20 09:18 → 2019-03-26 16:29 (+6d) |  | 1062.92d → 743.85d |  |  |
| 319 | **Interfaz visual agrdable** | 2019-03-19 09:18 → 2019-03-25 16:29 (+6d) | 2019-03-19 14:18 → 2019-03-26 11:29 (+7d) |  | 1112.92d → 793.85d |  |  |
| 320 | Programar la interfaz visual | 2019-03-19 09:18 → 2019-03-25 16:29 (+6d) | 2019-03-19 14:18 → 2019-03-26 11:29 (+7d) |  | 1112.92d → 793.85d |  |  |
| 321 | **Depuración** | 2019-03-25 14:18 → 2019-04-05 09:59 (+11d) | 2019-03-29 15:48 → 2019-04-11 11:59 (+13d) | 4.19d → 4.25d | 712.92d → 12.66d |  |  |
| 322 | **Localización de defectos** | 2019-03-25 14:18 → 2019-04-05 09:59 (+11d) | 2019-03-26 10:48 → 2019-04-05 16:29 (+10d) |  | 712.92d → 12.66d |  |  |
| 323 | **Listado de defectos** | 2019-03-25 14:18 → 2019-04-05 09:59 (+11d) | 2019-03-26 09:18 → 2019-04-05 14:59 (+10d) |  | 712.92d → 12.66d |  |  |
| 324 | Realizar un listado intensivo de defectos encontrados en la codificación | 2019-03-25 14:18 → 2019-04-05 09:59 (+11d) | 2019-03-26 09:18 → 2019-04-05 14:59 (+10d) |  | 712.92d → 12.66d |  |  |
| 325 | **Ubicación de defectos** | 2019-03-26 09:18 → 2019-04-05 14:59 (+10d) | 2019-03-26 10:48 → 2019-04-05 16:29 (+10d) |  | 712.92d → 12.66d |  |  |
| 326 | Completar listado con posiciones exactas (linea, programa, módulo, etc) de los errores | 2019-03-26 09:18 → 2019-04-05 14:59 (+10d) | 2019-03-26 09:48 → 2019-04-05 15:29 (+10d) |  | 712.92d → 12.66d |  |  |
| 327 | Incluir en listado posibles relaciones del error con otro módulo o trozo de código | 2019-03-26 09:48 → 2019-04-05 15:29 (+10d) | 2019-03-26 10:48 → 2019-04-05 16:29 (+10d) |  | 712.92d → 12.66d |  |  |
| 328 | **Corrección de defectos** | 2019-03-26 10:48 → 2019-04-05 16:29 (+10d) | 2019-03-29 15:48 → 2019-04-11 11:59 (+13d) | 3.5d → 3.56d | 712.92d → 12.66d |  |  |
| 329 | **Modificaciones necesarias** | 2019-03-26 10:48 → 2019-04-05 16:29 (+10d) | 2019-03-28 15:48 → 2019-04-10 11:29 (+13d) |  | 712.92d → 12.66d |  |  |
| 330 | Implementar las modificaciones y arreglos de la codificación | 2019-03-26 10:48 → 2019-04-05 16:29 (+10d) | 2019-03-28 15:48 → 2019-04-10 11:29 (+13d) |  | 712.92d → 12.66d |  |  |
| 331 | **Revisión de corrección del defecto** | 2019-03-28 15:48 → 2019-04-10 11:59 (+13d) | 2019-03-29 15:48 → 2019-04-11 11:59 (+13d) |  | 712.92d → 12.66d |  |  |
| 332 | Revisar todos los errores del listado para comprobar que han sido arreglados correctamente | 2019-03-28 15:48 → 2019-04-10 11:59 (+13d) | 2019-03-29 15:48 → 2019-04-11 11:59 (+13d) |  | 712.92d → 12.66d | none → 28 |  |
| 333 | **Pruebas del sistema y sus componentes** | 2019-03-29 15:48 → 2019-04-11 11:59 (+13d) | 2019-04-19 15:58 → 2019-05-02 14:39 (+13d) | 15.02d → 15.21d | 712.92d → none |  |  |
| 334 | **Planificación de pruebas** | 2019-03-29 15:48 → 2019-04-11 11:59 (+13d) | 2019-04-03 10:48 → 2019-04-15 16:59 (+12d) |  | 712.92d → 12.66d |  |  |
| 335 | **Pruebas de aceptación** | 2019-03-29 15:48 → 2019-04-11 11:59 (+13d) | 2019-04-01 10:48 → 2019-04-11 16:59 (+10d) |  | 712.92d → 12.66d |  |  |
| 336 | **Pruebas para los gerentes de local** | 2019-03-29 15:48 → 2019-04-11 11:59 (+13d) | 2019-04-01 10:48 → 2019-04-11 16:59 (+10d) |  | 712.92d → 12.66d |  |  |
| 337 | Planear las pruebas basándose en su diseño | 2019-03-29 15:48 → 2019-04-11 11:59 (+13d) | 2019-04-01 10:48 → 2019-04-11 16:59 (+10d) |  | 712.92d → 12.66d |  |  |
| 338 | **Pruebas sobre el personal de local** | 2019-03-29 15:48 → 2019-04-11 11:59 (+13d) | 2019-04-01 10:48 → 2019-04-11 16:59 (+10d) |  | 712.92d → 12.66d |  |  |
| 339 | Planear las pruebas basándose en su diseño | 2019-03-29 15:48 → 2019-04-11 11:59 (+13d) | 2019-04-01 10:48 → 2019-04-11 16:59 (+10d) |  | 712.92d → 12.66d |  |  |
| 340 | **Pruebas sobre los usuarios del local** | 2019-03-29 15:48 → 2019-04-11 11:59 (+13d) | 2019-04-01 10:48 → 2019-04-11 16:59 (+10d) |  | 712.92d → 12.66d |  |  |
| 341 | Planear las pruebas basándose en su diseño | 2019-03-29 15:48 → 2019-04-11 11:59 (+13d) | 2019-04-01 10:48 → 2019-04-11 16:59 (+10d) |  | 712.92d → 12.66d |  |  |
| 342 | **Pruebas para los proveedores** | 2019-03-29 15:48 → 2019-04-11 11:59 (+13d) | 2019-04-01 10:48 → 2019-04-11 16:59 (+10d) |  | 712.92d → 12.66d |  |  |
| 343 | Planear las pruebas basándose en su diseño | 2019-04-01 10:48 → 2019-04-11 11:59 (+10d) | 2019-04-01 15:48 → 2019-04-11 16:59 (+10d) |  | 712.92d → 12.66d |  | resources Programador Junior1 → Analista-Diseñador |
| 344 | **Pruebas del sistema** | 2019-04-01 10:48 → 2019-04-11 16:59 (+10d) | 2019-04-01 15:48 → 2019-04-12 11:59 (+11d) |  | 712.92d → 12.66d |  |  |
| 345 | **Pruebas para comunicación con PayPal** | 2019-04-01 10:48 → 2019-04-11 16:59 (+10d) | 2019-04-01 15:48 → 2019-04-12 11:59 (+11d) |  | 712.92d → 12.66d |  |  |
| 346 | Planear las pruebas basándose en su diseño | 2019-03-29 15:48 → 2019-04-11 16:59 (+13d) | 2019-04-01 10:48 → 2019-04-12 11:59 (+11d) |  | 712.92d → 12.66d |  | resources Analista-Diseñador → Programador Junior1 |
| 347 | **Pruebas para comunicación con terminales TPV** | 2019-04-01 10:48 → 2019-04-11 16:59 (+10d) | 2019-04-01 15:48 → 2019-04-12 11:59 (+11d) |  | 712.92d → 12.66d |  |  |
| 348 | Planear las pruebas basándose en su diseño | 2019-04-01 10:48 → 2019-04-11 16:59 (+10d) | 2019-04-01 15:48 → 2019-04-12 11:59 (+11d) |  | 712.92d → 12.66d |  |  |
| 349 | **Pruebas para comunicación con tablets de local** | 2019-04-01 10:48 → 2019-04-11 16:59 (+10d) | 2019-04-01 15:48 → 2019-04-12 11:59 (+11d) |  | 712.92d → 12.66d |  |  |
| 350 | Planear las pruebas basándose en su diseño | 2019-04-02 10:48 → 2019-04-11 16:59 (+9d) | 2019-04-02 15:48 → 2019-04-12 11:59 (+10d) |  | 712.92d → 12.66d |  | resources Programador Junior1 → Programador Senior |
| 351 | **Pruebas de integración** | 2019-04-01 15:48 → 2019-04-12 11:59 (+11d) | 2019-04-02 10:48 → 2019-04-12 16:59 (+10d) |  | 712.92d → 12.66d |  |  |
| 352 | **Pruebas para comunicación entre módulos** | 2019-04-01 15:48 → 2019-04-12 11:59 (+11d) | 2019-04-02 10:48 → 2019-04-12 16:59 (+10d) |  | 712.92d → 12.66d |  |  |
| 353 | Planear las pruebas basándose en su diseño | 2019-04-01 10:48 → 2019-04-12 11:59 (+11d) | 2019-04-01 15:48 → 2019-04-12 16:59 (+11d) |  | 712.92d → 12.66d |  |  |
| 354 | **Pruebas de unidad** | 2019-04-02 10:48 → 2019-04-12 16:59 (+10d) | 2019-04-03 10:48 → 2019-04-15 16:59 (+12d) |  | 712.92d → 12.66d |  |  |
| 355 | **Pruebas de módulo de monitorización general del sistema** | 2019-04-02 10:48 → 2019-04-12 16:59 (+10d) | 2019-04-02 15:48 → 2019-04-15 11:59 (+13d) |  | 712.92d → 12.66d |  |  |
| 356 | Planear las pruebas basándose en su diseño | 2019-04-01 15:48 → 2019-04-12 16:59 (+11d) | 2019-04-02 10:48 → 2019-04-15 11:59 (+13d) |  | 712.92d → 12.66d |  | resources Programador Senior → Programador Junior1 |
| 357 | **Pruebas de módulo de entretenimiento** | 2019-04-02 10:48 → 2019-04-12 16:59 (+10d) | 2019-04-02 15:48 → 2019-04-15 11:59 (+13d) |  | 712.92d → 12.66d |  |  |
| 358 | Planear las pruebas basándose en su diseño | 2019-04-02 10:48 → 2019-04-12 16:59 (+10d) | 2019-04-02 15:48 → 2019-04-15 11:59 (+13d) |  | 712.92d → 12.66d |  |  |
| 359 | **Pruebas de módulo para muestra de datos y comandas** | 2019-04-02 10:48 → 2019-04-12 16:59 (+10d) | 2019-04-02 15:48 → 2019-04-15 11:59 (+13d) |  | 712.92d → 12.66d |  |  |
| 360 | Planear las pruebas basándose en su diseño | 2019-04-02 10:48 → 2019-04-12 16:59 (+10d) | 2019-04-02 15:48 → 2019-04-15 11:59 (+13d) |  | 712.92d → 12.66d |  |  |
| 361 | **Pruebas de módulo de gestión de proveedores** | 2019-04-02 15:48 → 2019-04-15 11:59 (+13d) | 2019-04-03 10:48 → 2019-04-15 16:59 (+12d) |  | 712.92d → 12.66d |  |  |
| 362 | Planear las pruebas basándose en su diseño | 2019-04-02 15:48 → 2019-04-15 11:59 (+13d) | 2019-04-03 10:48 → 2019-04-15 16:59 (+12d) |  | 712.92d → 12.66d |  |  |
| 363 | **Pruebas de módulo del camarero** | 2019-04-02 15:48 → 2019-04-15 11:59 (+13d) | 2019-04-03 10:48 → 2019-04-15 16:59 (+12d) |  | 712.92d → 12.66d |  |  |
| 364 | Planear las pruebas basándose en su diseño | 2019-04-02 15:48 → 2019-04-15 11:59 (+13d) | 2019-04-03 10:48 → 2019-04-15 16:59 (+12d) |  | 712.92d → 12.66d |  |  |
| 365 | **Pruebas del módulo de cocinas/barra** | 2019-04-02 15:48 → 2019-04-15 11:59 (+13d) | 2019-04-03 10:48 → 2019-04-15 16:59 (+12d) |  | 712.92d → 12.66d |  |  |
| 366 | Planear las pruebas basándose en su diseño | 2019-04-02 15:48 → 2019-04-15 11:59 (+13d) | 2019-04-03 10:48 → 2019-04-15 16:59 (+12d) |  | 712.92d → 12.66d |  |  |
| 367 | **Ejecución de pruebas** | 2019-04-03 10:48 → 2019-04-15 16:59 (+12d) | 2019-04-17 10:48 → 2019-04-30 08:29 (+13d) | 10d → 10.06d | 712.92d → 12.66d |  |  |
| 368 | **Ejecución de casos de prueba** | 2019-04-03 10:48 → 2019-04-15 16:59 (+12d) | 2019-04-08 10:48 → 2019-04-18 16:59 (+10d) |  | 712.92d → 12.66d |  |  |
| 369 | **Ejecución de conjunto de casos de unidad** | 2019-04-03 10:48 → 2019-04-15 16:59 (+12d) | 2019-04-05 10:48 → 2019-04-17 16:59 (+12d) |  | 812.92d → 112.66d |  |  |
| 370 | Dividir los equipos para ejecutar las pruebas de cada unidad | 2019-04-03 10:48 → 2019-04-15 16:59 (+12d) | 2019-04-03 15:48 → 2019-04-16 11:59 (+13d) |  | 712.92d → 12.66d |  |  |
| 371 | Ejecutar las pruebas de cada módulo individual | 2019-04-03 10:48 → 2019-04-15 16:59 (+12d) | 2019-04-05 10:48 → 2019-04-17 16:59 (+12d) |  | 812.92d → 112.66d | none → 29 |  |
| 372 | **Ejecución de conjunto de casos de integración** | 2019-04-03 10:48 → 2019-04-15 16:59 (+12d) | 2019-04-05 15:48 → 2019-04-18 11:59 (+13d) |  | 762.92d → 62.66d |  |  |
| 373 | Ejecutar las pruebas para comprobar que la integración de módulos no tiene fallos | 2019-04-03 10:48 → 2019-04-15 16:59 (+12d) | 2019-04-05 15:48 → 2019-04-18 11:59 (+13d) |  | 762.92d → 62.66d |  |  |
| 374 | **Ejecución de conjunto de casos de sistema** | 2019-04-03 10:48 → 2019-04-15 16:59 (+12d) | 2019-04-05 15:48 → 2019-04-18 11:59 (+13d) |  | 762.92d → 62.66d |  |  |
| 375 | Ejecutar las pruebas de sistema | 2019-04-03 10:48 → 2019-04-15 16:59 (+12d) | 2019-04-05 15:48 → 2019-04-18 11:59 (+13d) |  | 762.92d → 62.66d |  |  |
| 376 | **Ejecución de conjunto de casos de validación** | 2019-04-03 15:48 → 2019-04-16 11:59 (+13d) | 2019-04-08 10:48 → 2019-04-18 16:59 (+10d) |  | 712.92d → 12.66d |  |  |

| ID | Task | Start | Finish | Duration | Total float | Predecessors |
| --- | --- | --- | --- | --- | --- | --- |
| 377 | Ejecutar las pruebas de validación del programa | 2019-04-03 15:48 → 2019-04-16 11:59 (+13d) | 2019-04-08 10:48 → 2019-04-18 16:59 (+10d) |  | 712.92d → 12.66d |  |
| 378 | **Listado de errores** | 2019-04-08 10:48 → 2019-04-18 16:59 (+10d) | 2019-04-10 15:48 → 2019-04-23 11:59 (+13d) |  | 712.92d → 12.66d |  |
| 379 | **Enumeración de errores graves** | 2019-04-08 10:48 → 2019-04-18 16:59 (+10d) | 2019-04-10 10:48 → 2019-04-22 16:59 (+12d) |  | 712.92d → 12.66d |  |
| 380 | Crear un listado con los errores que se consideran más graves | 2019-04-08 10:48 → 2019-04-18 16:59 (+10d) | 2019-04-08 15:48 → 2019-04-19 11:59 (+11d) |  | 712.92d → 12.66d |  |
| 381 | Analizar cuales de los errores son tan graves como se estima y cuales pueden desestimarse | 2019-04-08 15:48 → 2019-04-19 11:59 (+11d) | 2019-04-10 10:48 → 2019-04-22 16:59 (+12d) |  | 712.92d → 12.66d |  |
| 382 | **Desestimación de errores leves o de otro tipo** | 2019-04-10 10:48 → 2019-04-22 16:59 (+12d) | 2019-04-10 15:48 → 2019-04-23 11:59 (+13d) |  | 712.92d → 12.66d |  |
| 383 | Analizar los errores leves para observar que alguna combinación de estos no cause problemas graves | 2019-04-10 10:48 → 2019-04-22 16:59 (+12d) | 2019-04-10 15:48 → 2019-04-23 11:59 (+13d) |  | 712.92d → 12.66d |  |
| 384 | **Corrección de errores** | 2019-04-10 15:48 → 2019-04-23 11:59 (+13d) | 2019-04-15 10:48 → 2019-04-26 08:29 (+11d) | 2.5d → 2.56d | 712.92d → 12.66d |  |
| 385 | **Depuración de errores** | 2019-04-10 15:48 → 2019-04-23 11:59 (+13d) | 2019-04-12 15:48 → 2019-04-25 13:29 (+13d) | 2d → 2.06d | 712.92d → 12.66d |  |
| 386 | Arreglar todos los errores graves | 2019-04-10 15:48 → 2019-04-23 13:29 (+13d) | 2019-04-12 15:48 → 2019-04-25 13:29 (+13d) |  | 712.92d → 12.66d | none → 30 |
| 387 | Arreglar los errores leves que causen errores graves como conjunto | 2019-04-10 15:48 → 2019-04-23 11:59 (+13d) | 2019-04-12 15:48 → 2019-04-25 11:59 (+13d) |  | 712.92d → 18.85d |  |
| 388 | **Verificación de corrección** | 2019-04-12 15:48 → 2019-04-25 13:29 (+13d) | 2019-04-15 10:48 → 2019-04-26 08:29 (+11d) |  | 712.92d → 12.66d |  |
| 389 | Comprobar que las correcciones han sido realizadas sin causar mas errores | 2019-04-12 15:48 → 2019-04-25 13:29 (+13d) | 2019-04-15 10:48 → 2019-04-26 08:29 (+11d) |  | 712.92d → 12.66d |  |
| 390 | **Verificación de terminación** | 2019-04-15 10:48 → 2019-04-26 08:29 (+11d) | 2019-04-17 10:48 → 2019-04-30 08:29 (+13d) |  | 712.92d → 12.66d |  |
| 391 | **Revisión de listado de errores** | 2019-04-15 10:48 → 2019-04-26 08:29 (+11d) | 2019-04-16 15:48 → 2019-04-29 13:29 (+13d) |  | 712.92d → 12.66d |  |
| 392 | Revisar el listado de errores e informe de correcciones | 2019-04-15 10:48 → 2019-04-26 08:29 (+11d) | 2019-04-16 15:48 → 2019-04-29 13:29 (+13d) |  | 712.92d → 12.66d |  |
| 393 | **Aprobación formal de finalización** | 2019-04-16 15:48 → 2019-04-29 13:29 (+13d) | 2019-04-17 10:48 → 2019-04-30 08:29 (+13d) |  | 712.92d → 12.66d |  |
| 394 | Reunirse con el encargado para formalizar la validación e informar del progreso semanal | 2019-04-16 15:48 → 2019-04-29 13:29 (+13d) | 2019-04-17 10:48 → 2019-04-30 08:29 (+13d) |  | 712.92d → 12.66d |  |
| 395 | **Análisis de errores y evaluación** | 2019-04-17 10:48 → 2019-04-30 08:29 (+13d) | 2019-04-19 15:58 → 2019-05-02 14:39 (+13d) | 2.52d → 2.65d | 712.92d → none |  |
| 396 | **Creación de documento de errores** | 2019-04-17 10:48 → 2019-04-30 09:29 (+13d) | 2019-04-18 10:48 → 2019-05-01 09:29 (+13d) |  | 712.92d → none |  |
| 397 | Redactar documento de errores | 2019-04-17 10:48 → 2019-04-30 09:29 (+13d) | 2019-04-18 10:48 → 2019-05-01 09:29 (+13d) |  | 712.92d → none | none → 31 |
| 398 | **Catalogación de errores** | 2019-04-17 10:48 → 2019-04-30 08:29 (+13d) | 2019-04-18 10:48 → 2019-05-01 08:29 (+13d) |  | 712.92d → 12.66d |  |
| 399 | Catalogar errores basandose en el análisis realizado en la ejecución de pruebas | 2019-04-17 10:48 → 2019-04-30 08:29 (+13d) | 2019-04-18 10:48 → 2019-05-01 08:29 (+13d) |  | 712.92d → 12.66d |  |
| 400 | **Realización de análisis estadísticos** | 2019-04-18 10:48 → 2019-05-01 09:29 (+13d) | 2019-04-19 15:48 → 2019-05-02 14:29 (+13d) |  | 712.92d → none |  |
| 401 | Realizar análisis estadístico de errores | 2019-04-18 10:48 → 2019-05-01 09:29 (+13d) | 2019-04-19 10:48 → 2019-05-02 09:29 (+13d) |  | 712.92d → none |  |
| 402 | Redactar informe estadístico | 2019-04-19 10:48 → 2019-05-02 09:29 (+13d) | 2019-04-19 15:48 → 2019-05-02 14:29 (+13d) |  | 712.92d → none |  |
| 403 | **Adición al archivo de proyectos de la empresa** | 2019-04-19 15:48 → 2019-05-02 14:29 (+13d) | 2019-04-19 15:58 → 2019-05-02 14:39 (+13d) |  | 712.92d → none |  |
| 404 | Añadir los documentos creados al archivo de la empresa | 2019-04-19 15:48 → 2019-05-02 14:29 (+13d) | 2019-04-19 15:58 → 2019-05-02 14:39 (+13d) |  | 712.92d → none |  |

## Version 4 (saved 2018-12-18)

Note of the change: Parte 1 cambios abraham

Last finish stays 2019-05-02.

Changed:

| ID | Task | Start | Finish | Duration | Total float |
| --- | --- | --- | --- | --- | --- |
| 1 | **Proyecto de sistema para bar tecnológico** |  |  | 87.58d? → 87.58d |  |
| 2 | **Tareas de Gestión** |  |  | 86d? → 86d |  |
| 3 | **Tareas de riesgos** |  | 2019-04-01 11:40 → 2019-04-01 09:30 | 64.33d? → 64.06d | 2324.95d → 2352.03d |
| 6 | Control de riesgos y daños 3 |  | 2019-04-01 11:40 → 2019-04-01 09:30 | 0.33d? → 0.06d | 2237.45d → 2264.53d |
| 37 | **Tareas de gestión de Costes** |  |  | 75.94d? → 75.94d |  |
| 38 | Control de costes 1 |  |  | 0.88d? → 0.88d |  |
| 39 | Control de costes 2 |  |  | 0.88d? → 0.88d |  |
| 40 | Control de costes 3 |  |  | 0.88d? → 0.88d |  |
| 43 | Control de costes 6 | 2019-04-01 11:40 → 2019-04-01 09:30 | 2019-04-02 10:40 → 2019-04-02 08:30 |  | 2237.45d → 2264.53d |
| 44 | Control de costes 7 |  |  | 0.88d? → 0.88d |  |
| 45 | Control de costes 8 |  |  | 0.88d? → 0.88d |  |
| 46 | Informe de costes 1 |  |  | 0.88d? → 0.88d |  |
| 47 | Informe de costes 2 |  |  | 0.88d? → 0.88d |  |
| 48 | Informe de costes 3 |  |  | 0.88d? → 0.88d |  |
| 50 | Informe de costes 5 |  |  | 0.88d? → 0.88d |  |
| 51 | Informe de costes 6 | 2019-04-01 11:40 → 2019-04-01 09:30 | 2019-04-02 10:40 → 2019-04-02 08:30 |  | 2237.45d → 2264.53d |
| 52 | Informe de costes 7 |  |  | 0.88d? → 0.88d |  |
| 53 | Informe de costes 8 |  |  | 0.88d? → 0.88d |  |

## Version 5 (saved 2018-12-18)

Note of the change: apaño costes 1

Last finish stays 2019-05-02.

Changed:

| ID | Task | Start | Finish | Duration | Total float |
| --- | --- | --- | --- | --- | --- |
| 2 | **Tareas de Gestión** |  | 2019-05-01 08:59 → 2019-04-30 10:29 (-1d) | 86d → 85.19d | 158.39d → 239.69d |
| 7 | **Respuestas iniciales a riesgos** |  | 2019-01-08 09:00 → 2019-01-04 09:00 (-4d) | 5d → 3d | 8258.28d → 8458.28d |
| 8 | Crear Plan de incentivos |  | 2019-01-02 09:30 → 2019-01-01 09:59 (-1d) | 1d → 0.06d | 8652.03d → 8745.83d |
| 9 | Plan de comportamiento | 2019-01-01 09:00 → 2019-01-02 09:30 (+1d) | 2019-01-01 14:00 → 2019-01-02 09:59 (+1d) | 0.5d → 0.06d | 2977.66d → 2915.21d |
| 10 | Crear plan de errores y problemas | 2019-01-01 14:00 → 2019-01-02 09:59 (+1d) | 2019-01-01 16:00 → 2019-01-02 11:59 (+1d) |  | 2977.66d → 2915.21d |
| 11 | Formación de empleados |  | 2019-01-08 09:00 → 2019-01-04 09:00 (-4d) | 5d → 3d | 8258.28d → 8458.28d |
| 37 | **Tareas de gestión de Costes** |  | 2019-05-01 08:59 → 2019-04-30 10:29 (-1d) | 75.94d → 75.12d | 158.39d → 239.69d |
| 38 | Control de costes 1 |  | 2019-01-16 08:29 → 2019-01-15 09:59 (-1d) | 0.88d → 0.06d | 7664.58d → 7745.89d |
| 39 | Control de costes 2 |  | 2019-01-30 17:00 → 2019-01-30 09:29 | 0.88d → 0.06d | 6570.78d → 6652.08d |
| 40 | Control de costes 3 |  | 2019-02-15 17:00 → 2019-02-15 09:29 | 0.88d → 0.06d | 5370.78d → 5452.08d |
| 41 | Control de costes 4 |  | 2019-03-04 16:00 → 2019-03-04 08:29 | 0.88d → 0.06d | 4283.28d → 4364.58d |
| 42 | Control de costes 5 |  | 2019-03-18 16:00 → 2019-03-18 08:29 | 0.88d → 0.06d | 3283.28d → 3364.58d |
| 43 | Control de costes 6 |  | 2019-04-02 08:30 → 2019-04-01 09:59 (-1d) | 0.88d → 0.06d | 2264.53d → 2345.83d |
| 44 | Control de costes 7 |  | 2019-04-15 17:00 → 2019-04-15 09:29 | 0.88d → 0.06d | 1270.78d → 1352.08d |
| 45 | Control de costes 8 |  | 2019-05-01 08:59 → 2019-04-30 10:29 (-1d) | 0.88d → 0.06d | 158.39d → 239.69d |
| 46 | Informe de costes 1 |  | 2019-01-16 08:29 → 2019-01-15 09:59 (-1d) | 0.88d → 0.06d | 7664.58d → 7745.89d |
| 47 | Informe de costes 2 |  | 2019-01-30 17:00 → 2019-01-30 09:29 | 0.88d → 0.06d | 6570.78d → 6652.08d |
| 48 | Informe de costes 3 |  | 2019-02-15 17:00 → 2019-02-15 09:29 | 0.88d → 0.06d | 5370.78d → 5452.08d |
| 49 | Informe de costes 4 |  | 2019-03-04 16:00 → 2019-03-04 08:29 | 0.88d → 0.06d | 4283.28d → 4364.58d |
| 50 | Informe de costes 5 |  | 2019-03-18 16:00 → 2019-03-18 08:29 | 0.88d → 0.06d | 3283.28d → 3364.58d |
| 51 | Informe de costes 6 |  | 2019-04-02 08:30 → 2019-04-01 09:59 (-1d) | 0.88d → 0.06d | 2264.53d → 2345.83d |
| 52 | Informe de costes 7 |  | 2019-04-15 17:00 → 2019-04-15 09:29 | 0.88d → 0.06d | 1270.78d → 1352.08d |
| 53 | Informe de costes 8 |  | 2019-05-01 08:59 → 2019-04-30 10:29 (-1d) | 0.88d → 0.06d | 158.39d → 239.69d |
| 54 | **Análisis de requisitos del sistema** | 2019-01-01 16:00 → 2019-01-02 11:59 (+1d) |  | 19.25d → 18.62d |  |
| 55 | **Identificación de las necesidades del cliente** | 2019-01-01 16:00 → 2019-01-02 11:59 (+1d) | 2019-01-07 16:48 → 2019-01-08 15:17 (+1d) | 4.1d → 4.29d | 2977.66d → 2896.46d |
| 56 | **Especificación informal del sistema** | 2019-01-01 16:00 → 2019-01-02 11:59 (+1d) | 2019-01-07 16:48 → 2019-01-08 15:17 (+1d) | 4.1d → 4.29d | 2977.66d → 2896.46d |
| 57 | **Técnica de obtención de requisitos** | 2019-01-01 16:00 → 2019-01-02 11:59 (+1d) | 2019-01-04 16:00 → 2019-01-07 11:59 (+3d) |  | 2977.66d → 2915.21d |
| 58 | Preparar preguntas y temáticas para entrevista inicial | 2019-01-01 16:00 → 2019-01-02 11:59 (+1d) | 2019-01-02 11:00 → 2019-01-02 16:59 |  | 2977.66d → 2915.21d |
| 59 | Entrevistar jefe de proyecto | 2019-01-02 11:00 → 2019-01-02 16:59 | 2019-01-02 16:00 → 2019-01-03 11:59 (+1d) |  | 2977.66d → 2915.21d |
| 60 | Cuestionar futuros empleados para conocer sus necesidades | 2019-01-02 16:00 → 2019-01-03 11:59 (+1d) | 2019-01-03 16:00 → 2019-01-04 11:59 (+1d) |  | 2977.66d → 2915.21d |
| 61 | Cuestionar posibles clientes para conocer sus preferencias | 2019-01-03 16:00 → 2019-01-04 11:59 (+1d) | 2019-01-04 16:00 → 2019-01-07 11:59 (+3d) |  | 2977.66d → 2915.21d |
| 62 | **Determinación informal de aspectos del sistema** | 2019-01-04 16:00 → 2019-01-07 11:59 (+3d) | 2019-01-07 16:48 → 2019-01-08 15:17 (+1d) | 1.1d → 1.29d | 2977.66d → 2896.46d |
| 63 | Determinar necesidades de jefe de proyectos | 2019-01-04 16:00 → 2019-01-07 11:59 (+3d) | 2019-01-07 11:00 → 2019-01-07 16:59 |  | 2977.66d → 2915.21d |
| 64 | **Determinación informal de funciones** | 2019-01-07 11:00 → 2019-01-08 09:29 (+1d) | 2019-01-07 16:48 → 2019-01-08 15:17 (+1d) |  | 2977.66d → 2896.46d |
| 65 | Cuestionar futuros empleados para conocer sus necesidades | 2019-01-07 11:00 → 2019-01-08 09:29 (+1d) | 2019-01-07 11:48 → 2019-01-08 10:17 (+1d) |  | 2977.66d → 2896.46d |
| 66 | Cuestionar posibles clientes para conocer sus preferencias | 2019-01-07 16:00 → 2019-01-08 14:29 (+1d) | 2019-01-07 16:48 → 2019-01-08 15:17 (+1d) |  | 2977.66d → 2896.46d |
| 67 | **Determinación informal de información manejada** | 2019-01-07 11:00 → 2019-01-07 16:59 | 2019-01-07 13:36 → 2019-01-08 11:05 (+1d) | 0.2d → 0.39d | 2987.66d → 2906.46d |
| 68 | Cuestionar futuros empleados para conocer sus necesidades | 2019-01-07 11:48 → 2019-01-08 10:17 (+1d) | 2019-01-07 13:36 → 2019-01-08 11:05 (+1d) |  | 2977.66d → 2896.46d |
| 69 | Cuestionar posibles clientes para conocer sus preferencias | 2019-01-07 11:00 → 2019-01-07 16:59 | 2019-01-07 11:48 → 2019-01-08 08:47 (+1d) |  | 2997.66d → 2935.21d |
| 70 | **Determinación informal de interfaces del sistema** | 2019-01-07 11:48 → 2019-01-08 08:47 (+1d) | 2019-01-07 14:24 → 2019-01-08 11:53 (+1d) | 0.2d → 0.39d | 2987.66d → 2906.46d |
| 71 | Cuestionar futuros empleados para conocer sus necesidades | 2019-01-07 13:36 → 2019-01-08 11:05 (+1d) | 2019-01-07 14:24 → 2019-01-08 11:53 (+1d) |  | 2977.66d → 2896.46d |
| 72 | Cuestionar posibles clientes para conocer sus preferencias | 2019-01-07 11:48 → 2019-01-08 08:47 (+1d) | 2019-01-07 13:36 → 2019-01-08 09:35 (+1d) |  | 2997.66d → 2935.21d |
| 73 | **Determinación informal de rendimiento del sistema** | 2019-01-07 13:36 → 2019-01-08 09:35 (+1d) | 2019-01-07 15:12 → 2019-01-08 13:41 (+1d) | 0.2d → 0.39d | 2987.66d → 2906.46d |
| 74 | Cuestionar futuros empleados para conocer sus necesidades | 2019-01-07 14:24 → 2019-01-08 11:53 (+1d) | 2019-01-07 15:12 → 2019-01-08 13:41 (+1d) |  | 2977.66d → 2896.46d |
| 75 | Cuestionar posibles clientes para conocer sus preferencias | 2019-01-07 13:36 → 2019-01-08 09:35 (+1d) | 2019-01-07 14:24 → 2019-01-08 10:23 (+1d) |  | 2997.66d → 2935.21d |
| 76 | **Determinación informal de las restricciones del sistema** | 2019-01-07 14:24 → 2019-01-08 10:23 (+1d) | 2019-01-07 16:00 → 2019-01-08 14:29 (+1d) | 0.2d → 0.39d | 2987.66d → 2906.46d |
| 77 | Cuestionar futuros empleados para conocer sus necesidades | 2019-01-07 15:12 → 2019-01-08 13:41 (+1d) | 2019-01-07 16:00 → 2019-01-08 14:29 (+1d) |  | 2977.66d → 2896.46d |
| 78 | Cuestionar posibles clientes para conocer sus preferencias | 2019-01-07 14:24 → 2019-01-08 10:23 (+1d) | 2019-01-07 15:12 → 2019-01-08 11:11 (+1d) |  | 2997.66d → 2935.21d |
| 79 | **Asignación de funciones a cada elemento del sistema** | 2019-01-07 16:48 → 2019-01-08 15:17 (+1d) |  | 6.59d → 5.78d |  |
| 80 | **Alternativas de creación del sistema** | 2019-01-07 16:48 → 2019-01-08 15:17 (+1d) | 2019-01-10 11:48 → 2019-01-11 10:17 (+1d) |  | 2977.66d → 2896.46d |
| 81 | Buscar tecnologías y metodologías alternativas | 2019-01-07 16:48 → 2019-01-08 15:17 (+1d) | 2019-01-10 11:48 → 2019-01-11 10:17 (+1d) |  | 2977.66d → 2896.46d |
| 82 | Informar del progreso de la semana al Jefe de proyecto | 2019-01-10 11:48 → 2019-01-11 10:17 (+1d) | 2019-01-10 13:48 → 2019-01-11 11:17 (+1d) |  | 2977.66d → 2896.46d |
| 83 | **Validación de las alternativas de creación del sistema** | 2019-01-10 13:48 → 2019-01-11 11:17 (+1d) |  | 3.96d → 3.15d |  |
| 84 | Analizar las alternativas obtenidas | 2019-01-10 13:48 → 2019-01-11 11:17 (+1d) | 2019-01-11 13:48 → 2019-01-14 11:17 (+3d) |  | 2977.66d → 2896.46d |
| 158 | **Diseño módulo de cocinas/barras** | 2019-01-03 09:00 → 2019-02-01 16:29 (+29d) | 2019-01-04 09:00 → 2019-02-04 16:29 (+31d) |  | 2518.85d → 337.66d |

## Version 6 (saved 2018-12-21)

Note of the change: correcciones 3

Last finish stays 2019-05-02.

Changed:

| ID | Task | Start | Finish | Duration | Total float | Other |
| --- | --- | --- | --- | --- | --- | --- |
| 1 | **Proyecto de sistema para bar tecnológico** |  | 2019-05-02 14:39 → 2019-05-02 14:24 | 87.58d → 87.55d |  |  |
| 2 | **Tareas de Gestión** |  | 2019-04-30 10:29 → 2019-04-30 09:44 | 85.19d → 85.09d | 239.69d → none |  |
| 3 | **Tareas de riesgos** |  | 2019-04-01 09:30 → 2019-04-01 09:14 | 64.06d → 64.03d | 2352.03d → none |  |
| 4 | Control de riesgos y daños 1 |  | 2019-02-01 09:29 → 2019-02-01 09:14 | 0.06d → 0.03d | 6452.08d → none |  |
| 5 | Control de riesgos y daños 2 |  | 2019-03-01 09:29 → 2019-03-01 09:14 | 0.06d → 0.03d | 4452.08d → none |  |
| 6 | Control de riesgos y daños 3 |  | 2019-04-01 09:30 → 2019-04-01 09:14 | 0.06d → 0.03d | 2264.53d → none |  |
| 8 | Crear Plan de incentivos | 2019-01-01 09:30 → 2019-01-01 09:14 | 2019-01-01 09:59 → 2019-01-01 09:44 |  | 8745.83d → none |  |
| 9 | Plan de comportamiento | 2019-01-02 09:30 → 2019-01-01 09:00 (-1d) | 2019-01-02 09:59 → 2019-01-01 09:29 (-1d) |  | 2915.21d → none |  |
| 10 | Crear plan de errores y problemas | 2019-01-02 09:59 → 2019-01-01 09:29 (-1d) | 2019-01-02 11:59 → 2019-01-01 11:29 (-1d) |  | 2915.21d → none |  |
| 12 | **Tareas de comunicación** |  | 2019-04-30 09:59 → 2019-04-30 09:29 | 85.12d → 85.06d | 245.89d → none |  |
| 13 | **Reuniones equipo** |  | 2019-04-30 09:29 → 2019-04-30 09:14 | 85.06d → 85.03d | 252.08d → none |  |
| 14 | Reunión equipo 1 |  | 2019-01-01 09:30 → 2019-01-01 09:14 | 0.06d → 0.03d | 8652.03d → none | resources Programador Junior1; Programador Junior2; Analista-Diseñador; Analista-Programador; Programador Senior; Director de proyecto → Analista-Diseñador; Analista-Programador; Director de proyecto |
| 15 | Reunión equipo 2 |  | 2019-01-08 09:29 → 2019-01-08 09:14 | 0.06d → 0.03d | 8252.08d → none | resources Programador Junior1; Programador Junior2; Analista-Diseñador; Analista-Programador; Programador Senior; Director de proyecto → Analista-Diseñador; Analista-Programador; Director de proyecto |
| 16 | Reunión equipo 3 |  | 2019-01-15 09:29 → 2019-01-15 09:14 | 0.06d → 0.03d | 2818.96d → none | resources Programador Junior1; Programador Junior2; Analista-Diseñador; Analista-Programador; Programador Senior; Director de proyecto → Analista-Diseñador; Analista-Programador; Director de proyecto |
| 17 | Reunión equipo 4 | 2019-01-22 09:29 → 2019-01-22 09:14 | 2019-01-22 09:59 → 2019-01-22 09:29 | 0.06d → 0.03d | 2818.96d → none | resources Programador Junior1; Programador Junior2; Analista-Diseñador; Analista-Programador; Programador Senior; Director de proyecto → Analista-Diseñador; Analista-Programador; Director de proyecto |
| 18 | Reunión equipo 5 |  | 2019-01-29 09:29 → 2019-01-29 09:14 | 0.06d → 0.03d | 2812.66d → none | resources Programador Junior1; Programador Junior2; Analista-Diseñador; Analista-Programador; Programador Senior; Director de proyecto → Analista-Diseñador; Analista-Programador; Director de proyecto |
| 19 | Reunión equipo 6 |  | 2019-02-05 09:29 → 2019-02-05 09:14 | 0.06d → 0.03d | 6252.08d → none | resources Programador Junior1; Programador Junior2; Analista-Diseñador; Analista-Programador; Programador Senior; Director de proyecto → Analista-Diseñador; Analista-Programador; Director de proyecto |
| 20 | Reunión equipo 7 |  | 2019-02-12 09:29 → 2019-02-12 09:14 | 0.06d → 0.03d | 268.85d → none | resources Programador Junior1; Programador Junior2; Analista-Diseñador; Analista-Programador; Programador Senior; Director de proyecto → Programador Junior1; Programador Junior2; Analista-Programador; Programador Senior; Director de proyecto |
| 21 | Reunión equipo 8 |  | 2019-02-19 09:29 → 2019-02-19 09:14 | 0.06d → 0.03d | 250.05d → none | resources Programador Junior1; Programador Junior2; Analista-Diseñador; Analista-Programador; Programador Senior; Director de proyecto → Programador Junior1; Programador Junior2; Analista-Programador; Programador Senior; Director de proyecto |
| 22 | Reunión equipo 9 |  | 2019-02-26 09:29 → 2019-02-26 09:14 | 0.06d → 0.03d | 837.66d → none | resources Programador Junior1; Programador Junior2; Analista-Diseñador; Analista-Programador; Programador Senior; Director de proyecto → Programador Junior1; Programador Junior2; Analista-Programador; Programador Senior; Director de proyecto |
| 23 | Reunión equipo 10 | 2019-03-05 13:00 → 2019-03-05 11:45 | 2019-03-05 13:30 → 2019-03-05 13:00 | 0.06d → 0.03d | 250.05d → none | resources Programador Junior1; Programador Junior2; Analista-Diseñador; Analista-Programador; Programador Senior; Director de proyecto → Programador Junior1; Programador Junior2; Analista-Programador; Programador Senior; Director de proyecto |
| 24 | Reunión equipo 11 |  | 2019-03-12 09:29 → 2019-03-12 09:14 | 0.06d → 0.03d | 237.66d → none | resources Programador Junior1; Programador Junior2; Analista-Diseñador; Analista-Programador; Programador Senior; Director de proyecto → Programador Junior1; Programador Junior2; Analista-Programador; Programador Senior; Director de proyecto |
| 25 | Reunion equipo 12 | 2019-03-19 14:29 → 2019-03-19 14:14 | 2019-03-19 14:59 → 2019-03-19 14:29 | 0.06d → 0.03d | 3195.89d → none | resources Programador Junior1; Programador Junior2; Analista-Diseñador; Analista-Programador; Programador Senior; Director de proyecto → Programador Junior1; Programador Junior2; Analista-Programador; Programador Senior; Director de proyecto |
| 26 | Reunión equipo 13 |  | 2019-03-26 09:29 → 2019-03-26 09:14 | 0.06d → 0.03d | 12.66d → none | resources Programador Junior1; Programador Junior2; Analista-Diseñador; Analista-Programador; Programador Senior; Director de proyecto → Programador Junior1; Programador Junior2; Analista-Programador; Programador Senior; Director de proyecto |
| 27 | Reunión equipo 14 | 2019-04-02 14:29 → 2019-04-02 14:14 | 2019-04-02 14:59 → 2019-04-02 14:29 | 0.06d → 0.03d | 12.66d → none | resources Programador Junior1; Programador Junior2; Analista-Diseñador; Analista-Programador; Programador Senior; Director de proyecto → Programador Junior1; Programador Junior2; Analista-Programador; Programador Senior; Director de proyecto |
| 28 | Reunión equipo 15 | 2019-04-10 11:29 → 2019-04-10 10:59 | 2019-04-10 11:59 → 2019-04-10 11:14 | 0.06d → 0.03d | 12.66d → none | resources Programador Junior1; Programador Junior2; Analista-Diseñador; Analista-Programador; Programador Senior; Director de proyecto → Programador Junior1; Programador Junior2; Analista-Programador; Programador Senior; Director de proyecto |
| 29 | Reunión equipo 16 | 2019-04-16 11:59 → 2019-04-16 11:14 | 2019-04-16 13:29 → 2019-04-16 11:29 | 0.06d → 0.03d | 1214.74d → none | resources Programador Junior1; Programador Junior2; Analista-Diseñador; Analista-Programador; Programador Senior; Director de proyecto → Programador Junior1; Programador Junior2; Analista-Programador; Programador Senior; Director de proyecto |
| 30 | Reunión de equipo 17 | 2019-04-23 11:59 → 2019-04-23 11:14 | 2019-04-23 13:29 → 2019-04-23 11:29 | 0.06d → 0.03d | 12.66d → none | resources Programador Junior1; Programador Junior2; Analista-Diseñador; Analista-Programador; Programador Senior; Director de proyecto → Programador Junior1; Programador Junior2; Analista-Programador; Programador Senior; Director de proyecto |
| 31 | Reunión de equipo 18 |  | 2019-04-30 09:29 → 2019-04-30 09:14 | 0.06d → 0.03d |  | resources Programador Junior1; Programador Junior2; Analista-Diseñador; Analista-Programador; Programador Senior; Director de proyecto → Programador Junior1; Programador Junior2; Analista-Programador; Programador Senior; Director de proyecto |
| 32 | **Reuniones clientes** |  | 2019-04-30 09:59 → 2019-04-30 09:29 | 64.12d → 64.06d | 245.89d → none |  |
| 33 | Reunión cliente 1 |  | 2019-01-30 09:29 → 2019-01-30 09:14 | 0.06d → 0.03d | 2712.66d → none |  |
| 34 | Reunión cliente 2 |  | 2019-02-28 09:29 → 2019-02-28 09:14 | 0.06d → 0.03d | 4552.08d → none |  |
| 35 | Reunión cliente 3 |  | 2019-04-01 08:29 → 2019-04-01 08:14 | 0.06d → 0.03d | 2364.58d → none |  |
| 36 | Reunión cliente 4 | 2019-04-30 09:29 → 2019-04-30 09:14 | 2019-04-30 09:59 → 2019-04-30 09:29 | 0.06d → 0.03d | 158.39d → none |  |
| 37 | **Tareas de gestión de Costes** | 2019-01-15 09:29 → 2019-01-15 09:14 | 2019-04-30 10:29 → 2019-04-30 09:44 | 75.12d → 75.06d | 239.69d → none |  |
| 38 | Control de costes 1 | 2019-01-15 09:29 → 2019-01-15 09:14 | 2019-01-15 09:59 → 2019-01-15 09:29 | 0.06d → 0.03d | 7745.89d → none |  |
| 39 | Control de costes 2 |  | 2019-01-30 09:29 → 2019-01-30 09:14 | 0.06d → 0.03d | 6652.08d → none |  |
| 40 | Control de costes 3 |  | 2019-02-15 09:29 → 2019-02-15 09:14 | 0.06d → 0.03d | 5452.08d → none |  |
| 41 | Control de costes 4 |  | 2019-03-04 08:29 → 2019-03-04 08:14 | 0.06d → 0.03d | 4364.58d → none |  |
| 42 | Control de costes 5 |  | 2019-03-18 08:29 → 2019-03-18 08:14 | 0.06d → 0.03d | 3364.58d → none |  |
| 43 | Control de costes 6 | 2019-04-01 09:30 → 2019-04-01 09:14 | 2019-04-01 09:59 → 2019-04-01 09:29 | 0.06d → 0.03d | 2345.83d → none |  |
| 44 | Control de costes 7 |  | 2019-04-15 09:29 → 2019-04-15 09:14 | 0.06d → 0.03d | 1352.08d → none |  |
| 45 | Control de costes 8 | 2019-04-30 09:59 → 2019-04-30 09:29 | 2019-04-30 10:29 → 2019-04-30 09:44 | 0.06d → 0.03d | 239.69d → none |  |
| 46 | Informe de costes 1 | 2019-01-15 09:29 → 2019-01-15 09:14 | 2019-01-15 09:59 → 2019-01-15 09:29 | 0.06d → 0.03d | 7745.89d → none |  |
| 47 | Informe de costes 2 |  | 2019-01-30 09:29 → 2019-01-30 09:14 | 0.06d → 0.03d | 6652.08d → none |  |
| 48 | Informe de costes 3 |  | 2019-02-15 09:29 → 2019-02-15 09:14 | 0.06d → 0.03d | 5452.08d → none |  |
| 49 | Informe de costes 4 |  | 2019-03-04 08:29 → 2019-03-04 08:14 | 0.06d → 0.03d | 4364.58d → none |  |
| 50 | Informe de costes 5 |  | 2019-03-18 08:29 → 2019-03-18 08:14 | 0.06d → 0.03d | 3364.58d → none |  |
| 51 | Informe de costes 6 | 2019-04-01 09:30 → 2019-04-01 09:14 | 2019-04-01 09:59 → 2019-04-01 09:29 | 0.06d → 0.03d | 2345.83d → none |  |
| 52 | Informe de costes 7 |  | 2019-04-15 09:29 → 2019-04-15 09:14 | 0.06d → 0.03d | 1352.08d → none |  |
| 53 | Informe de costes 8 | 2019-04-30 09:59 → 2019-04-30 09:29 | 2019-04-30 10:29 → 2019-04-30 09:44 | 0.06d → 0.03d | 239.69d → none |  |
| 54 | **Análisis de requisitos del sistema** | 2019-01-02 11:59 → 2019-01-01 11:29 (-1d) | 2019-01-29 08:59 → 2019-01-29 08:29 | 18.62d → 19.62d | 2818.96d → none |  |
| 55 | **Identificación de las necesidades del cliente** | 2019-01-02 11:59 → 2019-01-01 11:29 (-1d) | 2019-01-08 15:17 → 2019-01-07 13:17 (-1d) | 4.29d → 4.1d | 2896.46d → none |  |
| 56 | **Especificación informal del sistema** | 2019-01-02 11:59 → 2019-01-01 11:29 (-1d) | 2019-01-08 15:17 → 2019-01-07 13:17 (-1d) | 4.29d → 4.1d | 2896.46d → none |  |
| 57 | **Técnica de obtención de requisitos** | 2019-01-02 11:59 → 2019-01-01 11:29 (-1d) | 2019-01-07 11:59 → 2019-01-04 11:29 (-3d) |  | 2915.21d → none |  |
| 58 | Preparar preguntas y temáticas para entrevista inicial | 2019-01-02 11:59 → 2019-01-01 11:29 (-1d) | 2019-01-02 16:59 → 2019-01-01 16:29 (-1d) |  | 2915.21d → none |  |
| 59 | Entrevistar jefe de proyecto | 2019-01-02 16:59 → 2019-01-01 16:29 (-1d) | 2019-01-03 11:59 → 2019-01-02 11:29 (-1d) |  | 2915.21d → none |  |
| 60 | Cuestionar futuros empleados para conocer sus necesidades | 2019-01-03 11:59 → 2019-01-02 11:29 (-1d) | 2019-01-04 11:59 → 2019-01-03 11:29 (-1d) |  | 2915.21d → none |  |
| 61 | Cuestionar posibles clientes para conocer sus preferencias | 2019-01-04 11:59 → 2019-01-03 11:29 (-1d) | 2019-01-07 11:59 → 2019-01-04 11:29 (-3d) |  | 2915.21d → none |  |
| 62 | **Determinación informal de aspectos del sistema** | 2019-01-07 11:59 → 2019-01-04 11:29 (-3d) | 2019-01-08 15:17 → 2019-01-07 13:17 (-1d) | 1.29d → 1.1d | 2896.46d → none |  |
| 63 | Determinar necesidades de jefe de proyectos | 2019-01-07 11:59 → 2019-01-04 11:29 (-3d) | 2019-01-07 16:59 → 2019-01-04 16:29 (-3d) |  | 2915.21d → none |  |
| 64 | **Determinación informal de funciones** | 2019-01-08 09:29 → 2019-01-04 16:29 (-4d) | 2019-01-08 15:17 → 2019-01-07 13:17 (-1d) |  | 2896.46d → none |  |
| 65 | Cuestionar futuros empleados para conocer sus necesidades | 2019-01-08 09:29 → 2019-01-04 16:29 (-4d) | 2019-01-08 10:17 → 2019-01-07 08:17 (-1d) |  | 2896.46d → none |  |
| 66 | Cuestionar posibles clientes para conocer sus preferencias | 2019-01-08 14:29 → 2019-01-07 11:29 (-1d) | 2019-01-08 15:17 → 2019-01-07 13:17 (-1d) |  | 2896.46d → none |  |
| 67 | **Determinación informal de información manejada** | 2019-01-07 16:59 → 2019-01-04 16:29 (-3d) | 2019-01-08 11:05 → 2019-01-07 09:05 (-1d) | 0.39d → 0.2d | 2906.46d → none |  |
| 68 | Cuestionar futuros empleados para conocer sus necesidades | 2019-01-08 10:17 → 2019-01-07 08:17 (-1d) | 2019-01-08 11:05 → 2019-01-07 09:05 (-1d) |  | 2896.46d → none |  |
| 69 | Cuestionar posibles clientes para conocer sus preferencias | 2019-01-07 16:59 → 2019-01-04 16:29 (-3d) | 2019-01-08 08:47 → 2019-01-07 08:17 (-1d) |  | 2935.21d → none |  |
| 70 | **Determinación informal de interfaces del sistema** | 2019-01-08 08:47 → 2019-01-07 08:17 (-1d) | 2019-01-08 11:53 → 2019-01-07 09:53 (-1d) | 0.39d → 0.2d | 2906.46d → none |  |
| 71 | Cuestionar futuros empleados para conocer sus necesidades | 2019-01-08 11:05 → 2019-01-07 09:05 (-1d) | 2019-01-08 11:53 → 2019-01-07 09:53 (-1d) |  | 2896.46d → none |  |
| 72 | Cuestionar posibles clientes para conocer sus preferencias | 2019-01-08 08:47 → 2019-01-07 08:17 (-1d) | 2019-01-08 09:35 → 2019-01-07 09:05 (-1d) |  | 2935.21d → none |  |

| ID | Task | Start | Finish | Duration | Total float |
| --- | --- | --- | --- | --- | --- |
| 73 | **Determinación informal de rendimiento del sistema** | 2019-01-08 09:35 → 2019-01-07 09:05 (-1d) | 2019-01-08 13:41 → 2019-01-07 10:41 (-1d) | 0.39d → 0.2d | 2906.46d → none |
| 74 | Cuestionar futuros empleados para conocer sus necesidades | 2019-01-08 11:53 → 2019-01-07 09:53 (-1d) | 2019-01-08 13:41 → 2019-01-07 10:41 (-1d) |  | 2896.46d → none |
| 75 | Cuestionar posibles clientes para conocer sus preferencias | 2019-01-08 09:35 → 2019-01-07 09:05 (-1d) | 2019-01-08 10:23 → 2019-01-07 09:53 (-1d) |  | 2935.21d → none |
| 76 | **Determinación informal de las restricciones del sistema** | 2019-01-08 10:23 → 2019-01-07 09:53 (-1d) | 2019-01-08 14:29 → 2019-01-07 11:29 (-1d) | 0.39d → 0.2d | 2906.46d → none |
| 77 | Cuestionar futuros empleados para conocer sus necesidades | 2019-01-08 13:41 → 2019-01-07 10:41 (-1d) | 2019-01-08 14:29 → 2019-01-07 11:29 (-1d) |  | 2896.46d → none |
| 78 | Cuestionar posibles clientes para conocer sus preferencias | 2019-01-08 10:23 → 2019-01-07 09:53 (-1d) | 2019-01-08 11:11 → 2019-01-07 10:41 (-1d) |  | 2935.21d → none |
| 79 | **Asignación de funciones a cada elemento del sistema** | 2019-01-08 15:17 → 2019-01-07 13:17 (-1d) | 2019-01-16 13:29 → 2019-01-16 13:14 | 5.78d → 6.99d | 2818.96d → none |
| 80 | **Alternativas de creación del sistema** | 2019-01-08 15:17 → 2019-01-07 13:17 (-1d) | 2019-01-11 10:17 → 2019-01-10 08:17 (-1d) |  | 2896.46d → none |
| 81 | Buscar tecnologías y metodologías alternativas | 2019-01-08 15:17 → 2019-01-07 13:17 (-1d) | 2019-01-11 10:17 → 2019-01-10 08:17 (-1d) |  | 2896.46d → none |
| 82 | Informar del progreso de la semana al Jefe de proyecto | 2019-01-11 10:17 → 2019-01-10 08:17 (-1d) | 2019-01-11 11:17 → 2019-01-10 09:17 (-1d) |  | 2896.46d → none |
| 83 | **Validación de las alternativas de creación del sistema** | 2019-01-11 11:17 → 2019-01-10 09:17 (-1d) | 2019-01-16 13:29 → 2019-01-16 13:14 | 3.15d → 4.37d | 2818.96d → none |
| 84 | Analizar las alternativas obtenidas | 2019-01-11 11:17 → 2019-01-10 09:17 (-1d) | 2019-01-14 11:17 → 2019-01-11 09:17 (-3d) |  | 2896.46d → none |
| 85 | Comparar las alternativas con la propuesta original | 2019-01-15 09:29 → 2019-01-15 09:14 | 2019-01-16 09:29 → 2019-01-16 09:14 |  | 2818.96d → none |
| 86 | Decidir finalmente que tecnología usar | 2019-01-16 09:29 → 2019-01-16 09:14 | 2019-01-16 11:29 → 2019-01-16 11:14 |  | 2818.96d → none |
| 87 | Informar al Jefe del progreso de la semana | 2019-01-16 11:29 → 2019-01-16 11:14 | 2019-01-16 13:29 → 2019-01-16 13:14 |  | 2818.96d → none |
| 88 | **Evaluación de la viabilidad del sistema** | 2019-01-16 13:29 → 2019-01-16 13:14 | 2019-01-28 08:59 → 2019-01-28 08:29 | 7.56d → 7.53d | 2818.96d → none |
| 89 | **Estudio de viabilidad económico** | 2019-01-16 13:29 → 2019-01-16 13:14 | 2019-01-21 08:29 → 2019-01-21 08:14 |  | 2818.96d → none |
| 90 | Realizar análisis de costes económicos | 2019-01-16 13:29 → 2019-01-16 13:14 | 2019-01-17 09:29 → 2019-01-17 09:14 |  | 2818.96d → none |
| 91 | Realizar análisis de mercado | 2019-01-17 09:29 → 2019-01-17 09:14 | 2019-01-17 15:29 → 2019-01-17 15:14 |  | 2818.96d → none |
| 92 | Realizar estimaciones coste-beneficio y tiempo-beneficio | 2019-01-17 15:29 → 2019-01-17 15:14 | 2019-01-18 11:29 → 2019-01-18 11:14 |  | 2818.96d → none |
| 93 | Reunirse con el jefe para decidir su el proyecto se considera viable | 2019-01-18 11:29 → 2019-01-18 11:14 | 2019-01-21 08:29 → 2019-01-21 08:14 |  | 2818.96d → none |
| 94 | **Estudio de viabilidad técnico** | 2019-01-21 08:29 → 2019-01-21 08:14 | 2019-01-22 15:59 → 2019-01-22 15:29 | 1.81d → 1.78d | 2818.96d → none |
| 95 | Estudiar las tecnologías disponibles para el proyecto | 2019-01-21 08:29 → 2019-01-21 08:14 | 2019-01-21 14:29 → 2019-01-21 14:14 |  | 2818.96d → none |
| 96 | Analizar recursos y tecnologías a las que tiene acceso la empresa | 2019-01-21 14:29 → 2019-01-21 14:14 | 2019-01-21 16:29 → 2019-01-21 16:14 |  | 2818.96d → none |
| 97 | Analizar recursos y tecnologías de terceros que podrían comprarse o contratarse | 2019-01-21 16:29 → 2019-01-21 16:14 | 2019-01-22 09:29 → 2019-01-22 09:14 |  | 2818.96d → none |
| 98 | Analizar con la información obtenida si el proyecto es viable | 2019-01-22 09:59 → 2019-01-22 09:29 | 2019-01-22 15:59 → 2019-01-22 15:29 |  | 2818.96d → none |
| 99 | **Estudio de viabilidad legal** | 2019-01-22 15:59 → 2019-01-22 15:29 | 2019-01-24 15:59 → 2019-01-24 15:29 |  | 2818.96d → none |
| 100 | Estudiar las leyes relacionadas con la parte tecnológica del proyecto | 2019-01-22 15:59 → 2019-01-22 15:29 | 2019-01-23 10:59 → 2019-01-23 10:29 |  | 2818.96d → none |
| 101 | Estudiar las leyes relacionadas con al parte de hostelería del proyecto | 2019-01-23 10:59 → 2019-01-23 10:29 | 2019-01-23 15:59 → 2019-01-23 15:29 |  | 2818.96d → none |
| 102 | Estudiar las leyes relacionadas con salud e higiene de local | 2019-01-23 15:59 → 2019-01-23 15:29 | 2019-01-24 10:59 → 2019-01-24 10:29 |  | 2818.96d → none |
| 103 | Realizar un informe sobre los estudios legales | 2019-01-24 10:59 → 2019-01-24 10:29 | 2019-01-24 14:59 → 2019-01-24 14:29 |  | 2818.96d → none |
| 104 | Analizar con la información obtenida si el proyecto es legalmente viable | 2019-01-24 14:59 → 2019-01-24 14:29 | 2019-01-24 15:59 → 2019-01-24 15:29 |  | 2818.96d → none |
| 105 | **Estudio de viabilidad de plazos** | 2019-01-24 15:59 → 2019-01-24 15:29 | 2019-01-28 08:59 → 2019-01-28 08:29 |  | 2818.96d → none |
| 106 | Realizar análisis de costes temporales | 2019-01-24 15:59 → 2019-01-24 15:29 | 2019-01-25 15:59 → 2019-01-25 15:29 |  | 2818.96d → none |
| 107 | Realizar planificación de distribución de trabajo | 2019-01-24 15:59 → 2019-01-24 15:29 | 2019-01-25 08:59 → 2019-01-25 08:29 |  | 2893.96d → none |
| 108 | Determinar si el proyecto es viable en el tiempo elegido | 2019-01-25 15:59 → 2019-01-25 15:29 | 2019-01-28 08:59 → 2019-01-28 08:29 |  | 2818.96d → none |
| 109 | **Obtención de una definición del sistema** | 2019-01-28 08:59 → 2019-01-28 08:29 | 2019-01-29 08:59 → 2019-01-29 08:29 |  | 2818.96d → none |
| 110 | **Especificación formal del sistema** | 2019-01-28 08:59 → 2019-01-28 08:29 | 2019-01-28 13:11 → 2019-01-28 11:41 |  | 2818.96d → none |
| 111 | **Diagrama de contexto** | 2019-01-28 08:59 → 2019-01-28 08:29 | 2019-01-28 10:35 → 2019-01-28 10:05 |  | 2818.96d → none |
| 112 | Dibujar el diagrama de contexto | 2019-01-28 08:59 → 2019-01-28 08:29 | 2019-01-28 10:35 → 2019-01-28 10:05 |  | 2818.96d → none |
| 113 | **Diagrama de sistema** | 2019-01-28 10:35 → 2019-01-28 10:05 | 2019-01-28 13:11 → 2019-01-28 11:41 |  | 2818.96d → none |
| 114 | Dibujar el diagrama de sistema | 2019-01-28 10:35 → 2019-01-28 10:05 | 2019-01-28 13:11 → 2019-01-28 11:41 |  | 2818.96d → none |
| 115 | **Representación del sistema** | 2019-01-28 13:11 → 2019-01-28 11:41 | 2019-01-29 08:59 → 2019-01-29 08:29 |  | 2818.96d → none |
| 116 | **Diagramas de flujo de datos** | 2019-01-28 13:11 → 2019-01-28 11:41 | 2019-01-28 14:47 → 2019-01-28 14:17 |  | 2818.96d → none |
| 117 | Dibujar el diagrama de sistema | 2019-01-28 13:11 → 2019-01-28 11:41 | 2019-01-28 14:47 → 2019-01-28 14:17 |  | 2818.96d → none |
| 118 | **Diagramas de flujo de control** | 2019-01-28 14:47 → 2019-01-28 14:17 | 2019-01-28 16:23 → 2019-01-28 15:53 |  | 2818.96d → none |
| 119 | Dibujar el diagrama de sistema | 2019-01-28 14:47 → 2019-01-28 14:17 | 2019-01-28 16:23 → 2019-01-28 15:53 |  | 2818.96d → none |
| 120 | **Diagramas del ámbito de la información** | 2019-01-28 16:23 → 2019-01-28 15:53 | 2019-01-29 08:59 → 2019-01-29 08:29 |  | 2818.96d → none |
| 121 | Dibujar el diagrama de sistema | 2019-01-28 16:23 → 2019-01-28 15:53 | 2019-01-29 08:59 → 2019-01-29 08:29 |  | 2818.96d → none |
| 122 | **Análisis de requisitos del software** | 2019-01-30 09:29 → 2019-01-30 09:14 | 2019-02-01 16:29 → 2019-02-01 16:14 |  | 2712.66d → none |
| 123 | **Extracción o determinación de requisitos** | 2019-01-30 09:29 → 2019-01-30 09:14 | 2019-01-30 14:29 → 2019-01-30 14:14 |  | 2712.66d → none |
| 124 | **Documentos de reuniones con cliente** | 2019-01-30 09:29 → 2019-01-30 09:14 | 2019-01-30 11:29 → 2019-01-30 11:14 |  | 2712.66d → none |
| 125 | Realizar un acta de reunión para la reunión con el cliente | 2019-01-30 09:29 → 2019-01-30 09:14 | 2019-01-30 10:29 → 2019-01-30 10:14 |  | 2712.66d → none |
| 126 | Realizar un informe sobre las solicitudes e información que se obtuvo del cliente | 2019-01-30 10:29 → 2019-01-30 10:14 | 2019-01-30 11:29 → 2019-01-30 11:14 |  | 2712.66d → none |
| 127 | **Especificación informal de requisitos software** | 2019-01-30 11:29 → 2019-01-30 11:14 | 2019-01-30 14:29 → 2019-01-30 14:14 |  | 2712.66d → none |
| 128 | Redactar un primer informe de los requisitos del software a partir del informe de reunión con el cliente | 2019-01-30 11:29 → 2019-01-30 11:14 | 2019-01-30 14:29 → 2019-01-30 14:14 |  | 2712.66d → none |
| 129 | **Análisis de requisitos** | 2019-01-30 14:29 → 2019-01-30 14:14 | 2019-01-31 11:29 → 2019-01-31 11:14 |  | 2712.66d → none |
| 130 | **Validación de especificación informal** | 2019-01-30 14:29 → 2019-01-30 14:14 | 2019-01-30 15:29 → 2019-01-30 15:14 |  | 2712.66d → none |
| 131 | Analizar especificación informal para posibles mejoras | 2019-01-30 14:29 → 2019-01-30 14:14 | 2019-01-30 15:29 → 2019-01-30 15:14 |  | 2712.66d → none |
| 132 | Buscar errores en la especificación informal | 2019-01-30 14:29 → 2019-01-30 14:14 | 2019-01-30 15:29 → 2019-01-30 15:14 |  | 2712.66d → none |
| 133 | **Resolución de inconsistencias** | 2019-01-30 15:29 → 2019-01-30 15:14 | 2019-01-31 08:29 → 2019-01-31 08:14 |  | 2712.66d → none |
| 134 | Corregir errores en la especificación informal | 2019-01-30 15:29 → 2019-01-30 15:14 | 2019-01-31 08:29 → 2019-01-31 08:14 |  | 2712.66d → none |
| 135 | Encontrar redundancias y discrepancias en la especificación informal | 2019-01-30 15:29 → 2019-01-30 15:14 | 2019-01-31 08:29 → 2019-01-31 08:14 |  | 2712.66d → none |
| 136 | **Coordinación de requisitos relacionados** | 2019-01-31 08:29 → 2019-01-31 08:14 | 2019-01-31 11:29 → 2019-01-31 11:14 |  | 2712.66d → none |
| 137 | Formar relaciones entre requisitos que tengan puntos comunes | 2019-01-31 08:29 → 2019-01-31 08:14 | 2019-01-31 10:29 → 2019-01-31 10:14 |  | 2712.66d → none |
| 138 | Purgar relaciones redundantes | 2019-01-31 10:29 → 2019-01-31 10:14 | 2019-01-31 11:29 → 2019-01-31 11:14 |  | 2712.66d → none |
| 139 | **Especificación de requisitos** | 2019-01-31 11:29 → 2019-01-31 11:14 | 2019-02-01 09:29 → 2019-02-01 09:14 |  | 2712.66d → none |
| 140 | **Documento de especificación formal de requisitos** | 2019-01-31 11:29 → 2019-01-31 11:14 | 2019-01-31 16:29 → 2019-01-31 16:14 |  | 2712.66d → none |
| 141 | Redactar documento de requisitos formal | 2019-01-31 11:29 → 2019-01-31 11:14 | 2019-01-31 16:29 → 2019-01-31 16:14 |  | 2712.66d → none |
| 142 | **Revisión de documento de especificación formal** | 2019-01-31 16:29 → 2019-01-31 16:14 | 2019-02-01 09:29 → 2019-02-01 09:14 |  | 2712.66d → none |

| ID | Task | Start | Finish | Duration | Total float |
| --- | --- | --- | --- | --- | --- |
| 143 | Revisar documento de requisitos formal en busca de errores | 2019-01-31 16:29 → 2019-01-31 16:14 | 2019-02-01 08:29 → 2019-02-01 08:14 |  | 2712.66d → none |
| 144 | Revisar documento de requisitos formal en busca de mejoras de formato y claridad | 2019-02-01 08:29 → 2019-02-01 08:14 | 2019-02-01 09:29 → 2019-02-01 09:14 |  | 2712.66d → none |
| 145 | **Validación de requisitos** | 2019-02-01 09:29 → 2019-02-01 09:14 | 2019-02-01 16:29 → 2019-02-01 16:14 |  | 2712.66d → none |
| 146 | **Reunión con cliente para validación de requisitos** | 2019-02-01 09:29 → 2019-02-01 09:14 | 2019-02-01 11:29 → 2019-02-01 11:14 |  | 2712.66d → none |
| 147 | Redactar acta de reunión con el cliente y validar requisitos | 2019-02-01 09:29 → 2019-02-01 09:14 | 2019-02-01 11:29 → 2019-02-01 11:14 |  | 2712.66d → none |
| 148 | **Corrección de especificación formal** | 2019-02-01 11:29 → 2019-02-01 11:14 | 2019-02-01 14:29 → 2019-02-01 14:14 |  | 2712.66d → none |
| 149 | Ajustar los requisitos a partir de la validación realizada | 2019-02-01 11:29 → 2019-02-01 11:14 | 2019-02-01 14:29 → 2019-02-01 14:14 |  | 2712.66d → none |
| 150 | **Validación de la especificación forma corregidsa** | 2019-02-01 14:29 → 2019-02-01 14:14 | 2019-02-01 16:29 → 2019-02-01 16:14 |  | 2712.66d → none |
| 151 | Reunirse con el cliente para realizar la validación final de requisitos | 2019-02-01 14:29 → 2019-02-01 14:14 | 2019-02-01 16:29 → 2019-02-01 16:14 |  | 2712.66d → none |
| 152 | **Diseño del sistema software** |  | 2019-03-13 14:29 → 2019-03-13 14:14 | 51.56d → 51.53d | 3595.89d → none |
| 158 | **Diseño módulo de cocinas/barras** | 2019-02-01 16:29 → 2019-01-03 09:00 (-29d) | 2019-02-04 16:29 → 2019-01-04 09:00 (-31d) |  | 337.66d → none |
| 159 | Realizar diseño del módulo | 2019-02-01 16:29 → 2019-02-01 16:14 | 2019-02-04 16:29 → 2019-02-04 16:14 |  | 337.66d → none |
| 166 | **Diseño técnico** |  | 2019-02-22 08:00 → 2019-02-21 16:45 (-1d) | 31.88d → 31.84d | 250.05d → none |
| 167 | **Selección de tecnologías** |  | 2019-02-14 16:29 → 2019-02-14 16:14 | 26.81d → 26.78d | 268.85d → none |
| 171 | **Sistema operativo y aplicaciones de las tablets** | 2019-02-12 09:29 → 2019-02-12 09:14 | 2019-02-13 14:29 → 2019-02-13 14:14 |  | 268.85d → none |
| 172 | Comparar los sistemas operativos disponibles | 2019-02-12 09:29 → 2019-02-12 09:14 | 2019-02-13 09:29 → 2019-02-13 09:14 |  | 268.85d → none |
| 173 | Elegir la opción que mejor se adapte al proyecto | 2019-02-13 09:29 → 2019-02-13 09:14 | 2019-02-13 14:29 → 2019-02-13 14:14 |  | 268.85d → none |
| 174 | **Lenguaje de programación y consultas SQL** | 2019-02-13 14:29 → 2019-02-13 14:14 | 2019-02-14 16:29 → 2019-02-14 16:14 |  | 268.85d → none |
| 175 | Analizar que lenguaje de programación y consultas SQL se adapta mejor a nuestra BD elegida | 2019-02-13 14:29 → 2019-02-13 14:14 | 2019-02-14 16:29 → 2019-02-14 16:14 |  | 268.85d → none |
| 176 | Analizar que lenguaje se adapta mejor a las necesidades de la empresa | 2019-02-13 14:29 → 2019-02-13 14:14 | 2019-02-14 16:29 → 2019-02-14 16:14 |  | 268.85d → none |
| 179 | **Validación de tecnologías** | 2019-02-14 16:29 → 2019-02-14 16:14 | 2019-02-22 08:00 → 2019-02-21 16:45 (-1d) |  | 250.05d → none |
| 180 | **Diseño de pruebas de rendimiento de las tecnologías** | 2019-02-14 16:29 → 2019-02-14 16:14 | 2019-02-18 16:29 → 2019-02-18 16:14 |  | 268.85d → none |
| 181 | Diseñar las pruebas de rendimiento | 2019-02-14 16:29 → 2019-02-14 16:14 | 2019-02-18 16:29 → 2019-02-18 16:14 |  | 268.85d → none |
| 182 | **Diseño de pruebas de coste de las tecnologías** | 2019-02-19 09:29 → 2019-02-19 09:14 | 2019-02-22 08:00 → 2019-02-21 16:45 (-1d) |  | 250.05d → none |
| 183 | Diseñar las pruebas de coste | 2019-02-19 09:29 → 2019-02-19 09:14 | 2019-02-22 08:00 → 2019-02-21 16:45 (-1d) |  | 250.05d → none |
| 184 | **Diseño de pruebas** | 2019-02-22 08:00 → 2019-02-21 16:45 (-1d) | 2019-03-08 13:30 → 2019-03-08 13:00 | 10.56d → 10.53d | 250.05d → none |
| 185 | **Diseño de pruebas de aceptación** | 2019-02-22 08:00 → 2019-02-21 16:45 (-1d) | 2019-02-27 09:29 → 2019-02-27 09:14 |  | 837.66d → none |
| 186 | **Diseño de pruebas para los gerentes del local** | 2019-02-22 08:00 → 2019-02-21 16:45 (-1d) | 2019-02-25 13:00 → 2019-02-25 11:45 |  | 856.25d → none |
| 187 | Redactar informe de los minimos que deben cubrir las pruebas | 2019-02-22 08:00 → 2019-02-21 16:45 (-1d) | 2019-02-22 13:00 → 2019-02-22 11:45 |  | 856.25d → none |
| 188 | Diseñar las pruebas basandose en los informes | 2019-02-22 13:00 → 2019-02-22 11:45 | 2019-02-25 13:00 → 2019-02-25 11:45 |  | 856.25d → none |
| 189 | **Diseño de pruebas sobre el personal del local** | 2019-02-22 08:00 → 2019-02-21 16:45 (-1d) | 2019-02-25 13:00 → 2019-02-25 11:45 |  | 250.05d → none |
| 190 | Redactar informe de los minimos que deben cubrir las pruebas | 2019-02-22 08:00 → 2019-02-21 16:45 (-1d) | 2019-02-22 13:00 → 2019-02-22 11:45 |  | 250.05d → none |
| 191 | Diseñar las pruebas basandose en los informes | 2019-02-22 13:00 → 2019-02-22 11:45 | 2019-02-25 13:00 → 2019-02-25 11:45 |  | 250.05d → none |
| 192 | **Diseño de pruebas sobre los usuarios del local** | 2019-02-22 08:00 → 2019-02-21 16:45 (-1d) | 2019-02-25 13:00 → 2019-02-25 11:45 |  | 1006.25d → none |
| 193 | Redactar informe de los minimos que deben cubrir las pruebas | 2019-02-22 08:00 → 2019-02-21 16:45 (-1d) | 2019-02-22 13:00 → 2019-02-22 11:45 |  | 1006.25d → none |
| 194 | Diseñar las pruebas basandose en los informes | 2019-02-22 13:00 → 2019-02-22 11:45 | 2019-02-25 13:00 → 2019-02-25 11:45 |  | 1006.25d → none |
| 195 | **Diseño de pruebas para los proveedores** | 2019-02-25 13:00 → 2019-02-25 11:45 | 2019-02-27 09:29 → 2019-02-27 09:14 |  | 837.66d → none |
| 196 | Redactar informe de los minimos que deben cubrir las pruebas | 2019-02-25 13:00 → 2019-02-25 11:45 | 2019-02-26 08:00 → 2019-02-25 16:45 (-1d) |  | 856.25d → none |
| 197 | Diseñar las pruebas basandose en los informes | 2019-02-26 09:29 → 2019-02-26 09:14 | 2019-02-27 09:29 → 2019-02-27 09:14 |  | 837.66d → none |
| 198 | **Diseño de pruebas del sistema** | 2019-02-25 13:00 → 2019-02-25 11:45 | 2019-02-28 14:29 → 2019-02-28 14:14 |  | 837.66d → none |
| 199 | **Diseño de pruebas para comunicación con PayPal** | 2019-02-25 13:00 → 2019-02-25 11:45 | 2019-02-27 08:00 → 2019-02-26 16:45 (-1d) |  | 250.05d → none |
| 200 | Redactar informe de los minimos que deben cubrir las pruebas | 2019-02-25 13:00 → 2019-02-25 11:45 | 2019-02-26 08:00 → 2019-02-25 16:45 (-1d) |  | 250.05d → none |
| 201 | Diseñar las pruebas basandose en los informes | 2019-02-26 08:00 → 2019-02-25 16:45 (-1d) | 2019-02-27 08:00 → 2019-02-26 16:45 (-1d) |  | 250.05d → none |
| 202 | **Diseño de pruebas para comunicación con terminales TPV** | 2019-02-25 13:00 → 2019-02-25 11:45 | 2019-02-27 08:00 → 2019-02-26 16:45 (-1d) |  | 1006.25d → none |
| 203 | Redactar informe de los minimos que deben cubrir las pruebas | 2019-02-25 13:00 → 2019-02-25 11:45 | 2019-02-26 08:00 → 2019-02-25 16:45 (-1d) |  | 1006.25d → none |
| 204 | Diseñar las pruebas basandose en los informes | 2019-02-26 08:00 → 2019-02-25 16:45 (-1d) | 2019-02-27 08:00 → 2019-02-26 16:45 (-1d) |  | 1006.25d → none |
| 205 | **Diseño de pruebas para comunicación con tablets del local** | 2019-02-27 09:29 → 2019-02-27 09:14 | 2019-02-28 14:29 → 2019-02-28 14:14 |  | 837.66d → none |
| 206 | Redactar informe de los minimos que deben cubrir las pruebas | 2019-02-27 09:29 → 2019-02-27 09:14 | 2019-02-27 14:29 → 2019-02-27 14:14 |  | 837.66d → none |
| 207 | Diseñar las pruebas basandose en los informes | 2019-02-27 14:29 → 2019-02-27 14:14 | 2019-02-28 14:29 → 2019-02-28 14:14 |  | 837.66d → none |
| 208 | **Diseño de pruebas de integración** | 2019-02-27 08:00 → 2019-02-26 16:45 (-1d) | 2019-02-28 13:00 → 2019-02-28 11:45 |  | 250.05d → none |
| 209 | **Diseño de pruebas para comunicación entre módulos** | 2019-02-27 08:00 → 2019-02-26 16:45 (-1d) | 2019-02-28 13:00 → 2019-02-28 11:45 |  | 250.05d → none |
| 210 | Redactar informe de los minimos que deben cubrir las pruebas | 2019-02-27 08:00 → 2019-02-26 16:45 (-1d) | 2019-02-27 13:00 → 2019-02-27 11:45 |  | 250.05d → none |
| 211 | Diseñar las pruebas basandose en los informes | 2019-02-27 13:00 → 2019-02-27 11:45 | 2019-02-28 13:00 → 2019-02-28 11:45 |  | 250.05d → none |
| 212 | **Diseño de pruebas de unidad** | 2019-02-28 13:00 → 2019-02-28 11:45 | 2019-03-08 13:30 → 2019-03-08 13:00 | 6.06d → 6.03d | 250.05d → none |
| 213 | **Diseño de pruebas de módulo de monitorización general del sistema** | 2019-02-28 13:00 → 2019-02-28 11:45 | 2019-03-04 08:00 → 2019-03-01 16:45 (-3d) |  | 250.05d → none |
| 214 | Redactar informe de los minimos que deben cubrir las pruebas | 2019-02-28 13:00 → 2019-02-28 11:45 | 2019-03-01 08:00 → 2019-02-28 16:45 (-1d) |  | 250.05d → none |
| 215 | Diseñar las pruebas basandose en los informes | 2019-03-01 08:00 → 2019-02-28 16:45 (-1d) | 2019-03-04 08:00 → 2019-03-01 16:45 (-3d) |  | 250.05d → none |
| 216 | **Diseño de pruebas de módulo de entretenimiento** | 2019-03-04 08:00 → 2019-03-01 16:45 (-3d) | 2019-03-05 13:00 → 2019-03-05 11:45 |  | 250.05d → none |
| 217 | Redactar informe de los minimos que deben cubrir las pruebas | 2019-03-04 08:00 → 2019-03-01 16:45 (-3d) | 2019-03-04 13:00 → 2019-03-04 11:45 |  | 250.05d → none |
| 218 | Diseñar las pruebas basandose en los informes | 2019-03-04 13:00 → 2019-03-04 11:45 | 2019-03-05 13:00 → 2019-03-05 11:45 |  | 250.05d → none |
| 219 | **Diseño de pruebas de módulo para muestra de datos y comandas** | 2019-03-05 13:30 → 2019-03-05 13:00 | 2019-03-07 08:30 → 2019-03-07 08:00 |  | 250.05d → none |
| 220 | Redactar informe de los minimos que deben cubrir las pruebas | 2019-03-05 13:30 → 2019-03-05 13:00 | 2019-03-06 08:30 → 2019-03-06 08:00 |  | 250.05d → none |
| 221 | Diseñar las pruebas basandose en los informes | 2019-03-06 08:30 → 2019-03-06 08:00 | 2019-03-07 08:30 → 2019-03-07 08:00 |  | 250.05d → none |
| 222 | **Diseño de pruebas de módulo de gestión de proveedores** | 2019-03-07 08:30 → 2019-03-07 08:00 | 2019-03-08 13:30 → 2019-03-08 13:00 |  | 250.05d → none |
| 223 | Redactar informe de los minimos que deben cubrir las pruebas | 2019-03-07 08:30 → 2019-03-07 08:00 | 2019-03-07 13:30 → 2019-03-07 13:00 |  | 250.05d → none |
| 224 | Diseñar las pruebas basandose en los informes | 2019-03-07 13:30 → 2019-03-07 13:00 | 2019-03-08 13:30 → 2019-03-08 13:00 |  | 250.05d → none |
| 225 | **Diseño de pruebas de módulo del camarero** | 2019-02-28 13:00 → 2019-02-28 11:45 | 2019-03-04 08:00 → 2019-03-01 16:45 (-3d) |  | 556.25d → none |
| 226 | Redactar informe de los minimos que deben cubrir las pruebas | 2019-02-28 13:00 → 2019-02-28 11:45 | 2019-03-01 08:00 → 2019-02-28 16:45 (-1d) |  | 556.25d → none |
| 227 | Diseñar las pruebas basandose en los informes | 2019-03-01 08:00 → 2019-02-28 16:45 (-1d) | 2019-03-04 08:00 → 2019-03-01 16:45 (-3d) |  | 556.25d → none |
| 228 | **Diseño de pruebas del módulo de cocinas/barra** | 2019-03-04 08:00 → 2019-03-01 16:45 (-3d) | 2019-03-05 13:00 → 2019-03-05 11:45 |  | 556.25d → none |

| ID | Task | Start | Finish | Duration | Total float |
| --- | --- | --- | --- | --- | --- |
| 229 | Redactar informe de los minimos que deben cubrir las pruebas | 2019-03-04 08:00 → 2019-03-01 16:45 (-3d) | 2019-03-04 13:00 → 2019-03-04 11:45 |  | 556.25d → none |
| 230 | Diseñar las pruebas basandose en los informes | 2019-03-04 13:00 → 2019-03-04 11:45 | 2019-03-05 13:00 → 2019-03-05 11:45 |  | 556.25d → none |
| 231 | **Planificación** | 2019-03-08 13:30 → 2019-03-08 13:00 | 2019-03-13 14:29 → 2019-03-13 14:14 | 3.12d → 3.15d | 237.66d → none |
| 232 | **Revisión de la planificación** | 2019-03-08 13:30 → 2019-03-08 13:00 | 2019-03-13 09:29 → 2019-03-13 09:14 | 2.62d → 2.65d | 237.66d → none |
| 233 | Revisar que la planificación se ajuste al tiempo adecuado | 2019-03-08 13:30 → 2019-03-08 13:00 | 2019-03-12 08:30 → 2019-03-12 08:00 |  | 250.05d → none |
| 234 | Revisar que la planificación se ajuste adecuadamente a nuestros recursos | 2019-03-12 09:29 → 2019-03-12 09:14 | 2019-03-13 09:29 → 2019-03-13 09:14 |  | 237.66d → none |
| 235 | **Validación de la planificación** | 2019-03-13 09:29 → 2019-03-13 09:14 | 2019-03-13 14:29 → 2019-03-13 14:14 |  | 237.66d → none |
| 236 | Reunirse con el jefe para validar la planificación revisada, incluye informe semanal | 2019-03-13 09:29 → 2019-03-13 09:14 | 2019-03-13 14:29 → 2019-03-13 14:14 |  | 237.66d → none |
| 237 | **Codificación del sistema** | 2019-03-13 14:29 → 2019-03-13 14:14 | 2019-04-11 11:59 → 2019-04-11 11:14 | 20.81d → 20.75d | 12.66d → none |
| 238 | **Ambiente de desarrollo** | 2019-03-13 14:29 → 2019-03-13 14:14 | 2019-03-21 16:29 → 2019-03-21 16:14 |  | 237.66d → none |
| 239 | **Instalación del entorno de trabajo** | 2019-03-13 14:29 → 2019-03-13 14:14 | 2019-03-15 14:29 → 2019-03-15 14:14 |  | 237.66d → none |
| 240 | **Selección de tecnologías** | 2019-03-13 14:29 → 2019-03-13 14:14 | 2019-03-14 09:29 → 2019-03-14 09:14 |  | 237.66d → none |
| 241 | Seleccionar las tecnologías basandose en la fase de análisis | 2019-03-13 14:29 → 2019-03-13 14:14 | 2019-03-14 09:29 → 2019-03-14 09:14 |  | 237.66d → none |
| 242 | **Adquisición de tecnologías** | 2019-03-14 09:29 → 2019-03-14 09:14 | 2019-03-14 14:29 → 2019-03-14 14:14 |  | 237.66d → none |
| 243 | Realizar la compra de licencias de software de empresa | 2019-03-14 09:29 → 2019-03-14 09:14 | 2019-03-14 14:29 → 2019-03-14 14:14 |  | 237.66d → none |
| 244 | Comprar el hardware necesario | 2019-03-14 09:29 → 2019-03-14 09:14 | 2019-03-14 14:29 → 2019-03-14 14:14 |  | 237.66d → none |
| 245 | **Instalación en ordenadores locales** | 2019-03-14 14:29 → 2019-03-14 14:14 | 2019-03-15 14:29 → 2019-03-15 14:14 |  | 237.66d → none |
| 246 | Instalar el software adquirido en los ordenadores locales | 2019-03-14 14:29 → 2019-03-14 14:14 | 2019-03-15 14:29 → 2019-03-15 14:14 |  | 237.66d → none |
| 247 | **Configuración del entorno de trabajo** | 2019-03-15 14:29 → 2019-03-15 14:14 | 2019-03-19 14:29 → 2019-03-19 14:14 |  | 237.66d → none |
| 248 | **Ajuste de propiedades generales** | 2019-03-15 14:29 → 2019-03-15 14:14 | 2019-03-19 14:29 → 2019-03-19 14:14 |  | 237.66d → none |
| 249 | Configurar el SO y programas básico de uso general | 2019-03-15 14:29 → 2019-03-15 14:14 | 2019-03-19 14:29 → 2019-03-19 14:14 |  | 237.66d → none |
| 250 | **Ajuste de propiedades específicas** | 2019-03-15 14:29 → 2019-03-15 14:14 | 2019-03-19 14:29 → 2019-03-19 14:14 |  | 237.66d → none |
| 251 | Preparar el software específico en los equipos de personal especializado | 2019-03-15 14:29 → 2019-03-15 14:14 | 2019-03-19 14:29 → 2019-03-19 14:14 |  | 237.66d → none |
| 252 | **Revisiones de eficiencia y velocidad del entorno** | 2019-03-19 14:29 → 2019-03-19 14:14 | 2019-03-21 16:29 → 2019-03-21 16:14 |  | 237.66d → none |
| 253 | **Evaluación de eficiencia y velocidad** | 2019-03-19 14:29 → 2019-03-19 14:14 | 2019-03-20 14:29 → 2019-03-20 14:14 |  | 237.66d → none |
| 254 | Realizar evaluación de eficiencia y velocidad durante la preparación de los ordenadores | 2019-03-19 14:29 → 2019-03-19 14:14 | 2019-03-20 14:29 → 2019-03-20 14:14 |  | 237.66d → none |
| 255 | **Reconfiguración de tecnologías o herramientas** | 2019-03-20 14:29 → 2019-03-20 14:14 | 2019-03-21 14:29 → 2019-03-21 14:14 |  | 237.66d → none |
| 256 | Ajustar las configuraciones iniciales basándose en las evaluaciones | 2019-03-20 14:29 → 2019-03-20 14:14 | 2019-03-21 14:29 → 2019-03-21 14:14 |  | 237.66d → none |
| 257 | **Selección parcial de otras herramientas** | 2019-03-21 14:29 → 2019-03-21 14:14 | 2019-03-21 16:29 → 2019-03-21 16:14 |  | 237.66d → none |
| 258 | Cubrir problemas encontrados con las herramientas de terceros necesarias | 2019-03-21 14:29 → 2019-03-21 14:14 | 2019-03-21 16:29 → 2019-03-21 16:14 |  | 237.66d → none |
| 259 | **Módulos** | 2019-03-21 16:29 → 2019-03-21 16:14 | 2019-04-05 09:59 → 2019-04-05 09:29 | 10.31d → 10.28d | 12.66d → none |
| 260 | **Módulo del camarero** | 2019-03-21 16:29 → 2019-03-21 16:14 | 2019-03-28 14:29 → 2019-03-28 14:14 |  | 568.85d → none |
| 261 | **Almacén de datos de camareros** | 2019-03-26 09:29 → 2019-03-26 09:14 | 2019-03-28 14:29 → 2019-03-28 14:14 |  | 12.66d → none |
| 262 | Preparar la BD y funciones para uso de camareros | 2019-03-26 09:29 → 2019-03-26 09:14 | 2019-03-28 14:29 → 2019-03-28 14:14 |  | 12.66d → none |
| 263 | **Función de comunicar llamadas al camarero** | 2019-03-21 16:29 → 2019-03-21 16:14 | 2019-03-22 16:29 → 2019-03-22 16:14 |  | 943.85d → none |
| 264 | Implementar la función de llamadas al camararero mediante la interfaz diseñada | 2019-03-21 16:29 → 2019-03-21 16:14 | 2019-03-22 16:29 → 2019-03-22 16:14 |  | 943.85d → none |
| 265 | **Función de liberar una mesa ocupada** | 2019-03-21 16:29 → 2019-03-21 16:14 | 2019-03-22 16:29 → 2019-03-22 16:14 |  | 943.85d → none |
| 266 | Implementar la función que permite liberar mesas a camareros | 2019-03-21 16:29 → 2019-03-21 16:14 | 2019-03-22 16:29 → 2019-03-22 16:14 |  | 943.85d → none |
| 267 | **Interfaz visual agradable** | 2019-03-21 16:29 → 2019-03-21 16:14 | 2019-03-22 11:29 → 2019-03-22 11:14 |  | 993.85d → none |
| 268 | Programar la interfaz visual | 2019-03-21 16:29 → 2019-03-21 16:14 | 2019-03-22 11:29 → 2019-03-22 11:14 |  | 993.85d → none |
| 269 | **Módulo de gestión de proveedores** | 2019-03-21 16:29 → 2019-03-21 16:14 | 2019-03-29 14:29 → 2019-03-29 14:14 |  | 12.66d → none |
| 270 | **Almacén de stock** | 2019-03-28 14:29 → 2019-03-28 14:14 | 2019-03-29 14:29 → 2019-03-29 14:14 |  | 12.66d → none |
| 271 | Programar el gestor de stock y conectarlo a la BD | 2019-03-28 14:29 → 2019-03-28 14:14 | 2019-03-29 14:29 → 2019-03-29 14:14 |  | 12.66d → none |
| 272 | **Interfaz visual agradable** | 2019-03-21 16:29 → 2019-03-21 16:14 | 2019-03-22 11:29 → 2019-03-22 11:14 |  | 537.66d → none |
| 273 | Programar la interfaz visual | 2019-03-21 16:29 → 2019-03-21 16:14 | 2019-03-22 11:29 → 2019-03-22 11:14 |  | 537.66d → none |
| 274 | **Módulo de cocinas/barra** | 2019-03-21 16:29 → 2019-03-21 16:14 | 2019-03-26 09:29 → 2019-03-26 09:14 |  | 362.66d → none |
| 275 | **Función de cobrar con tarjeta u otros métodos** | 2019-03-21 16:29 → 2019-03-21 16:14 | 2019-03-25 16:29 → 2019-03-25 16:14 |  | 387.66d → none |
| 276 | Programar funciones de cobro | 2019-03-21 16:29 → 2019-03-21 16:14 | 2019-03-25 11:29 → 2019-03-25 11:14 |  | 387.66d → none |
| 277 | Adaptar funciones de cobro a todos los métodos de pago | 2019-03-25 11:29 → 2019-03-25 11:14 | 2019-03-25 16:29 → 2019-03-25 16:14 |  | 387.66d → none |
| 278 | **Función de proteger los datos de las transacciones** | 2019-03-21 16:29 → 2019-03-21 16:14 | 2019-03-25 11:29 → 2019-03-25 11:14 |  | 437.66d → none |
| 279 | Asegurarse de que se guardan apropiadamente los datos | 2019-03-21 16:29 → 2019-03-21 16:14 | 2019-03-22 11:29 → 2019-03-22 11:14 |  | 437.66d → none |
| 280 | Proteger mediante encriptación o restricciones de acceso los datos | 2019-03-22 11:29 → 2019-03-22 11:14 | 2019-03-25 11:29 → 2019-03-25 11:14 |  | 437.66d → none |
| 281 | **Almacén de datos de comandas** | 2019-03-21 16:29 → 2019-03-21 16:14 | 2019-03-25 16:29 → 2019-03-25 16:14 |  | 362.66d → none |
| 282 | Programar el almacen de datos de pedidos | 2019-03-21 16:29 → 2019-03-21 16:14 | 2019-03-25 16:29 → 2019-03-25 16:14 |  | 362.66d → none |
| 283 | **Almacén de datos de mesas** | 2019-03-25 16:29 → 2019-03-25 16:14 | 2019-03-26 09:29 → 2019-03-26 09:14 |  | 362.66d → none |
| 284 | Adaptar el almacén de datos de pedidos a las mesas | 2019-03-25 16:29 → 2019-03-25 16:14 | 2019-03-26 09:29 → 2019-03-26 09:14 |  | 362.66d → none |
| 285 | **Módulo para muestra de datos y comandas** | 2019-03-29 14:29 → 2019-03-29 14:14 | 2019-04-05 09:59 → 2019-04-05 09:29 | 4.56d → 4.53d | 12.66d → none |
| 286 | **Función de seleccionar productos y pedidos** | 2019-03-29 14:29 → 2019-03-29 14:14 | 2019-04-02 14:29 → 2019-04-02 14:14 |  | 12.66d → none |
| 287 | Implementar navegación de menú | 2019-03-29 14:29 → 2019-03-29 14:14 | 2019-04-02 14:29 → 2019-04-02 14:14 |  | 12.66d → none |
| 288 | **Función de plasmar información del pedido** | 2019-04-02 14:59 → 2019-04-02 14:29 | 2019-04-03 14:59 → 2019-04-03 14:29 |  | 12.66d → none |
| 289 | Implementar función de información de pedido | 2019-04-02 14:59 → 2019-04-02 14:29 | 2019-04-03 14:59 → 2019-04-03 14:29 |  | 12.66d → none |
| 290 | **Función de enviar la comanda** | 2019-03-29 14:29 → 2019-03-29 14:14 | 2019-04-01 14:29 → 2019-04-01 14:14 |  | 343.85d → none |
| 291 | Imlementar función de envio de comanda | 2019-03-29 14:29 → 2019-03-29 14:14 | 2019-04-01 14:29 → 2019-04-01 14:14 |  | 343.85d → none |
| 292 | **Función de reservar mesa libre** | 2019-03-29 14:29 → 2019-03-29 14:14 | 2019-04-01 14:29 → 2019-04-01 14:14 |  | 368.85d → none |
| 293 | Implementar función de reserva | 2019-03-29 14:29 → 2019-03-29 14:14 | 2019-04-01 14:29 → 2019-04-01 14:14 |  | 368.85d → none |
| 294 | **Función de ver estado de la mesa** | 2019-04-02 14:29 → 2019-04-02 14:14 | 2019-04-03 14:29 → 2019-04-03 14:14 |  | 168.85d → none |
| 295 | Implementar función de estado | 2019-04-02 14:29 → 2019-04-02 14:14 | 2019-04-03 14:29 → 2019-04-03 14:14 |  | 168.85d → none |
| 296 | **Función de informar al cliente** | 2019-04-03 14:59 → 2019-04-03 14:29 | 2019-04-05 09:59 → 2019-04-05 09:29 |  | 12.66d → none |
| 297 | Adaptar función de comunicación para el cliente | 2019-04-03 14:59 → 2019-04-03 14:29 | 2019-04-05 09:59 → 2019-04-05 09:29 |  | 12.66d → none |
| 298 | **Función de códigos QR** | 2019-04-01 14:29 → 2019-04-01 14:14 | 2019-04-01 16:29 → 2019-04-01 16:14 |  | 343.85d → none |

| ID | Task | Start | Finish | Duration | Total float | Other |
| --- | --- | --- | --- | --- | --- | --- |
| 299 | Adaptar el lector QR a nuestros programas | 2019-04-01 14:29 → 2019-04-01 14:14 | 2019-04-01 16:29 → 2019-04-01 16:14 |  | 343.85d → none |  |
| 300 | **Interfaz visual agradable** | 2019-03-29 14:29 → 2019-03-29 14:14 | 2019-03-29 16:29 → 2019-03-29 16:14 |  | 443.85d → none |  |
| 301 | Programar la interfaz visual | 2019-03-29 14:29 → 2019-03-29 14:14 | 2019-03-29 16:29 → 2019-03-29 16:14 |  | 443.85d → none |  |
| 302 | **Módulo de entretenimiento** | 2019-03-21 16:29 → 2019-03-21 16:14 | 2019-03-25 16:29 → 2019-03-25 16:14 |  | 743.85d → none |  |
| 303 | **Función de ofrecer entretenimiento al cliente** | 2019-03-21 16:29 → 2019-03-21 16:14 | 2019-03-22 08:29 → 2019-03-22 08:14 |  | 781.35d → none |  |
| 304 | Asegurar que los programas adecuados están instalados y son accesibles | 2019-03-21 16:29 → 2019-03-21 16:14 | 2019-03-22 08:29 → 2019-03-22 08:14 |  | 781.35d → none |  |
| 305 | **Función de interactuar con el local** | 2019-03-21 16:29 → 2019-03-21 16:14 | 2019-03-25 16:29 → 2019-03-25 16:14 |  | 743.85d → none |  |
| 306 | Preparar conexiones visuales de camaras | 2019-03-22 08:29 → 2019-03-22 08:14 | 2019-03-22 13:29 → 2019-03-22 13:14 |  | 781.35d → none |  |
| 307 | Preparar lista de música | 2019-03-21 16:29 → 2019-03-21 16:14 | 2019-03-21 16:59 → 2019-03-21 16:44 |  | 837.6d → none |  |
| 308 | Preparar programa de control de interacción | 2019-03-21 16:29 → 2019-03-21 16:14 | 2019-03-22 16:29 → 2019-03-22 16:14 |  | 743.85d → none |  |
| 309 | Completar programa de control de interacción con los módulos | 2019-03-22 16:29 → 2019-03-22 16:14 | 2019-03-25 16:29 → 2019-03-25 16:14 |  | 743.85d → none |  |
| 310 | **Interfaz visual agradable** | 2019-03-21 16:29 → 2019-03-21 16:14 | 2019-03-22 11:29 → 2019-03-22 11:14 |  | 893.85d → none |  |
| 311 | Programar interfaz visual | 2019-03-21 16:29 → 2019-03-21 16:14 | 2019-03-22 11:29 → 2019-03-22 11:14 |  | 893.85d → none |  |
| 312 | **Módulo de monitorización y gerencia** | 2019-03-25 16:29 → 2019-03-25 16:14 | 2019-03-26 16:29 → 2019-03-26 16:14 |  | 743.85d → none | was named Módulo de monitorización general y gerencia |
| 313 | **Almacén de datos legales** | 2019-03-25 16:29 → 2019-03-25 16:14 | 2019-03-26 16:29 → 2019-03-26 16:14 |  | 743.85d → none |  |
| 314 | Preparar BD y gestión de BD | 2019-03-25 16:29 → 2019-03-25 16:14 | 2019-03-26 16:29 → 2019-03-26 16:14 |  | 743.85d → none |  |
| 315 | Revisar cumplimiento de requerimientos legales de la BD | 2019-03-25 16:29 → 2019-03-25 16:14 | 2019-03-26 09:29 → 2019-03-26 09:14 |  | 818.85d → none |  |
| 316 | **Almacén de nóminas** | 2019-03-25 16:29 → 2019-03-25 16:14 | 2019-03-26 16:29 → 2019-03-26 16:14 |  | 743.85d → none |  |
| 317 | Preparar BD y gestión de BD para nóminas | 2019-03-25 16:29 → 2019-03-25 16:14 | 2019-03-26 16:29 → 2019-03-26 16:14 |  | 743.85d → none |  |
| 318 | Automatizar las nóminas y su almacenamiento de datos | 2019-03-25 16:29 → 2019-03-25 16:14 | 2019-03-26 16:29 → 2019-03-26 16:14 |  | 743.85d → none |  |
| 319 | **Interfaz visual agradable** | 2019-03-25 16:29 → 2019-03-25 16:14 | 2019-03-26 11:29 → 2019-03-26 11:14 |  | 793.85d → none | was named Interfaz visual agrdable |
| 320 | Programar la interfaz visual | 2019-03-25 16:29 → 2019-03-25 16:14 | 2019-03-26 11:29 → 2019-03-26 11:14 |  | 793.85d → none |  |
| 321 | **Depuración** | 2019-04-05 09:59 → 2019-04-05 09:29 | 2019-04-11 11:59 → 2019-04-11 11:14 | 4.25d → 4.22d | 12.66d → none |  |
| 322 | **Localización de defectos** | 2019-04-05 09:59 → 2019-04-05 09:29 | 2019-04-05 16:29 → 2019-04-05 15:59 |  | 12.66d → none |  |
| 323 | **Listado de defectos** | 2019-04-05 09:59 → 2019-04-05 09:29 | 2019-04-05 14:59 → 2019-04-05 14:29 |  | 12.66d → none |  |
| 324 | Realizar un listado intensivo de defectos encontrados en la codificación | 2019-04-05 09:59 → 2019-04-05 09:29 | 2019-04-05 14:59 → 2019-04-05 14:29 |  | 12.66d → none |  |
| 325 | **Ubicación de defectos** | 2019-04-05 14:59 → 2019-04-05 14:29 | 2019-04-05 16:29 → 2019-04-05 15:59 |  | 12.66d → none |  |
| 326 | Completar listado con posiciones exactas (linea, programa, módulo, etc) de los errores | 2019-04-05 14:59 → 2019-04-05 14:29 | 2019-04-05 15:29 → 2019-04-05 14:59 |  | 12.66d → none |  |
| 327 | Incluir en listado posibles relaciones del error con otro módulo o trozo de código | 2019-04-05 15:29 → 2019-04-05 14:59 | 2019-04-05 16:29 → 2019-04-05 15:59 |  | 12.66d → none |  |
| 328 | **Corrección de defectos** | 2019-04-05 16:29 → 2019-04-05 15:59 | 2019-04-11 11:59 → 2019-04-11 11:14 | 3.56d → 3.53d | 12.66d → none |  |
| 329 | **Modificaciones necesarias** | 2019-04-05 16:29 → 2019-04-05 15:59 | 2019-04-10 11:29 → 2019-04-10 10:59 |  | 12.66d → none |  |
| 330 | Implementar las modificaciones y arreglos de la codificación | 2019-04-05 16:29 → 2019-04-05 15:59 | 2019-04-10 11:29 → 2019-04-10 10:59 |  | 12.66d → none |  |
| 331 | **Revisión de corrección del defecto** | 2019-04-10 11:59 → 2019-04-10 11:14 | 2019-04-11 11:59 → 2019-04-11 11:14 |  | 12.66d → none |  |
| 332 | Revisar todos los errores del listado para comprobar que han sido arreglados correctamente | 2019-04-10 11:59 → 2019-04-10 11:14 | 2019-04-11 11:59 → 2019-04-11 11:14 |  | 12.66d → none |  |
| 333 | **Pruebas del sistema y sus componentes** | 2019-04-11 11:59 → 2019-04-11 11:14 | 2019-05-02 14:39 → 2019-05-02 14:24 | 15.21d → 15.27d |  |  |
| 334 | **Planificación de pruebas** | 2019-04-11 11:59 → 2019-04-11 11:14 | 2019-04-15 16:59 → 2019-04-15 16:14 |  | 12.66d → none |  |
| 335 | **Pruebas de aceptación** | 2019-04-11 11:59 → 2019-04-11 11:14 | 2019-04-11 16:59 → 2019-04-11 16:14 |  | 12.66d → none |  |
| 336 | **Pruebas para los gerentes de local** | 2019-04-11 11:59 → 2019-04-11 11:14 | 2019-04-11 16:59 → 2019-04-11 16:14 |  | 12.66d → none |  |
| 337 | Planear las pruebas basándose en su diseño | 2019-04-11 11:59 → 2019-04-11 11:14 | 2019-04-11 16:59 → 2019-04-11 16:14 |  | 12.66d → none |  |
| 338 | **Pruebas sobre el personal de local** | 2019-04-11 11:59 → 2019-04-11 11:14 | 2019-04-11 16:59 → 2019-04-11 16:14 |  | 12.66d → none |  |
| 339 | Planear las pruebas basándose en su diseño | 2019-04-11 11:59 → 2019-04-11 11:14 | 2019-04-11 16:59 → 2019-04-11 16:14 |  | 12.66d → none |  |
| 340 | **Pruebas sobre los usuarios del local** | 2019-04-11 11:59 → 2019-04-11 11:14 | 2019-04-11 16:59 → 2019-04-11 16:14 |  | 12.66d → none |  |
| 341 | Planear las pruebas basándose en su diseño | 2019-04-11 11:59 → 2019-04-11 11:14 | 2019-04-11 16:59 → 2019-04-11 16:14 |  | 12.66d → none |  |
| 342 | **Pruebas para los proveedores** | 2019-04-11 11:59 → 2019-04-11 11:14 | 2019-04-11 16:59 → 2019-04-11 16:14 |  | 12.66d → none |  |
| 343 | Planear las pruebas basándose en su diseño | 2019-04-11 11:59 → 2019-04-11 11:14 | 2019-04-11 16:59 → 2019-04-11 16:14 |  | 12.66d → none |  |
| 344 | **Pruebas del sistema** | 2019-04-11 16:59 → 2019-04-11 16:14 | 2019-04-12 11:59 → 2019-04-12 11:14 |  | 12.66d → none |  |
| 345 | **Pruebas para comunicación con PayPal** | 2019-04-11 16:59 → 2019-04-11 16:14 | 2019-04-12 11:59 → 2019-04-12 11:14 |  | 12.66d → none |  |
| 346 | Planear las pruebas basándose en su diseño | 2019-04-11 16:59 → 2019-04-11 16:14 | 2019-04-12 11:59 → 2019-04-12 11:14 |  | 12.66d → none |  |
| 347 | **Pruebas para comunicación con terminales TPV** | 2019-04-11 16:59 → 2019-04-11 16:14 | 2019-04-12 11:59 → 2019-04-12 11:14 |  | 12.66d → none |  |
| 348 | Planear las pruebas basándose en su diseño | 2019-04-11 16:59 → 2019-04-11 16:14 | 2019-04-12 11:59 → 2019-04-12 11:14 |  | 12.66d → none |  |
| 349 | **Pruebas para comunicación con tablets de local** | 2019-04-11 16:59 → 2019-04-11 16:14 | 2019-04-12 11:59 → 2019-04-12 11:14 |  | 12.66d → none |  |
| 350 | Planear las pruebas basándose en su diseño | 2019-04-11 16:59 → 2019-04-11 16:14 | 2019-04-12 11:59 → 2019-04-12 11:14 |  | 12.66d → none |  |
| 351 | **Pruebas de integración** | 2019-04-12 11:59 → 2019-04-12 11:14 | 2019-04-12 16:59 → 2019-04-12 16:14 |  | 12.66d → none |  |
| 352 | **Pruebas para comunicación entre módulos** | 2019-04-12 11:59 → 2019-04-12 11:14 | 2019-04-12 16:59 → 2019-04-12 16:14 |  | 12.66d → none |  |
| 353 | Planear las pruebas basándose en su diseño | 2019-04-12 11:59 → 2019-04-12 11:14 | 2019-04-12 16:59 → 2019-04-12 16:14 |  | 12.66d → none |  |
| 354 | **Pruebas de unidad** | 2019-04-12 16:59 → 2019-04-12 16:14 | 2019-04-15 16:59 → 2019-04-15 16:14 |  | 12.66d → none |  |
| 355 | **Pruebas de módulo de monitorización general del sistema** | 2019-04-12 16:59 → 2019-04-12 16:14 | 2019-04-15 11:59 → 2019-04-15 11:14 |  | 12.66d → none |  |
| 356 | Planear las pruebas basándose en su diseño | 2019-04-12 16:59 → 2019-04-12 16:14 | 2019-04-15 11:59 → 2019-04-15 11:14 |  | 12.66d → none |  |
| 357 | **Pruebas de módulo de entretenimiento** | 2019-04-12 16:59 → 2019-04-12 16:14 | 2019-04-15 11:59 → 2019-04-15 11:14 |  | 12.66d → none |  |
| 358 | Planear las pruebas basándose en su diseño | 2019-04-12 16:59 → 2019-04-12 16:14 | 2019-04-15 11:59 → 2019-04-15 11:14 |  | 12.66d → none |  |
| 359 | **Pruebas de módulo para muestra de datos y comandas** | 2019-04-12 16:59 → 2019-04-12 16:14 | 2019-04-15 11:59 → 2019-04-15 11:14 |  | 12.66d → none |  |
| 360 | Planear las pruebas basándose en su diseño | 2019-04-12 16:59 → 2019-04-12 16:14 | 2019-04-15 11:59 → 2019-04-15 11:14 |  | 12.66d → none |  |
| 361 | **Pruebas de módulo de gestión de proveedores** | 2019-04-15 11:59 → 2019-04-15 11:14 | 2019-04-15 16:59 → 2019-04-15 16:14 |  | 12.66d → none |  |
| 362 | Planear las pruebas basándose en su diseño | 2019-04-15 11:59 → 2019-04-15 11:14 | 2019-04-15 16:59 → 2019-04-15 16:14 |  | 12.66d → none |  |
| 363 | **Pruebas de módulo del camarero** | 2019-04-15 11:59 → 2019-04-15 11:14 | 2019-04-15 16:59 → 2019-04-15 16:14 |  | 12.66d → none |  |
| 364 | Planear las pruebas basándose en su diseño | 2019-04-15 11:59 → 2019-04-15 11:14 | 2019-04-15 16:59 → 2019-04-15 16:14 |  | 12.66d → none |  |
| 365 | **Pruebas del módulo de cocinas/barra** | 2019-04-15 11:59 → 2019-04-15 11:14 | 2019-04-15 16:59 → 2019-04-15 16:14 |  | 12.66d → none |  |
| 366 | Planear las pruebas basándose en su diseño | 2019-04-15 11:59 → 2019-04-15 11:14 | 2019-04-15 16:59 → 2019-04-15 16:14 |  | 12.66d → none |  |
| 367 | **Ejecución de pruebas** | 2019-04-15 16:59 → 2019-04-15 16:14 | 2019-04-30 08:29 → 2019-04-29 16:29 (-1d) | 10.06d → 10.03d | 12.66d → none |  |
| 368 | **Ejecución de casos de prueba** | 2019-04-15 16:59 → 2019-04-15 16:14 | 2019-04-18 16:59 → 2019-04-18 16:14 |  | 12.66d → none |  |

| ID | Task | Start | Finish | Duration | Total float |
| --- | --- | --- | --- | --- | --- |
| 369 | **Ejecución de conjunto de casos de unidad** | 2019-04-15 16:59 → 2019-04-15 16:14 | 2019-04-17 16:59 → 2019-04-17 16:14 |  | 112.66d → none |
| 370 | Dividir los equipos para ejecutar las pruebas de cada unidad | 2019-04-15 16:59 → 2019-04-15 16:14 | 2019-04-16 11:59 → 2019-04-16 11:14 |  | 12.66d → none |
| 371 | Ejecutar las pruebas de cada módulo individual | 2019-04-15 16:59 → 2019-04-15 16:14 | 2019-04-17 16:59 → 2019-04-17 16:14 |  | 112.66d → none |
| 372 | **Ejecución de conjunto de casos de integración** | 2019-04-15 16:59 → 2019-04-15 16:14 | 2019-04-18 11:59 → 2019-04-18 11:14 |  | 62.66d → none |
| 373 | Ejecutar las pruebas para comprobar que la integración de módulos no tiene fallos | 2019-04-15 16:59 → 2019-04-15 16:14 | 2019-04-18 11:59 → 2019-04-18 11:14 |  | 62.66d → none |
| 374 | **Ejecución de conjunto de casos de sistema** | 2019-04-15 16:59 → 2019-04-15 16:14 | 2019-04-18 11:59 → 2019-04-18 11:14 |  | 62.66d → none |
| 375 | Ejecutar las pruebas de sistema | 2019-04-15 16:59 → 2019-04-15 16:14 | 2019-04-18 11:59 → 2019-04-18 11:14 |  | 62.66d → none |
| 376 | **Ejecución de conjunto de casos de validación** | 2019-04-16 11:59 → 2019-04-16 11:14 | 2019-04-18 16:59 → 2019-04-18 16:14 |  | 12.66d → none |
| 377 | Ejecutar las pruebas de validación del programa | 2019-04-16 11:59 → 2019-04-16 11:14 | 2019-04-18 16:59 → 2019-04-18 16:14 |  | 12.66d → none |
| 378 | **Listado de errores** | 2019-04-18 16:59 → 2019-04-18 16:14 | 2019-04-23 11:59 → 2019-04-23 11:14 |  | 12.66d → none |
| 379 | **Enumeración de errores graves** | 2019-04-18 16:59 → 2019-04-18 16:14 | 2019-04-22 16:59 → 2019-04-22 16:14 |  | 12.66d → none |
| 380 | Crear un listado con los errores que se consideran más graves | 2019-04-18 16:59 → 2019-04-18 16:14 | 2019-04-19 11:59 → 2019-04-19 11:14 |  | 12.66d → none |
| 381 | Analizar cuales de los errores son tan graves como se estima y cuales pueden desestimarse | 2019-04-19 11:59 → 2019-04-19 11:14 | 2019-04-22 16:59 → 2019-04-22 16:14 |  | 12.66d → none |
| 382 | **Desestimación de errores leves o de otro tipo** | 2019-04-22 16:59 → 2019-04-22 16:14 | 2019-04-23 11:59 → 2019-04-23 11:14 |  | 12.66d → none |
| 383 | Analizar los errores leves para observar que alguna combinación de estos no cause problemas graves | 2019-04-22 16:59 → 2019-04-22 16:14 | 2019-04-23 11:59 → 2019-04-23 11:14 |  | 12.66d → none |
| 384 | **Corrección de errores** | 2019-04-23 11:59 → 2019-04-23 11:14 | 2019-04-26 08:29 → 2019-04-25 16:29 (-1d) | 2.56d → 2.53d | 12.66d → none |
| 385 | **Depuración de errores** | 2019-04-23 11:59 → 2019-04-23 11:14 | 2019-04-25 13:29 → 2019-04-25 11:29 | 2.06d → 2.03d | 12.66d → none |
| 386 | Arreglar todos los errores graves | 2019-04-23 13:29 → 2019-04-23 11:29 | 2019-04-25 13:29 → 2019-04-25 11:29 |  | 12.66d → none |
| 387 | Arreglar los errores leves que causen errores graves como conjunto | 2019-04-23 11:59 → 2019-04-23 11:14 | 2019-04-25 11:59 → 2019-04-25 11:14 |  | 18.85d → none |
| 388 | **Verificación de corrección** | 2019-04-25 13:29 → 2019-04-25 11:29 | 2019-04-26 08:29 → 2019-04-25 16:29 (-1d) |  | 12.66d → none |
| 389 | Comprobar que las correcciones han sido realizadas sin causar mas errores | 2019-04-25 13:29 → 2019-04-25 11:29 | 2019-04-26 08:29 → 2019-04-25 16:29 (-1d) |  | 12.66d → none |
| 390 | **Verificación de terminación** | 2019-04-26 08:29 → 2019-04-25 16:29 (-1d) | 2019-04-30 08:29 → 2019-04-29 16:29 (-1d) |  | 12.66d → none |
| 391 | **Revisión de listado de errores** | 2019-04-26 08:29 → 2019-04-25 16:29 (-1d) | 2019-04-29 13:29 → 2019-04-29 11:29 |  | 12.66d → none |
| 392 | Revisar el listado de errores e informe de correcciones | 2019-04-26 08:29 → 2019-04-25 16:29 (-1d) | 2019-04-29 13:29 → 2019-04-29 11:29 |  | 12.66d → none |
| 393 | **Aprobación formal de finalización** | 2019-04-29 13:29 → 2019-04-29 11:29 | 2019-04-30 08:29 → 2019-04-29 16:29 (-1d) |  | 12.66d → none |
| 394 | Reunirse con el encargado para formalizar la validación e informar del progreso semanal | 2019-04-29 13:29 → 2019-04-29 11:29 | 2019-04-30 08:29 → 2019-04-29 16:29 (-1d) |  | 12.66d → none |
| 395 | **Análisis de errores y evaluación** | 2019-04-30 08:29 → 2019-04-29 16:29 (-1d) | 2019-05-02 14:39 → 2019-05-02 14:24 | 2.65d → 2.74d |  |
| 396 | **Creación de documento de errores** | 2019-04-30 09:29 → 2019-04-30 09:14 | 2019-05-01 09:29 → 2019-05-01 09:14 |  |  |
| 397 | Redactar documento de errores | 2019-04-30 09:29 → 2019-04-30 09:14 | 2019-05-01 09:29 → 2019-05-01 09:14 |  |  |
| 398 | **Catalogación de errores** | 2019-04-30 08:29 → 2019-04-29 16:29 (-1d) | 2019-05-01 08:29 → 2019-04-30 16:29 (-1d) |  | 12.66d → none |
| 399 | Catalogar errores basandose en el análisis realizado en la ejecución de pruebas | 2019-04-30 08:29 → 2019-04-29 16:29 (-1d) | 2019-05-01 08:29 → 2019-04-30 16:29 (-1d) |  | 12.66d → none |
| 400 | **Realización de análisis estadísticos** | 2019-05-01 09:29 → 2019-05-01 09:14 | 2019-05-02 14:29 → 2019-05-02 14:14 |  |  |
| 401 | Realizar análisis estadístico de errores | 2019-05-01 09:29 → 2019-05-01 09:14 | 2019-05-02 09:29 → 2019-05-02 09:14 |  |  |
| 402 | Redactar informe estadístico | 2019-05-02 09:29 → 2019-05-02 09:14 | 2019-05-02 14:29 → 2019-05-02 14:14 |  |  |
| 403 | **Adición al archivo de proyectos de la empresa** | 2019-05-02 14:29 → 2019-05-02 14:14 | 2019-05-02 14:39 → 2019-05-02 14:24 |  |  |
| 404 | Añadir los documentos creados al archivo de la empresa | 2019-05-02 14:29 → 2019-05-02 14:14 | 2019-05-02 14:39 → 2019-05-02 14:24 |  |  |

## Version 7 (saved 2018-12-21)

Note of the change: correccion 5

Last finish stays 2019-05-02.

Changed:

| ID | Task | Other |
| --- | --- | --- |
| 302 | **Módulo de aplicación para los clientes** | was named Módulo de entretenimiento |

## Version 8 (saved 2018-12-21)

Note of the change: Cambios finales abraham

Last finish stays 2019-05-02.

Changed:

| ID | Task | Start | Finish | Duration | Total float |
| --- | --- | --- | --- | --- | --- |
| 9 | Plan de comportamiento | 2019-01-01 09:00 → 2019-01-01 09:44 | 2019-01-01 09:29 → 2019-01-01 10:14 |  | none → 449.57d |
| 10 | Crear plan de errores y problemas | 2019-01-01 09:29 → 2019-01-01 10:14 | 2019-01-01 11:29 → 2019-01-01 13:14 |  | none → 449.57d |
| 19 | Reunión equipo 6 | 2019-02-05 09:00 → 2019-02-06 16:14 (+1d) | 2019-02-05 09:14 → 2019-02-06 16:29 (+1d) |  | none → -49.93d |
| 20 | Reunión equipo 7 | 2019-02-12 09:00 → 2019-02-13 11:14 (+1d) | 2019-02-12 09:14 → 2019-02-13 11:29 (+1d) |  | none → -59.34d |
| 21 | Reunión equipo 8 | 2019-02-19 09:00 → 2019-02-20 09:29 (+1d) | 2019-02-19 09:14 → 2019-02-20 09:44 (+1d) |  | none → -59.34d |
| 23 | Reunión equipo 10 | 2019-03-05 11:45 → 2019-03-06 13:15 (+1d) | 2019-03-05 13:00 → 2019-03-06 13:30 (+1d) |  | none → -59.34d |
| 25 | Reunion equipo 12 | 2019-03-19 14:14 → 2019-03-20 13:30 (+1d) | 2019-03-19 14:29 → 2019-03-20 13:45 (+1d) |  | none → -59.34d |
| 54 | **Análisis de requisitos del sistema** | 2019-01-01 11:29 → 2019-01-01 13:14 |  | 19.62d → 19.53d | none → 259.47d |
| 55 | **Identificación de las necesidades del cliente** | 2019-01-01 11:29 → 2019-01-01 13:14 | 2019-01-07 13:17 → 2019-01-09 09:14 (+2d) | 4.1d → 5.63d | none → 296.97d |
| 56 | **Especificación informal del sistema** | 2019-01-01 11:29 → 2019-01-01 13:14 | 2019-01-07 13:17 → 2019-01-09 09:14 (+2d) | 4.1d → 5.63d | none → 296.97d |
| 57 | **Técnica de obtención de requisitos** | 2019-01-01 11:29 → 2019-01-01 13:14 | 2019-01-04 11:29 → 2019-01-04 13:14 |  | none → 449.57d |
| 58 | Preparar preguntas y temáticas para entrevista inicial | 2019-01-01 11:29 → 2019-01-01 13:14 | 2019-01-01 16:29 → 2019-01-02 08:14 (+1d) |  | none → 449.57d |
| 59 | Entrevistar jefe de proyecto | 2019-01-01 16:29 → 2019-01-02 08:14 (+1d) | 2019-01-02 11:29 → 2019-01-02 13:14 |  | none → 449.57d |
| 60 | Cuestionar futuros empleados para conocer sus necesidades | 2019-01-02 11:29 → 2019-01-02 13:14 | 2019-01-03 11:29 → 2019-01-03 13:14 |  | none → 449.57d |
| 61 | Cuestionar posibles clientes para conocer sus preferencias | 2019-01-03 11:29 → 2019-01-03 13:14 | 2019-01-04 11:29 → 2019-01-04 13:14 |  | none → 449.57d |
| 62 | **Determinación informal de aspectos del sistema** | 2019-01-04 11:29 → 2019-01-04 13:14 | 2019-01-07 13:17 → 2019-01-09 09:14 (+2d) | 1.1d → 2.63d | none → 296.97d |
| 63 | Determinar necesidades de jefe de proyectos | 2019-01-04 11:29 → 2019-01-04 13:14 | 2019-01-04 16:29 → 2019-01-07 08:14 (+3d) |  | none → 449.57d |
| 64 | **Determinación informal de funciones** | 2019-01-04 16:29 → 2019-01-08 09:14 (+4d) | 2019-01-07 13:17 → 2019-01-08 15:02 (+1d) |  | none → 336.97d |
| 65 | Cuestionar futuros empleados para conocer sus necesidades | 2019-01-04 16:29 → 2019-01-08 09:14 (+4d) | 2019-01-07 08:17 → 2019-01-08 10:02 (+1d) |  | none → 336.97d |
| 66 | Cuestionar posibles clientes para conocer sus preferencias | 2019-01-07 11:29 → 2019-01-08 14:14 (+1d) | 2019-01-07 13:17 → 2019-01-08 15:02 (+1d) |  | none → 336.97d |
| 67 | **Determinación informal de información manejada** | 2019-01-04 16:29 → 2019-01-08 10:02 (+4d) | 2019-01-07 09:05 → 2019-01-08 15:50 (+1d) | 0.2d → 0.6d | none → 296.97d |
| 68 | Cuestionar futuros empleados para conocer sus necesidades | 2019-01-07 08:17 → 2019-01-08 10:02 (+1d) | 2019-01-07 09:05 → 2019-01-08 10:50 (+1d) |  | none → 336.97d |
| 69 | Cuestionar posibles clientes para conocer sus preferencias | 2019-01-04 16:29 → 2019-01-08 15:02 (+4d) | 2019-01-07 08:17 → 2019-01-08 15:50 (+1d) |  | none → 296.97d |
| 70 | **Determinación informal de interfaces del sistema** | 2019-01-07 08:17 → 2019-01-08 10:50 (+1d) | 2019-01-07 09:53 → 2019-01-08 16:38 (+1d) | 0.2d → 0.6d | none → 296.97d |
| 71 | Cuestionar futuros empleados para conocer sus necesidades | 2019-01-07 09:05 → 2019-01-08 10:50 (+1d) | 2019-01-07 09:53 → 2019-01-08 11:38 (+1d) |  | none → 336.97d |
| 72 | Cuestionar posibles clientes para conocer sus preferencias | 2019-01-07 08:17 → 2019-01-08 15:50 (+1d) | 2019-01-07 09:05 → 2019-01-08 16:38 (+1d) |  | none → 296.97d |
| 73 | **Determinación informal de rendimiento del sistema** | 2019-01-07 09:05 → 2019-01-08 11:38 (+1d) | 2019-01-07 10:41 → 2019-01-09 08:26 (+2d) | 0.2d → 0.6d | none → 296.97d |
| 74 | Cuestionar futuros empleados para conocer sus necesidades | 2019-01-07 09:53 → 2019-01-08 11:38 (+1d) | 2019-01-07 10:41 → 2019-01-08 13:26 (+1d) |  | none → 336.97d |
| 75 | Cuestionar posibles clientes para conocer sus preferencias | 2019-01-07 09:05 → 2019-01-08 16:38 (+1d) | 2019-01-07 09:53 → 2019-01-09 08:26 (+2d) |  | none → 296.97d |
| 76 | **Determinación informal de las restricciones del sistema** | 2019-01-07 09:53 → 2019-01-08 13:26 (+1d) | 2019-01-07 11:29 → 2019-01-09 09:14 (+2d) | 0.2d → 0.6d | none → 296.97d |
| 77 | Cuestionar futuros empleados para conocer sus necesidades | 2019-01-07 10:41 → 2019-01-08 13:26 (+1d) | 2019-01-07 11:29 → 2019-01-08 14:14 (+1d) |  | none → 336.97d |
| 78 | Cuestionar posibles clientes para conocer sus preferencias | 2019-01-07 09:53 → 2019-01-09 08:26 (+2d) | 2019-01-07 10:41 → 2019-01-09 09:14 (+2d) |  | none → 296.97d |
| 79 | **Asignación de funciones a cada elemento del sistema** | 2019-01-07 13:17 → 2019-01-09 09:14 (+2d) |  | 6.99d → 5.38d | none → 259.47d |
| 80 | **Alternativas de creación del sistema** | 2019-01-07 13:17 → 2019-01-09 09:14 (+2d) | 2019-01-10 08:17 → 2019-01-11 14:14 (+1d) |  | none → 296.97d |
| 81 | Buscar tecnologías y metodologías alternativas | 2019-01-07 13:17 → 2019-01-09 09:14 (+2d) | 2019-01-10 08:17 → 2019-01-11 14:14 (+1d) |  | none → 296.97d |
| 82 | Informar del progreso de la semana al Jefe de proyecto | 2019-01-10 08:17 → 2019-01-11 14:14 (+1d) | 2019-01-10 09:17 → 2019-01-11 15:14 (+1d) |  | none → 296.97d |
| 83 | **Validación de las alternativas de creación del sistema** | 2019-01-10 09:17 → 2019-01-11 15:14 (+1d) |  | 4.37d → 2.75d | none → 259.47d |
| 84 | Analizar las alternativas obtenidas | 2019-01-10 09:17 → 2019-01-11 15:14 (+1d) | 2019-01-11 09:17 → 2019-01-14 15:14 (+3d) |  | none → 296.97d |
| 152 | **Diseño del sistema software** | 2019-01-01 09:00 → 2019-02-01 16:14 (+31d) | 2019-03-13 14:14 → 2019-03-14 13:30 (+1d) | 51.53d → 28.66d | none → -59.34d |
| 153 | **Diseño funcional** | 2019-01-01 09:00 → 2019-02-01 16:14 (+31d) | 2019-01-09 09:00 → 2019-02-11 16:14 (+33d) |  | none → -59.34d |
| 154 | **Diseño módulo del camarero** | 2019-01-01 09:00 → 2019-02-01 16:14 (+31d) | 2019-01-02 09:00 → 2019-02-04 16:14 (+33d) |  | none → -59.34d |
| 155 | Realizar diseño del módulo | 2019-01-01 09:00 → 2019-02-01 16:14 (+31d) | 2019-01-02 09:00 → 2019-02-04 16:14 (+33d) |  | none → -59.34d |
| 156 | **Diseño módulo de gestión de proveedores** | 2019-01-02 09:00 → 2019-02-04 16:14 (+33d) | 2019-01-03 09:00 → 2019-02-05 16:14 (+33d) |  | none → -59.34d |
| 157 | Realizar diseño del módulo | 2019-01-02 09:00 → 2019-02-04 16:14 (+33d) | 2019-01-03 09:00 → 2019-02-05 16:14 (+33d) |  | none → -59.34d |
| 158 | **Diseño módulo de cocinas/barras** | 2019-01-03 09:00 → 2019-02-05 16:14 (+33d) | 2019-01-04 09:00 → 2019-02-06 16:14 (+33d) |  | none → -59.34d |
| 159 | Realizar diseño del módulo | 2019-02-01 16:14 → 2019-02-05 16:14 (+4d) | 2019-02-04 16:14 → 2019-02-06 16:14 (+2d) |  | none → -59.34d |
| 160 | **Diseño módulo para muestra de datos y comandas** | 2019-01-04 09:00 → 2019-02-06 16:14 (+33d) | 2019-01-07 09:00 → 2019-02-07 16:14 (+31d) |  | none → -59.34d |
| 161 | Realizar diseño del módulo | 2019-01-04 09:00 → 2019-02-06 16:14 (+33d) | 2019-01-07 09:00 → 2019-02-07 16:14 (+31d) |  | none → -59.34d |
| 162 | **Diseño módulo de entretenimiento** | 2019-01-07 09:00 → 2019-02-07 16:14 (+31d) | 2019-01-08 09:00 → 2019-02-08 16:14 (+31d) |  | none → -59.34d |
| 163 | Realizar diseño del módulo | 2019-01-07 09:00 → 2019-02-07 16:14 (+31d) | 2019-01-08 09:00 → 2019-02-08 16:14 (+31d) |  | none → -59.34d |
| 164 | **Diseño módulo de monitorización general del sistema** | 2019-01-08 09:00 → 2019-02-08 16:14 (+31d) | 2019-01-09 09:00 → 2019-02-11 16:14 (+33d) |  | none → -59.34d |
| 165 | Realizar diseño del módulo | 2019-01-08 09:00 → 2019-02-08 16:14 (+31d) | 2019-01-09 09:00 → 2019-02-11 16:14 (+33d) |  | none → -59.34d |
| 166 | **Diseño técnico** | 2019-01-09 09:00 → 2019-02-11 16:14 (+33d) | 2019-02-21 16:45 → 2019-02-25 08:15 (+4d) | 31.84d → 9.13d | none → -59.34d |
| 167 | **Selección de tecnologías** | 2019-01-09 09:00 → 2019-02-11 16:14 (+33d) | 2019-02-14 16:14 → 2019-02-18 09:29 (+4d) | 26.78d → 4.28d | none → -59.34d |
| 168 | **Base de datos a usar** | 2019-01-09 09:00 → 2019-02-11 16:14 (+33d) | 2019-01-10 14:00 → 2019-02-13 11:14 (+34d) |  | none → -59.34d |
| 169 | Comparar bases de datos disponibles | 2019-01-09 09:00 → 2019-02-11 16:14 (+33d) | 2019-01-10 09:00 → 2019-02-12 16:14 (+33d) |  | none → -59.34d |
| 170 | Elegir la opción que mejor se adapte al proyecto | 2019-01-10 09:00 → 2019-02-12 16:14 (+33d) | 2019-01-10 14:00 → 2019-02-13 11:14 (+34d) |  | none → -59.34d |
| 171 | **Sistema operativo y aplicaciones de las tablets** | 2019-02-12 09:14 → 2019-02-13 11:29 (+1d) | 2019-02-13 14:14 → 2019-02-14 16:29 (+1d) |  | none → -59.34d |
| 172 | Comparar los sistemas operativos disponibles | 2019-02-12 09:14 → 2019-02-13 11:29 (+1d) | 2019-02-13 09:14 → 2019-02-14 11:29 (+1d) |  | none → -59.34d |
| 173 | Elegir la opción que mejor se adapte al proyecto | 2019-02-13 09:14 → 2019-02-14 11:29 (+1d) | 2019-02-13 14:14 → 2019-02-14 16:29 (+1d) |  | none → -59.34d |
| 174 | **Lenguaje de programación y consultas SQL** | 2019-02-13 14:14 → 2019-02-14 16:29 (+1d) | 2019-02-14 16:14 → 2019-02-18 09:29 (+4d) |  | none → -59.34d |
| 175 | Analizar que lenguaje de programación y consultas SQL se adapta mejor a nuestra BD elegida | 2019-02-13 14:14 → 2019-02-14 16:29 (+1d) | 2019-02-14 16:14 → 2019-02-18 09:29 (+4d) |  | none → -59.34d |
| 176 | Analizar que lenguaje se adapta mejor a las necesidades de la empresa | 2019-02-13 14:14 → 2019-02-14 16:29 (+1d) | 2019-02-14 16:14 → 2019-02-18 09:29 (+4d) |  | none → -59.34d |
| 177 | **Interfaces de comunicación e interoperación con otras aplicaciones** | 2019-01-09 09:00 → 2019-02-11 16:14 (+33d) | 2019-01-10 09:00 → 2019-02-12 16:14 (+33d) |  | none → 268.76d |
| 178 | Diseñar mediante diagramas y diseño informal las interfaces | 2019-01-09 09:00 → 2019-02-11 16:14 (+33d) | 2019-01-10 09:00 → 2019-02-12 16:14 (+33d) |  | none → 268.76d |
| 179 | **Validación de tecnologías** | 2019-02-14 16:14 → 2019-02-18 09:29 (+4d) | 2019-02-21 16:45 → 2019-02-25 08:15 (+4d) | 5.06d → 4.84d | none → -59.34d |
| 180 | **Diseño de pruebas de rendimiento de las tecnologías** | 2019-02-14 16:14 → 2019-02-18 09:29 (+4d) | 2019-02-18 16:14 → 2019-02-20 09:29 (+2d) |  | none → -59.34d |
| 181 | Diseñar las pruebas de rendimiento | 2019-02-14 16:14 → 2019-02-18 09:29 (+4d) | 2019-02-18 16:14 → 2019-02-20 09:29 (+2d) |  | none → -59.34d |
| 182 | **Diseño de pruebas de coste de las tecnologías** | 2019-02-19 09:14 → 2019-02-20 09:44 (+1d) | 2019-02-21 16:45 → 2019-02-25 08:15 (+4d) |  | none → -59.34d |
| 183 | Diseñar las pruebas de coste | 2019-02-19 09:14 → 2019-02-20 09:44 (+1d) | 2019-02-21 16:45 → 2019-02-25 08:15 (+4d) |  | none → -59.34d |

| ID | Task | Start | Finish | Duration | Total float |
| --- | --- | --- | --- | --- | --- |
| 184 | **Diseño de pruebas** | 2019-02-21 16:45 → 2019-02-25 08:15 (+4d) | 2019-03-08 13:00 → 2019-03-11 13:30 (+3d) |  | none → -59.34d |
| 185 | **Diseño de pruebas de aceptación** | 2019-02-21 16:45 → 2019-02-25 08:15 (+4d) | 2019-02-27 09:14 → 2019-02-28 08:15 (+1d) | 3.19d → 3d | none → 543.76d |
| 186 | **Diseño de pruebas para los gerentes del local** | 2019-02-21 16:45 → 2019-02-25 08:15 (+4d) | 2019-02-25 11:45 → 2019-02-26 13:15 (+1d) |  | none → 543.76d |
| 187 | Redactar informe de los minimos que deben cubrir las pruebas | 2019-02-21 16:45 → 2019-02-25 08:15 (+4d) | 2019-02-22 11:45 → 2019-02-25 13:15 (+3d) |  | none → 543.76d |
| 188 | Diseñar las pruebas basandose en los informes | 2019-02-22 11:45 → 2019-02-25 13:15 (+3d) | 2019-02-25 11:45 → 2019-02-26 13:15 (+1d) |  | none → 543.76d |
| 189 | **Diseño de pruebas sobre el personal del local** | 2019-02-21 16:45 → 2019-02-25 08:15 (+4d) | 2019-02-25 11:45 → 2019-02-26 13:15 (+1d) |  | none → -59.34d |
| 190 | Redactar informe de los minimos que deben cubrir las pruebas | 2019-02-21 16:45 → 2019-02-25 08:15 (+4d) | 2019-02-22 11:45 → 2019-02-25 13:15 (+3d) |  | none → -59.34d |
| 191 | Diseñar las pruebas basandose en los informes | 2019-02-22 11:45 → 2019-02-25 13:15 (+3d) | 2019-02-25 11:45 → 2019-02-26 13:15 (+1d) |  | none → -59.34d |
| 192 | **Diseño de pruebas sobre los usuarios del local** | 2019-02-21 16:45 → 2019-02-25 08:15 (+4d) | 2019-02-25 11:45 → 2019-02-26 13:15 (+1d) |  | none → 693.76d |
| 193 | Redactar informe de los minimos que deben cubrir las pruebas | 2019-02-21 16:45 → 2019-02-25 08:15 (+4d) | 2019-02-22 11:45 → 2019-02-25 13:15 (+3d) |  | none → 693.76d |
| 194 | Diseñar las pruebas basandose en los informes | 2019-02-22 11:45 → 2019-02-25 13:15 (+3d) | 2019-02-25 11:45 → 2019-02-26 13:15 (+1d) |  | none → 693.76d |
| 195 | **Diseño de pruebas para los proveedores** | 2019-02-25 11:45 → 2019-02-26 13:15 (+1d) | 2019-02-27 09:14 → 2019-02-28 08:15 (+1d) | 1.69d → 1.5d | none → 543.76d |
| 196 | Redactar informe de los minimos que deben cubrir las pruebas | 2019-02-25 11:45 → 2019-02-26 13:15 (+1d) | 2019-02-25 16:45 → 2019-02-27 08:15 (+2d) |  | none → 543.76d |
| 197 | Diseñar las pruebas basandose en los informes | 2019-02-26 09:14 → 2019-02-27 08:15 (+1d) | 2019-02-27 09:14 → 2019-02-28 08:15 (+1d) |  | none → 543.76d |
| 198 | **Diseño de pruebas del sistema** | 2019-02-25 11:45 → 2019-02-26 13:15 (+1d) | 2019-02-28 14:14 → 2019-03-01 13:15 (+1d) | 3.19d → 3d | none → 543.76d |
| 199 | **Diseño de pruebas para comunicación con PayPal** | 2019-02-25 11:45 → 2019-02-26 13:15 (+1d) | 2019-02-26 16:45 → 2019-02-28 08:15 (+2d) |  | none → -59.34d |
| 200 | Redactar informe de los minimos que deben cubrir las pruebas | 2019-02-25 11:45 → 2019-02-26 13:15 (+1d) | 2019-02-25 16:45 → 2019-02-27 08:15 (+2d) |  | none → -59.34d |
| 201 | Diseñar las pruebas basandose en los informes | 2019-02-25 16:45 → 2019-02-27 08:15 (+2d) | 2019-02-26 16:45 → 2019-02-28 08:15 (+2d) |  | none → -59.34d |
| 202 | **Diseño de pruebas para comunicación con terminales TPV** | 2019-02-25 11:45 → 2019-02-26 13:15 (+1d) | 2019-02-26 16:45 → 2019-02-28 08:15 (+2d) |  | none → 693.76d |
| 203 | Redactar informe de los minimos que deben cubrir las pruebas | 2019-02-25 11:45 → 2019-02-26 13:15 (+1d) | 2019-02-25 16:45 → 2019-02-27 08:15 (+2d) |  | none → 693.76d |
| 204 | Diseñar las pruebas basandose en los informes | 2019-02-25 16:45 → 2019-02-27 08:15 (+2d) | 2019-02-26 16:45 → 2019-02-28 08:15 (+2d) |  | none → 693.76d |
| 205 | **Diseño de pruebas para comunicación con tablets del local** | 2019-02-27 09:14 → 2019-02-28 08:15 (+1d) | 2019-02-28 14:14 → 2019-03-01 13:15 (+1d) |  | none → 543.76d |
| 206 | Redactar informe de los minimos que deben cubrir las pruebas | 2019-02-27 09:14 → 2019-02-28 08:15 (+1d) | 2019-02-27 14:14 → 2019-02-28 13:15 (+1d) |  | none → 543.76d |
| 207 | Diseñar las pruebas basandose en los informes | 2019-02-27 14:14 → 2019-02-28 13:15 (+1d) | 2019-02-28 14:14 → 2019-03-01 13:15 (+1d) |  | none → 543.76d |
| 208 | **Diseño de pruebas de integración** | 2019-02-26 16:45 → 2019-02-28 08:15 (+2d) | 2019-02-28 11:45 → 2019-03-01 13:15 (+1d) |  | none → -59.34d |
| 209 | **Diseño de pruebas para comunicación entre módulos** | 2019-02-26 16:45 → 2019-02-28 08:15 (+2d) | 2019-02-28 11:45 → 2019-03-01 13:15 (+1d) |  | none → -59.34d |
| 210 | Redactar informe de los minimos que deben cubrir las pruebas | 2019-02-26 16:45 → 2019-02-28 08:15 (+2d) | 2019-02-27 11:45 → 2019-02-28 13:15 (+1d) |  | none → -59.34d |
| 211 | Diseñar las pruebas basandose en los informes | 2019-02-27 11:45 → 2019-02-28 13:15 (+1d) | 2019-02-28 11:45 → 2019-03-01 13:15 (+1d) |  | none → -59.34d |
| 212 | **Diseño de pruebas de unidad** | 2019-02-28 11:45 → 2019-03-01 13:15 (+1d) | 2019-03-08 13:00 → 2019-03-11 13:30 (+3d) |  | none → -59.34d |
| 213 | **Diseño de pruebas de módulo de monitorización general del sistema** | 2019-02-28 11:45 → 2019-03-01 13:15 (+1d) | 2019-03-01 16:45 → 2019-03-05 08:15 (+4d) |  | none → -59.34d |
| 214 | Redactar informe de los minimos que deben cubrir las pruebas | 2019-02-28 11:45 → 2019-03-01 13:15 (+1d) | 2019-02-28 16:45 → 2019-03-04 08:15 (+4d) |  | none → -59.34d |
| 215 | Diseñar las pruebas basandose en los informes | 2019-02-28 16:45 → 2019-03-04 08:15 (+4d) | 2019-03-01 16:45 → 2019-03-05 08:15 (+4d) |  | none → -59.34d |
| 216 | **Diseño de pruebas de módulo de entretenimiento** | 2019-03-01 16:45 → 2019-03-05 08:15 (+4d) | 2019-03-05 11:45 → 2019-03-06 13:15 (+1d) |  | none → -59.34d |
| 217 | Redactar informe de los minimos que deben cubrir las pruebas | 2019-03-01 16:45 → 2019-03-05 08:15 (+4d) | 2019-03-04 11:45 → 2019-03-05 13:15 (+1d) |  | none → -59.34d |
| 218 | Diseñar las pruebas basandose en los informes | 2019-03-04 11:45 → 2019-03-05 13:15 (+1d) | 2019-03-05 11:45 → 2019-03-06 13:15 (+1d) |  | none → -59.34d |
| 219 | **Diseño de pruebas de módulo para muestra de datos y comandas** | 2019-03-05 13:00 → 2019-03-06 13:30 (+1d) | 2019-03-07 08:00 → 2019-03-08 08:30 (+1d) |  | none → -59.34d |
| 220 | Redactar informe de los minimos que deben cubrir las pruebas | 2019-03-05 13:00 → 2019-03-06 13:30 (+1d) | 2019-03-06 08:00 → 2019-03-07 08:30 (+1d) |  | none → -59.34d |
| 221 | Diseñar las pruebas basandose en los informes | 2019-03-06 08:00 → 2019-03-07 08:30 (+1d) | 2019-03-07 08:00 → 2019-03-08 08:30 (+1d) |  | none → -59.34d |
| 222 | **Diseño de pruebas de módulo de gestión de proveedores** | 2019-03-07 08:00 → 2019-03-08 08:30 (+1d) | 2019-03-08 13:00 → 2019-03-11 13:30 (+3d) |  | none → -59.34d |
| 223 | Redactar informe de los minimos que deben cubrir las pruebas | 2019-03-07 08:00 → 2019-03-08 08:30 (+1d) | 2019-03-07 13:00 → 2019-03-08 13:30 (+1d) |  | none → -59.34d |
| 224 | Diseñar las pruebas basandose en los informes | 2019-03-07 13:00 → 2019-03-08 13:30 (+1d) | 2019-03-08 13:00 → 2019-03-11 13:30 (+3d) |  | none → -59.34d |
| 225 | **Diseño de pruebas de módulo del camarero** | 2019-02-28 11:45 → 2019-03-01 13:15 (+1d) | 2019-03-01 16:45 → 2019-03-05 08:15 (+4d) |  | none → 243.76d |
| 226 | Redactar informe de los minimos que deben cubrir las pruebas | 2019-02-28 11:45 → 2019-03-01 13:15 (+1d) | 2019-02-28 16:45 → 2019-03-04 08:15 (+4d) |  | none → 243.76d |
| 227 | Diseñar las pruebas basandose en los informes | 2019-02-28 16:45 → 2019-03-04 08:15 (+4d) | 2019-03-01 16:45 → 2019-03-05 08:15 (+4d) |  | none → 243.76d |
| 228 | **Diseño de pruebas del módulo de cocinas/barra** | 2019-03-01 16:45 → 2019-03-05 08:15 (+4d) | 2019-03-05 11:45 → 2019-03-06 13:15 (+1d) |  | none → 243.76d |
| 229 | Redactar informe de los minimos que deben cubrir las pruebas | 2019-03-01 16:45 → 2019-03-05 08:15 (+4d) | 2019-03-04 11:45 → 2019-03-05 13:15 (+1d) |  | none → 243.76d |
| 230 | Diseñar las pruebas basandose en los informes | 2019-03-04 11:45 → 2019-03-05 13:15 (+1d) | 2019-03-05 11:45 → 2019-03-06 13:15 (+1d) |  | none → 243.76d |
| 231 | **Planificación** | 2019-03-08 13:00 → 2019-03-11 13:30 (+3d) | 2019-03-13 14:14 → 2019-03-14 13:30 (+1d) | 3.15d → 3d | none → -59.34d |
| 232 | **Revisión de la planificación** | 2019-03-08 13:00 → 2019-03-11 13:30 (+3d) | 2019-03-13 09:14 → 2019-03-14 08:30 (+1d) | 2.65d → 2.5d | none → -59.34d |
| 233 | Revisar que la planificación se ajuste al tiempo adecuado | 2019-03-08 13:00 → 2019-03-11 13:30 (+3d) | 2019-03-12 08:00 → 2019-03-13 08:30 (+1d) |  | none → -59.34d |
| 234 | Revisar que la planificación se ajuste adecuadamente a nuestros recursos | 2019-03-12 09:14 → 2019-03-13 08:30 (+1d) | 2019-03-13 09:14 → 2019-03-14 08:30 (+1d) |  | none → -59.34d |
| 235 | **Validación de la planificación** | 2019-03-13 09:14 → 2019-03-14 08:30 (+1d) | 2019-03-13 14:14 → 2019-03-14 13:30 (+1d) |  | none → -59.34d |
| 236 | Reunirse con el jefe para validar la planificación revisada, incluye informe semanal | 2019-03-13 09:14 → 2019-03-14 08:30 (+1d) | 2019-03-13 14:14 → 2019-03-14 13:30 (+1d) |  | none → -59.34d |
| 237 | **Codificación del sistema** | 2019-03-13 14:14 → 2019-03-14 13:30 (+1d) |  | 20.75d → 19.84d | none → 9.46d |
| 238 | **Ambiente de desarrollo** | 2019-03-13 14:14 → 2019-03-14 13:30 (+1d) | 2019-03-21 16:14 → 2019-03-25 16:29 (+4d) | 6.25d → 7.37d | none → 31.36d |
| 239 | **Instalación del entorno de trabajo** | 2019-03-13 14:14 → 2019-03-14 13:30 (+1d) | 2019-03-15 14:14 → 2019-03-18 13:30 (+3d) |  | none → -59.34d |
| 240 | **Selección de tecnologías** | 2019-03-13 14:14 → 2019-03-14 13:30 (+1d) | 2019-03-14 09:14 → 2019-03-15 08:30 (+1d) |  | none → -59.34d |
| 241 | Seleccionar las tecnologías basandose en la fase de análisis | 2019-03-13 14:14 → 2019-03-14 13:30 (+1d) | 2019-03-14 09:14 → 2019-03-15 08:30 (+1d) |  | none → -59.34d |
| 242 | **Adquisición de tecnologías** | 2019-03-14 09:14 → 2019-03-15 08:30 (+1d) | 2019-03-14 14:14 → 2019-03-15 13:30 (+1d) |  | none → -59.34d |
| 243 | Realizar la compra de licencias de software de empresa | 2019-03-14 09:14 → 2019-03-15 08:30 (+1d) | 2019-03-14 14:14 → 2019-03-15 13:30 (+1d) |  | none → -59.34d |
| 244 | Comprar el hardware necesario | 2019-03-14 09:14 → 2019-03-15 08:30 (+1d) | 2019-03-14 14:14 → 2019-03-15 13:30 (+1d) |  | none → -59.34d |
| 245 | **Instalación en ordenadores locales** | 2019-03-14 14:14 → 2019-03-15 13:30 (+1d) | 2019-03-15 14:14 → 2019-03-18 13:30 (+3d) |  | none → -59.34d |
| 246 | Instalar el software adquirido en los ordenadores locales | 2019-03-14 14:14 → 2019-03-15 13:30 (+1d) | 2019-03-15 14:14 → 2019-03-18 13:30 (+3d) |  | none → -59.34d |
| 247 | **Configuración del entorno de trabajo** | 2019-03-15 14:14 → 2019-03-18 13:30 (+3d) | 2019-03-19 14:14 → 2019-03-21 14:29 (+2d) | 2d → 3.12d | none → 31.36d |
| 248 | **Ajuste de propiedades generales** | 2019-03-15 14:14 → 2019-03-18 13:30 (+3d) | 2019-03-19 14:14 → 2019-03-20 13:30 (+1d) |  | none → -59.34d |
| 249 | Configurar el SO y programas básico de uso general | 2019-03-15 14:14 → 2019-03-18 13:30 (+3d) | 2019-03-19 14:14 → 2019-03-20 13:30 (+1d) |  | none → -59.34d |
| 250 | **Ajuste de propiedades específicas** | 2019-03-15 14:14 → 2019-03-19 14:29 (+4d) | 2019-03-19 14:14 → 2019-03-21 14:29 (+2d) |  | none → 31.36d |
| 251 | Preparar el software específico en los equipos de personal especializado | 2019-03-15 14:14 → 2019-03-19 14:29 (+4d) | 2019-03-19 14:14 → 2019-03-21 14:29 (+2d) |  | none → 31.36d |
| 252 | **Revisiones de eficiencia y velocidad del entorno** | 2019-03-19 14:14 → 2019-03-21 14:29 (+2d) | 2019-03-21 16:14 → 2019-03-25 16:29 (+4d) |  | none → 31.36d |
| 253 | **Evaluación de eficiencia y velocidad** | 2019-03-19 14:14 → 2019-03-21 14:29 (+2d) | 2019-03-20 14:14 → 2019-03-22 14:29 (+2d) |  | none → 31.36d |

| ID | Task | Start | Finish | Duration | Total float |
| --- | --- | --- | --- | --- | --- |
| 254 | Realizar evaluación de eficiencia y velocidad durante la preparación de los ordenadores | 2019-03-19 14:14 → 2019-03-21 14:29 (+2d) | 2019-03-20 14:14 → 2019-03-22 14:29 (+2d) |  | none → 31.36d |
| 255 | **Reconfiguración de tecnologías o herramientas** | 2019-03-20 14:14 → 2019-03-22 14:29 (+2d) | 2019-03-21 14:14 → 2019-03-25 14:29 (+4d) |  | none → 31.36d |
| 256 | Ajustar las configuraciones iniciales basándose en las evaluaciones | 2019-03-20 14:14 → 2019-03-22 14:29 (+2d) | 2019-03-21 14:14 → 2019-03-25 14:29 (+4d) |  | none → 31.36d |
| 257 | **Selección parcial de otras herramientas** | 2019-03-21 14:14 → 2019-03-25 14:29 (+4d) | 2019-03-21 16:14 → 2019-03-25 16:29 (+4d) |  | none → 31.36d |
| 258 | Cubrir problemas encontrados con las herramientas de terceros necesarias | 2019-03-21 14:14 → 2019-03-25 14:29 (+4d) | 2019-03-21 16:14 → 2019-03-25 16:29 (+4d) |  | none → 31.36d |
| 259 | **Módulos** | 2019-03-21 16:14 → 2019-03-25 16:29 (+4d) |  | 10.28d → 8.25d | none → 9.46d |
| 260 | **Módulo del camarero** | 2019-03-21 16:14 → 2019-03-25 16:29 (+4d) |  | 4.75d → 2.72d | none → 562.56d |
| 263 | **Función de comunicar llamadas al camarero** | 2019-03-21 16:14 → 2019-03-25 16:29 (+4d) | 2019-03-22 16:14 → 2019-03-26 16:29 (+4d) |  | none → 734.46d |
| 264 | Implementar la función de llamadas al camararero mediante la interfaz diseñada | 2019-03-21 16:14 → 2019-03-25 16:29 (+4d) | 2019-03-22 16:14 → 2019-03-26 16:29 (+4d) |  | none → 734.46d |
| 265 | **Función de liberar una mesa ocupada** | 2019-03-21 16:14 → 2019-03-25 16:29 (+4d) | 2019-03-22 16:14 → 2019-03-26 16:29 (+4d) |  | none → 734.46d |
| 266 | Implementar la función que permite liberar mesas a camareros | 2019-03-21 16:14 → 2019-03-25 16:29 (+4d) | 2019-03-22 16:14 → 2019-03-26 16:29 (+4d) |  | none → 734.46d |
| 267 | **Interfaz visual agradable** | 2019-03-21 16:14 → 2019-03-25 16:29 (+4d) | 2019-03-22 11:14 → 2019-03-26 11:29 (+4d) |  | none → 784.46d |
| 268 | Programar la interfaz visual | 2019-03-21 16:14 → 2019-03-25 16:29 (+4d) | 2019-03-22 11:14 → 2019-03-26 11:29 (+4d) |  | none → 784.46d |
| 269 | **Módulo de gestión de proveedores** | 2019-03-21 16:14 → 2019-03-25 16:29 (+4d) |  | 5.75d → 3.72d | none → 9.46d |
| 272 | **Interfaz visual agradable** | 2019-03-21 16:14 → 2019-03-25 16:29 (+4d) | 2019-03-22 11:14 → 2019-03-26 11:29 (+4d) |  | none → 331.36d |
| 273 | Programar la interfaz visual | 2019-03-21 16:14 → 2019-03-25 16:29 (+4d) | 2019-03-22 11:14 → 2019-03-26 11:29 (+4d) |  | none → 331.36d |
| 274 | **Módulo de cocinas/barra** | 2019-03-21 16:14 → 2019-03-25 16:29 (+4d) | 2019-03-26 09:14 → 2019-03-28 09:29 (+2d) |  | none → 156.36d |
| 275 | **Función de cobrar con tarjeta u otros métodos** | 2019-03-21 16:14 → 2019-03-25 16:29 (+4d) | 2019-03-25 16:14 → 2019-03-27 16:29 (+2d) |  | none → 181.36d |
| 276 | Programar funciones de cobro | 2019-03-21 16:14 → 2019-03-25 16:29 (+4d) | 2019-03-25 11:14 → 2019-03-27 11:29 (+2d) |  | none → 181.36d |
| 277 | Adaptar funciones de cobro a todos los métodos de pago | 2019-03-25 11:14 → 2019-03-27 11:29 (+2d) | 2019-03-25 16:14 → 2019-03-27 16:29 (+2d) |  | none → 181.36d |
| 278 | **Función de proteger los datos de las transacciones** | 2019-03-21 16:14 → 2019-03-25 16:29 (+4d) | 2019-03-25 11:14 → 2019-03-27 11:29 (+2d) |  | none → 231.36d |
| 279 | Asegurarse de que se guardan apropiadamente los datos | 2019-03-21 16:14 → 2019-03-25 16:29 (+4d) | 2019-03-22 11:14 → 2019-03-26 11:29 (+4d) |  | none → 231.36d |
| 280 | Proteger mediante encriptación o restricciones de acceso los datos | 2019-03-22 11:14 → 2019-03-26 11:29 (+4d) | 2019-03-25 11:14 → 2019-03-27 11:29 (+2d) |  | none → 231.36d |
| 281 | **Almacén de datos de comandas** | 2019-03-21 16:14 → 2019-03-25 16:29 (+4d) | 2019-03-25 16:14 → 2019-03-27 16:29 (+2d) |  | none → 156.36d |
| 282 | Programar el almacen de datos de pedidos | 2019-03-21 16:14 → 2019-03-25 16:29 (+4d) | 2019-03-25 16:14 → 2019-03-27 16:29 (+2d) |  | none → 156.36d |
| 283 | **Almacén de datos de mesas** | 2019-03-25 16:14 → 2019-03-27 16:29 (+2d) | 2019-03-26 09:14 → 2019-03-28 09:29 (+2d) |  | none → 156.36d |
| 284 | Adaptar el almacén de datos de pedidos a las mesas | 2019-03-25 16:14 → 2019-03-27 16:29 (+2d) | 2019-03-26 09:14 → 2019-03-28 09:29 (+2d) |  | none → 156.36d |
| 302 | **Módulo de aplicación para los clientes** | 2019-03-21 16:14 → 2019-03-25 16:29 (+4d) | 2019-03-25 16:14 → 2019-03-27 16:29 (+2d) |  | none → 534.46d |
| 303 | **Función de ofrecer entretenimiento al cliente** | 2019-03-21 16:14 → 2019-03-25 16:29 (+4d) | 2019-03-22 08:14 → 2019-03-26 08:29 (+4d) |  | none → 571.96d |
| 304 | Asegurar que los programas adecuados están instalados y son accesibles | 2019-03-21 16:14 → 2019-03-25 16:29 (+4d) | 2019-03-22 08:14 → 2019-03-26 08:29 (+4d) |  | none → 571.96d |
| 305 | **Función de interactuar con el local** | 2019-03-21 16:14 → 2019-03-25 16:29 (+4d) | 2019-03-25 16:14 → 2019-03-27 16:29 (+2d) |  | none → 534.46d |
| 306 | Preparar conexiones visuales de camaras | 2019-03-22 08:14 → 2019-03-26 08:29 (+4d) | 2019-03-22 13:14 → 2019-03-26 13:29 (+4d) |  | none → 571.96d |
| 307 | Preparar lista de música | 2019-03-21 16:14 → 2019-03-25 16:29 (+4d) | 2019-03-21 16:44 → 2019-03-25 16:59 (+4d) |  | none → 628.21d |
| 308 | Preparar programa de control de interacción | 2019-03-21 16:14 → 2019-03-25 16:29 (+4d) | 2019-03-22 16:14 → 2019-03-26 16:29 (+4d) |  | none → 534.46d |
| 309 | Completar programa de control de interacción con los módulos | 2019-03-22 16:14 → 2019-03-26 16:29 (+4d) | 2019-03-25 16:14 → 2019-03-27 16:29 (+2d) |  | none → 534.46d |
| 310 | **Interfaz visual agradable** | 2019-03-21 16:14 → 2019-03-25 16:29 (+4d) | 2019-03-22 11:14 → 2019-03-26 11:29 (+4d) |  | none → 684.46d |
| 311 | Programar interfaz visual | 2019-03-21 16:14 → 2019-03-25 16:29 (+4d) | 2019-03-22 11:14 → 2019-03-26 11:29 (+4d) |  | none → 684.46d |
| 312 | **Módulo de monitorización y gerencia** | 2019-03-25 16:14 → 2019-03-27 16:29 (+2d) | 2019-03-26 16:14 → 2019-03-28 16:29 (+2d) |  | none → 534.46d |
| 313 | **Almacén de datos legales** | 2019-03-25 16:14 → 2019-03-27 16:29 (+2d) | 2019-03-26 16:14 → 2019-03-28 16:29 (+2d) |  | none → 534.46d |
| 314 | Preparar BD y gestión de BD | 2019-03-25 16:14 → 2019-03-27 16:29 (+2d) | 2019-03-26 16:14 → 2019-03-28 16:29 (+2d) |  | none → 534.46d |
| 315 | Revisar cumplimiento de requerimientos legales de la BD | 2019-03-25 16:14 → 2019-03-27 16:29 (+2d) | 2019-03-26 09:14 → 2019-03-28 09:29 (+2d) |  | none → 609.46d |
| 316 | **Almacén de nóminas** | 2019-03-25 16:14 → 2019-03-27 16:29 (+2d) | 2019-03-26 16:14 → 2019-03-28 16:29 (+2d) |  | none → 534.46d |
| 317 | Preparar BD y gestión de BD para nóminas | 2019-03-25 16:14 → 2019-03-27 16:29 (+2d) | 2019-03-26 16:14 → 2019-03-28 16:29 (+2d) |  | none → 534.46d |
| 318 | Automatizar las nóminas y su almacenamiento de datos | 2019-03-25 16:14 → 2019-03-27 16:29 (+2d) | 2019-03-26 16:14 → 2019-03-28 16:29 (+2d) |  | none → 534.46d |
| 319 | **Interfaz visual agradable** | 2019-03-25 16:14 → 2019-03-27 16:29 (+2d) | 2019-03-26 11:14 → 2019-03-28 11:29 (+2d) |  | none → 584.46d |
| 320 | Programar la interfaz visual | 2019-03-25 16:14 → 2019-03-27 16:29 (+2d) | 2019-03-26 11:14 → 2019-03-28 11:29 (+2d) |  | none → 584.46d |
| 369 | **Ejecución de conjunto de casos de unidad** |  | 2019-04-17 16:14 → 2019-04-18 11:29 (+1d) | 2d → 2.53d | none → 56.36d |
| 371 | Ejecutar las pruebas de cada módulo individual | 2019-04-15 16:14 → 2019-04-16 11:29 (+1d) | 2019-04-17 16:14 → 2019-04-18 11:29 (+1d) |  | none → 56.36d |
